Schedule from MS Project, 2011-08-18 to 2011-10-06, costs in $, A marks actual dates.

## Calendars

- Estándar: Mon-Fri 09:00-13:00, 15:00-19:00; Sat-Sun off. Exceptions (off unless hours are given): 2011-08-27 09:00-13:00, 15:00-19:00, 2011-09-17 to 2011-09-18 09:00-13:00, 15:00-19:00, 2011-09-24 to 2011-09-25 09:00-13:00, 15:00-19:00, 2011-10-01 09:00-13:00, 15:00-19:00.

## Resources

| Resource |
| --- |
| Alejandra Caretto |
| Nicolas Llorente |
| Damian Gonzalez |
| Fernando Garrido |

## Schedule

| ID | WBS | Task | Type | Duration | Start | Finish | Predecessors | Complete | Remaining | Total slack | Constraint | Resources | Work | Actual work | Cost | Actual cost |
| --- | --- | --- | --- | --- | --- | --- | --- | --- | --- | --- | --- | --- | --- | --- | --- | --- |
| 1 | 1 | **Nicona SRL** |  | 41.25d? | 2011-08-18 A | 2011-10-06 |  | 52% | 19.91d? | 0d |  |  | 544.52h | 331.52h | 200 | 200 |
| 2 | 1.1 | **Fase de Inicio** |  | 41.25d? | 2011-08-18 A | 2011-10-06 |  | 52% | 19.91d? | 0d |  |  | 544.52h | 331.52h | 200 | 200 |
| 3 | 1.1.1 | **Iteración 1** |  | 5.25d | 2011-08-18 A | 2011-08-25 A |  | 100% |  |  |  |  | 44.92h | 44.92h |  |  |
| 4 | 1.1.1.1 | **Modelado del negocio** |  | 0.5d | 2011-08-18 A | 2011-08-18 A |  | 100% |  |  |  |  | 4h | 4h |  |  |
| 5 | 1.1.1.1.1 | Presentación de cliente Nicona SRL V1.2 |  | 4h | 2011-08-18 A | 2011-08-18 A |  | 100% |  |  |  | Alejandra Caretto [50%]; Damian Gonzalez [50%] | 4h | 4h |  |  |
| 6 | 1.1.1.2 | **Administración del proyecto** |  | 5.25d | 2011-08-18 A | 2011-08-25 A |  | 100% |  |  |  |  | 40.92h | 40.92h |  |  |
| 7 | 1.1.1.2.1 | Organización del proyecto V1.0 |  | 8h | 2011-08-18 A | 2011-08-18 A |  | 100% |  |  |  | Damian Gonzalez [33%]; Alejandra Caretto [33%]; Nicolas Llorente [33%] | 7.92h | 7.92h |  |  |
| 8 | 1.1.1.2.2 | Plan de iteraciones V1.0 |  | 2d | 2011-08-18 A | 2011-08-19 A |  | 100% |  |  |  | Nicolas Llorente [50%]; Fernando Garrido [50%] | 16h | 16h |  |  |
| 9 | 1.1.1.2.3 | Minuta de reunión con los consultores |  | 4h | 2011-08-19 A | 2011-08-19 A |  | 100% |  |  |  | Alejandra Caretto | 4h | 4h |  |  |
| 10 | 1.1.1.2.4 | Agenda de primer relevamiento al cliente |  | 2h | 2011-08-19 A | 2011-08-19 A | 9 | 100% |  |  |  | Nicolas Llorente | 2h | 2h |  |  |
| 11 | 1.1.1.2.5 | Reunion de relevamiento con el cliente |  | 3h | 2011-08-20 A | 2011-08-22 A |  | 100% |  |  | finish no later than 2011-08-20 | Alejandra Caretto [25%]; Damian Gonzalez [25%]; Nicolas Llorente [25%]; Fernando Garrido [25%] | 3h | 3h |  |  |
| 12 | 1.1.1.2.6 | Minuta de reunión con el cliente |  | 4h | 2011-08-23 A | 2011-08-23 A | 11 | 100% |  |  |  | Damian Gonzalez | 4h | 4h |  |  |
| 13 | 1.1.1.2.7 | Agenda de reunión con los consultores |  | 4h | 2011-08-24 A | 2011-08-24 A |  | 100% |  |  | finish no earlier than 2011-08-23 | Fernando Garrido [50%]; Nicolas Llorente [50%] | 2h | 2h |  |  |
| 14 | 1.1.1.2.8 | Reuniones de relevamiento y control | milestone | 2h | 2011-08-25 A | 2011-08-25 A | 13 | 100% |  |  |  | Alejandra Caretto [25%]; Damian Gonzalez [25%]; Nicolas Llorente [25%]; Fernando Garrido [25%] | 2h | 2h |  |  |
| 15 | 1.1.2 | **Iteración 2** |  | 5.25d | 2011-08-26 A | 2011-09-01 A |  | 100% |  |  |  |  | 58h | 58h | 200 | 200 |
| 16 | 1.1.2.1 | **Modelado del negocio** |  | 2.12d | 2011-08-26 A | 2011-08-29 A |  | 100% |  |  |  |  | 2h | 2h |  |  |
| 17 | 1.1.2.1.1 | Presentación de cliente Nicona SRL v2.0 |  | 4h | 2011-08-26 A | 2011-08-26 A |  | 100% |  |  | finish no earlier than 2011-08-27 | Alejandra Caretto [25%] | 1h | 1h |  |  |
| 18 | 1.1.2.1.2 | Arquitectura existente V1.0 |  | 9h | 2011-08-27 A | 2011-08-29 A | 11 | 100% |  |  | finish no earlier than 2011-08-28 | Fernando Garrido [5.6%]; Nicolas Llorente [5.6%] | 1h | 1h |  |  |
| 19 | 1.1.2.2 | **Administración del proyecto** |  | 5.25d | 2011-08-26 A | 2011-09-01 A |  | 100% |  |  |  |  | 40h | 40h | 200 | 200 |
| 20 | 1.1.2.2.1 | Plan de iteraciones V2.0 |  | 3d | 2011-08-26 A | 2011-08-29 A | 8 | 100% |  |  | finish no earlier than 2011-08-27 | Fernando Garrido [33.3%]; Damian Gonzalez [33.3%] | 16h | 16h |  |  |
| 21 | 1.1.2.2.2 | Organización del proyecto V1.0 |  | 12h | 2011-08-27 A | 2011-08-29 A | 7 | 100% |  |  | finish no earlier than 2011-08-31 |  | 4h | 4h | 200 | 200 |
| 22 | 1.1.2.2.3 | Minuta de reunión con los consultores 1.0 |  | 4h | 2011-08-29 A | 2011-08-29 A | 14 | 100% |  |  |  | Fernando Garrido | 4h | 4h |  |  |
| 23 | 1.1.2.2.4 | Agenda del segundo relevamiento al cliente |  | 3h | 2011-08-26 A | 2011-08-26 A |  | 100% |  |  |  | Nicolas Llorente | 3h | 3h |  |  |
| 24 | 1.1.2.2.5 | Reunion de relevamiento con el cliente |  | 11h | 2011-08-27 A | 2011-08-29 A | 23 | 100% |  |  |  | Alejandra Caretto [6.8%]; Damian Gonzalez [6.8%]; Nicolas Llorente [6.8%]; Fernando Garrido [6.8%] | 3h | 3h |  |  |
| 25 | 1.1.2.2.6 | Minuta de reunión con el cliente |  | 4h | 2011-08-28 A | 2011-08-29 A |  | 100% |  |  |  | Damian Gonzalez | 4h | 4h |  |  |
| 26 | 1.1.2.2.7 | Agenda de reunión con los consultores |  | 1d | 2011-08-28 A | 2011-08-30 A |  | 100% |  |  | finish no earlier than 2011-08-23 | Fernando Garrido [50%]; Nicolas Llorente [50%] | 4h | 4h |  |  |
| 27 | 1.1.2.2.8 | Reuniones de relevamiento y control | milestone | 2h | 2011-09-01 A | 2011-09-01 A | 26 | 100% |  |  | finish no earlier than 2011-09-01 | Alejandra Caretto [25%]; Damian Gonzalez [25%]; Fernando Garrido [25%]; Nicolas Llorente [25%] | 2h | 2h |  |  |

| ID | WBS | Task | Type | Duration | Start | Finish | Predecessors | Complete | Constraint | Resources | Work | Actual work |
| --- | --- | --- | --- | --- | --- | --- | --- | --- | --- | --- | --- | --- |
| 28 | 1.1.2.3 | **Entorno** |  | 2d | 2011-08-29 A | 2011-08-30 A |  | 100% |  |  | 16h | 16h |
| 29 | 1.1.2.3.1 | Proceso de desarrollo V1.0 |  | 16h | 2011-08-29 A | 2011-08-30 A |  | 100% | finish no earlier than 2011-08-30 | Alejandra Caretto [25%]; Damian Gonzalez [25%]; Fernando Garrido [25%]; Nicolas Llorente [25%] | 16h | 16h |
| 30 | 1.1.3 | **Iteración 3** |  | 8.25d | 2011-08-28 A | 2011-09-08 A |  | 100% |  |  | 84.5h | 84.5h |
| 31 | 1.1.3.1 | **Modelado del negocio** |  | 5.25d | 2011-08-28 A | 2011-09-05 A |  | 100% |  |  | 10.5h | 10.5h |
| 32 | 1.1.3.1.1 | Presentación de cliente Nicona SRL V2.1 |  | 3h | 2011-09-01 A | 2011-09-01 A |  | 100% | finish no earlier than 2011-09-02 |  | 7.5h | 7.5h |
| 33 | 1.1.3.1.2 | Arquitectura existente V1.2 |  | 2h | 2011-09-03 A | 2011-09-05 A | 32 | 100% |  | Fernando Garrido [50%] | 1h | 1h |
| 34 | 1.1.3.1.3 | Glosario organizacional V1.0 |  | 2h | 2011-08-28 A | 2011-08-29 A | 33 | 100% |  | Damian Gonzalez | 2h | 2h |
| 35 | 1.1.3.2 | **Administración del proyecto** |  | 6.25d | 2011-08-31 A | 2011-09-08 A |  | 100% |  |  | 58h | 58h |
| 36 | 1.1.3.2.1 | Plan de iteraciones V2.2 |  | 2d | 2011-09-05 A | 2011-09-06 A |  | 100% |  | Fernando Garrido [50%]; Damian Gonzalez [50%] | 16h | 16h |
| 37 | 1.1.3.2.2 | Riesgos del proyecto |  | 3d | 2011-09-03 A | 2011-09-07 A |  | 100% | finish no earlier than 2011-09-07 | Fernando Garrido [50%]; Damian Gonzalez [50%] | 24h | 24h |
| 38 | 1.1.3.2.3 | Organización del proyecto V1.2 |  | 1d | 2011-08-31 A | 2011-08-31 A |  | 100% | finish no earlier than 2011-08-31 | Nicolas Llorente [25%] | 2h | 2h |
| 39 | 1.1.3.2.4 | Minuta de reunión con los consultores 1.0 |  | 4h | 2011-09-02 A | 2011-09-02 A |  | 100% |  | Alejandra Caretto; Damian Gonzalez [50%] | 6h | 6h |
| 40 | 1.1.3.2.5 | Agenda de reunión con los consultores |  | 1d | 2011-09-04 A | 2011-09-05 A |  | 100% | finish no earlier than 2011-08-23 | Fernando Garrido [50%]; Nicolas Llorente [50%] | 8h | 8h |
| 41 | 1.1.3.2.6 | Reuniones de relevamiento y control | milestone | 2h | 2011-09-08 A | 2011-09-08 A |  | 100% | finish no earlier than 2011-09-08 | Nicolas Llorente [25%]; Fernando Garrido [25%]; Damian Gonzalez [25%]; Alejandra Caretto [25%] | 2h | 2h |
| 42 | 1.1.3.3 | **Entorno** |  | 2d | 2011-09-02 A | 2011-09-05 A |  | 100% |  |  | 16h | 16h |
| 43 | 1.1.3.3.1 | Proceso de desarrollo V2.1 |  | 2d | 2011-09-02 A | 2011-09-05 A | 29 | 100% |  | Alejandra Caretto [25%]; Damian Gonzalez [25%]; Fernando Garrido [25%]; Nicolas Llorente [25%] | 16h | 16h |
| 44 | 1.1.4 | **Iteración 4** |  | 6d? | 2011-09-08 A | 2011-09-15 A |  | 100% |  |  | 144.1h | 144.1h |
| 45 | 1.1.4.1 | **Modelado del negocio** |  | 5d? | 2011-09-08 A | 2011-09-14 A |  | 100% |  |  | 63.6h | 63.6h |
| 46 | 1.1.4.1.1 | Glosario organizacional V1.2 |  | 2d | 2011-09-09 A | 2011-09-12 A | 34 | 100% | finish no earlier than 2011-09-10 | Damian Gonzalez [50%]; Alejandra Caretto [50%] | 16h | 16h |
| 47 | 1.1.4.1.2 | Analisis de entorno V1.0 |  | 3d | 2011-09-10 A | 2011-09-14 A | 32 | 100% | finish no earlier than 2011-09-12 |  |  |  |
| 48 | 1.1.4.1.3 | Diagrama de contexto V1.1 |  | 3h | 2011-09-10 A | 2011-09-12 A | 47 | 100% | finish no earlier than 2011-09-12 | Fernando Garrido | 3h | 3h |
| 49 | 1.1.4.1.4 | Procesos del negocio v1.1 |  | 2d? | 2011-09-08 A | 2011-09-09 A |  | 100% |  | Fernando Garrido [75%]; Alejandra Caretto [25%] | 16h | 16h |
| 50 | 1.1.4.1.5 | Diagrama de actividades V1.0 |  | 3h | 2011-09-10 A | 2011-09-12 A |  | 100% | finish no earlier than 2011-09-10 | Damian Gonzalez | 3h | 3h |
| 51 | 1.1.4.1.6 | Casos de uso del negocio V1.0 |  | 3d | 2011-09-10 A | 2011-09-14 A |  | 100% |  | Damian Gonzalez; Nicolas Llorente | 25.6h | 25.6h |

| ID | WBS | Task | Type | Duration | Start | Finish | Predecessors | Complete | Total slack | Free slack | Constraint | Resources | Work | Actual work |
| --- | --- | --- | --- | --- | --- | --- | --- | --- | --- | --- | --- | --- | --- | --- |
| 52 | 1.1.4.2 | **Requerimientos** |  | 2d? | 2011-09-12 A | 2011-09-13 A |  | 100% |  |  |  |  | 16h | 16h |
| 53 | 1.1.4.2.1 | Especificacion de requerimientos preliminar V1.0 |  | 2d? | 2011-09-12 A | 2011-09-13 A |  | 100% |  |  | start no earlier than 2011-09-12 | Fernando Garrido | 16h | 16h |
| 54 | 1.1.4.3 | **Administración del proyecto** |  | 6d | 2011-09-08 A | 2011-09-15 A |  | 100% |  |  |  |  | 56.5h | 56.5h |
| 55 | 1.1.4.3.1 | Plan de iteraciones V3.0 |  | 6d | 2011-09-08 A | 2011-09-15 A | 36 | 100% |  |  | finish no earlier than 2011-09-14 | Nicolas Llorente [50%]; Alejandra Caretto [50%] | 36h | 36h |
| 56 | 1.1.4.3.2 | Planes de contingencia |  | 1d | 2011-09-10 A | 2011-09-12 A |  | 100% |  |  | finish no earlier than 2011-09-07 | Fernando Garrido [50%]; Damian Gonzalez [50%] | 8h | 8h |
| 57 | 1.1.4.3.3 | Personas involucradas V1.0 |  | 2h | 2011-09-10 A | 2011-09-12 A |  | 100% |  |  |  |  | 0.5h | 0.5h |
| 58 | 1.1.4.3.4 | Minuta de reunión con los consultores 1.0 |  | 4h | 2011-09-10 A | 2011-09-12 A |  | 100% |  |  |  |  | 4h | 4h |
| 59 | 1.1.4.3.5 | Agenda de reunión con los consultores |  | 1d | 2011-09-14 A | 2011-09-14 A |  | 100% |  |  | finish no earlier than 2011-08-23 | Fernando Garrido [50%]; Nicolas Llorente [50%] | 6h | 6h |
| 60 | 1.1.4.3.6 | Reuniones de relevamiento y control | milestone | 2h | 2011-09-15 A | 2011-09-15 A |  | 100% |  |  |  | Alejandra Caretto [25%]; Damian Gonzalez [25%]; Fernando Garrido [25%]; Nicolas Llorente [25%] | 2h | 2h |
| 61 | 1.1.4.4 | **Gestion de la configuración** |  | 1d? | 2011-09-11 A | 2011-09-12 A |  | 100% |  |  |  |  |  |  |
| 62 | 1.1.4.4.1 | Documento de revisiones |  | 1d? | 2011-09-11 A | 2011-09-12 A |  | 100% |  |  |  |  |  |  |
| 63 | 1.1.4.5 | **Entorno** |  | 4d | 2011-09-12 A | 2011-09-15 A |  | 100% |  |  |  |  | 8h | 8h |
| 64 | 1.1.4.5.1 | Proceso de gestión del proyecto |  | 1d | 2011-09-12 A | 2011-09-15 A | 43 | 100% |  |  | as late as possible | Nicolas Llorente [25%]; Alejandra Caretto [50%] | 2h | 2h |
| 65 | 1.1.4.5.2 | Proceso de desarrollo V2.2 |  | 2d | 2011-09-13 A | 2011-09-14 A |  | 100% |  |  | start no earlier than 2011-09-13 | Nicolas Llorente [50%]; Alejandra Caretto [50%] | 6h | 6h |
| 66 | 1.1.5 | **Iteración 5** |  | 9.62d | 2011-09-15 | 2011-09-24 |  |  | 6.62d |  |  |  | 102.67h |  |
| 67 | 1.1.5.1 | **Modelado del negocio** |  | 9.62d | 2011-09-15 | 2011-09-24 |  |  | 10.62d |  |  |  | 44h |  |
| 68 | 1.1.5.1.1 | Glosario organizacional |  | 4h | 2011-09-15 | 2011-09-15 |  |  | 19.75d |  | start no earlier than 2011-09-15 | Damian Gonzalez [50%]; Alejandra Caretto [50%] | 4h |  |
| 69 | 1.1.5.1.2 | Diagrama de contexto |  | 3h | 2011-09-15 | 2011-09-15 |  |  | 19.88d |  | start no earlier than 2011-09-15 | Fernando Garrido | 3h |  |
| 70 | 1.1.5.1.3 | Procesos del negocio |  | 16h | 2011-09-16 | 2011-09-17 |  |  | 10.62d | 0d | start no earlier than 2011-09-16 | Fernando Garrido [75%]; Alejandra Caretto [25%] | 8h |  |
| 71 | 1.1.5.1.4 | Analisis de entorno V1.0 |  | 3d | 2011-09-18 | 2011-09-20 | 70 |  | 10.62d | 0d | finish no earlier than 2011-09-12 |  |  |  |
| 72 | 1.1.5.1.5 | Diagrama de actividades |  | 3h | 2011-09-17 | 2011-09-17 |  |  | 17.88d |  | start no earlier than 2011-09-17 | Damian Gonzalez | 3h |  |
| 73 | 1.1.5.1.6 | Casos de uso del negocio |  | 13h | 2011-09-21 | 2011-09-22 | 71 |  | 10.62d | 0d | start no earlier than 2011-09-18 | Damian Gonzalez; Nicolas Llorente | 26h |  |
| 74 | 1.1.5.1.7 | Modelo de dominio |  | 2d | 2011-09-22 | 2011-09-24 | 73 |  | 10.62d |  | finish no earlier than 2011-09-12 |  |  |  |
| 75 | 1.1.5.2 | **Requerimientos** |  | 1d | 2011-09-16 | 2011-09-16 |  |  | 17.25d |  |  |  |  |  |
| 76 | 1.1.5.2.1 | Especificacion de requerimientos preliminar |  | 8h | 2011-09-16 | 2011-09-16 |  |  | 17.25d | 0d | start no earlier than 2011-09-16 |  |  |  |
| 77 | 1.1.5.2.2 | Documento de alcance |  | 8h | 2011-09-16 | 2011-09-16 |  |  | 17.25d | 0d | start no earlier than 2011-09-16 |  |  |  |

| ID | WBS | Task | Type | Duration | Start | Finish | Predecessors | Remaining | Total slack | Free slack | Constraint | Resources | Work |
| --- | --- | --- | --- | --- | --- | --- | --- | --- | --- | --- | --- | --- | --- |
| 78 | 1.1.5.3 | **Analisis** |  | 1d | 2011-09-17 | 2011-09-17 |  |  | 17.25d |  |  |  |  |
| 79 | 1.1.5.3.1 | Informe de solución |  | 8h | 2011-09-17 | 2011-09-17 | 77, 76 |  | 17.25d |  | start no earlier than 2011-09-17 |  |  |
| 80 | 1.1.5.4 | **QA** |  | 1.38d | 2011-09-17 | 2011-09-18 |  |  | 16.88d |  |  |  |  |
| 81 | 1.1.5.4.1 | Plan de calidad del proyecto |  | 11h | 2011-09-17 | 2011-09-18 |  |  | 16.88d |  | start no earlier than 2011-09-17 |  |  |
| 82 | 1.1.5.5 | **Administración del proyecto** |  | 6.25d | 2011-09-16 | 2011-09-22 |  |  | 13d |  |  |  | 52h |
| 83 | 1.1.5.5.1 | Plan de iteraciones |  | 5d | 2011-09-17 | 2011-09-21 |  |  | 13d | 0d | finish no earlier than 2011-09-21 | Nicolas Llorente [50%]; Alejandra Caretto [50%] | 40h |
| 84 | 1.1.5.5.2 | Riesgos del proyecto |  | 8h | 2011-09-17 | 2011-09-17 |  |  | 15.25d | 0d | start no earlier than 2011-09-17 |  |  |
| 85 | 1.1.5.5.3 | Planes de contingencia |  | 2d | 2011-09-18 | 2011-09-19 | 84 |  | 15.25d |  |  |  |  |
| 86 | 1.1.5.5.4 | Minuta de reunión con los consultores 1.0 |  | 4h | 2011-09-16 | 2011-09-16 |  |  | 18.75d |  | start no earlier than 2011-09-16 |  | 4h |
| 87 | 1.1.5.5.5 | Agenda de reunión con los consultores |  | 1d | 2011-09-18 | 2011-09-18 |  |  | 16.25d |  | start no earlier than 2011-09-18 | Fernando Garrido [50%]; Nicolas Llorente [50%] | 6h |
| 88 | 1.1.5.5.6 | Reuniones de relevamiento y control | milestone | 2h | 2011-09-22 | 2011-09-22 | 83 |  | 13d |  |  | Alejandra Caretto [25%]; Damian Gonzalez [25%]; Fernando Garrido [25%]; Nicolas Llorente [25%] | 2h |
| 89 | 1.1.5.6 | **Gestion de la configuración** |  | 1d | 2011-09-19 | 2011-09-19 |  |  | 15.25d |  |  |  |  |
| 90 | 1.1.5.6.1 | Documento de revisiones |  | 1d | 2011-09-19 | 2011-09-19 |  |  | 15.25d |  | start no earlier than 2011-09-19 |  |  |
| 91 | 1.1.5.7 | **Entorno** |  | 2d | 2011-09-21 | 2011-09-22 |  |  | 0.62d |  |  |  | 6.67h |
| 92 | 1.1.5.7.1 | Proceso de gestión del proyecto |  | 1d | 2011-09-21 | 2011-09-21 |  |  | 1d |  | finish no earlier than 2011-09-21 | Nicolas Llorente [8.3%]; Alejandra Caretto [50%] | 0.67h |
| 93 | 1.1.5.7.2 | Proceso de desarrollo |  | 2d | 2011-09-21 | 2011-09-22 |  |  | 0.62d | 0d | start no earlier than 2011-09-21 | Nicolas Llorente [50%]; Alejandra Caretto [50%] | 6h |
| 94 | 1.1.6 | **Iteración 6** |  | 19.25d | 2011-09-16 A | 2011-10-06 |  | 19.25d | 0d |  |  |  | 110.33h |
| 95 | 1.1.6.1 | **Modelado del negocio** |  | 6.62d | 2011-09-23 | 2011-09-29 |  |  | 0.62d |  |  |  | 59h |
| 96 | 1.1.6.1.1 | Presentación de cliente Nicona SRL V2.1 |  | 6h | 2011-09-23 | 2011-09-23 | 93 |  | 0.62d | 0d | finish no earlier than 2011-09-02 |  | 15h |
| 97 | 1.1.6.1.2 | Glosario organizacional |  | 4h | 2011-09-23 | 2011-09-24 | 96 |  | 0.62d | 0d | start no earlier than 2011-09-15 | Damian Gonzalez [50%]; Alejandra Caretto [50%] | 4h |
| 98 | 1.1.6.1.3 | Diagrama de contexto |  | 3h | 2011-09-24 | 2011-09-24 | 97 |  | 0.62d | 0d | start no earlier than 2011-09-15 | Fernando Garrido | 3h |
| 99 | 1.1.6.1.4 | Procesos del negocio |  | 16h | 2011-09-24 | 2011-09-26 | 98 |  | 0.62d | 0d | start no earlier than 2011-09-16 | Fernando Garrido [75%]; Alejandra Caretto [25%] | 8h |
| 100 | 1.1.6.1.5 | Diagrama de actividades |  | 3h | 2011-09-26 | 2011-09-26 | 99 |  | 0.62d | 0d | start no earlier than 2011-09-17 | Damian Gonzalez | 3h |
| 101 | 1.1.6.1.6 | Casos de uso del negocio |  | 13h | 2011-09-27 | 2011-09-28 | 100 |  | 0.62d | 0d | start no earlier than 2011-09-18 | Damian Gonzalez; Nicolas Llorente | 26h |
| 102 | 1.1.6.1.7 | Modelo de dominio |  | 1d | 2011-09-28 | 2011-09-29 | 101 |  | 0.62d | 0d | finish no earlier than 2011-09-12 |  |  |

| ID | WBS | Task | Type | Duration | Start | Finish | Predecessors | Remaining | Total slack | Free slack | Constraint | Resources | Work |
| --- | --- | --- | --- | --- | --- | --- | --- | --- | --- | --- | --- | --- | --- |
| 103 | 1.1.6.2 | **Requerimientos** |  | 4d | 2011-09-29 | 2011-10-04 |  |  | 0.62d | 0d |  |  |  |
| 104 | 1.1.6.2.1 | Especificacion de requerimientos preliminar |  | 2d | 2011-09-29 | 2011-10-01 | 102 |  | 0.62d | 0d | start no earlier than 2011-09-16 |  |  |
| 105 | 1.1.6.2.2 | Documento de alcance |  | 2d | 2011-10-01 | 2011-10-04 | 104 |  | 0.62d |  | start no earlier than 2011-09-16 |  |  |
| 106 | 1.1.6.3 | **QA** |  | 1.38d | 2011-09-29 | 2011-09-30 |  |  | 4.25d |  |  |  |  |
| 107 | 1.1.6.3.1 | Plan de calidad del proyecto |  | 11h | 2011-09-29 | 2011-09-30 | 102 |  | 4.25d |  | start no earlier than 2011-09-17 |  |  |
| 108 | 1.1.6.4 | **Administración del proyecto** |  | 19.25d | 2011-09-16 | 2011-10-06 |  |  | 0d |  |  |  | 44h |
| 109 | 1.1.6.4.1 | Plan de iteraciones |  | 4d | 2011-09-29 | 2011-10-04 | 102 |  | 1.62d |  | finish no earlier than 2011-09-21 | Nicolas Llorente [50%]; Alejandra Caretto [50%] | 32h |
| 110 | 1.1.6.4.2 | Minuta de reunión con los consultores 1.0 |  | 4h | 2011-09-16 | 2011-09-16 |  |  | 18.75d |  | start no earlier than 2011-09-16 |  | 4h |
| 111 | 1.1.6.4.3 | Agenda de reunión con los consultores |  | 1d | 2011-09-18 | 2011-09-18 |  |  | 16.25d |  | start no earlier than 2011-09-18 | Fernando Garrido [50%]; Nicolas Llorente [50%] | 6h |
| 112 | 1.1.6.4.4 | Reuniones de relevamiento y control | milestone | 2h | 2011-10-06 | 2011-10-06 |  |  | 0d |  | start no earlier than 2011-10-06 | Alejandra Caretto [25%]; Damian Gonzalez [25%]; Fernando Garrido [25%]; Nicolas Llorente [25%] | 2h |
| 113 | 1.1.6.5 | **Gestion de la configuración** |  | 1d | 2011-10-04 | 2011-10-05 |  |  | 0.62d |  |  |  |  |
| 114 | 1.1.6.5.1 | Documento de revisiones |  | 1d | 2011-10-04 | 2011-10-05 | 103 |  | 0.62d |  | start no earlier than 2011-09-19 |  |  |
| 115 | 1.1.6.6 | **Entorno** |  | 12.62d | 2011-09-21 A | 2011-10-04 |  | 12.62d | 1.62d |  |  |  | 7.33h |
| 116 | 1.1.6.6.1 | Proceso de gestión del proyecto |  | 2d | 2011-09-21 A | 2011-10-04 | 104 | 2d | 1.62d |  | finish no earlier than 2011-09-21 | Nicolas Llorente [8.3%]; Alejandra Caretto [50%] | 1.33h |
| 117 | 1.1.6.6.2 | Proceso de desarrollo |  | 2d | 2011-09-21 A | 2011-10-04 | 104 | 2d | 1.62d |  | start no earlier than 2011-09-21 | Nicolas Llorente [50%]; Alejandra Caretto [50%] | 6h |
