# Plan de Iteraciones - 2003

Schedule from MS Project, 2011-08-25 to 2012-03-12, 4 hours a day, A marks actual dates.

## Calendars

- Estándar: Mon-Fri 08:00-12:00, 13:00-17:00; Sat-Sun off.

## Resources

| Resource |
| --- |
| AN |
| LP |
| LP;AN |
| LP;AN;PR |
| ARQ;AN |
| ARG |
| ARQ |
| am |
| ko |
| a |
| PL |

## Schedule

| ID | WBS | Task | Type | Duration | Start | Finish | Predecessors | Complete | Remaining | Baseline start | Baseline finish | Baseline duration | Total slack | Constraint | Resources | Work | Actual work |
| --- | --- | --- | --- | --- | --- | --- | --- | --- | --- | --- | --- | --- | --- | --- | --- | --- | --- |
| 1 | 1 | **RainShow** |  | 284d | 2011-08-25 19:00 A | 2012-03-12 19:10 |  | 53% | 133.06d |  |  |  | 0d |  |  | 666.5h | 641.5h |
| 2 | 1.1 | **Fase de Inicio** |  | 60d | 2011-08-25 19:00 A | 2011-10-06 23:00 A |  | 100% |  | 2011-08-25 19:00 | 2011-09-22 20:10 | 40d |  |  |  | 344.17h | 344.17h |
| 3 | 1.1.1 | **Iteracion 1** |  | 2d | 2011-08-25 19:00 A | 2011-08-27 14:10 A |  | 100% |  | 2011-08-25 19:00 | 2011-08-27 16:10 | 2d |  |  |  | 21h | 21h |
| 4 | 1.1.1.1 | **Modelado de Negocio** |  | 2d | 2011-08-25 19:00 A | 2011-08-27 12:10 A |  | 100% |  | 2011-08-25 19:00 | 2011-08-27 12:10 | 2d |  |  |  | 18h | 18h |
| 5 | 1.1.1.1.1 | **Tareas** |  | 2d | 2011-08-25 19:00 A | 2011-08-27 12:10 A |  | 100% |  | 2011-08-25 19:00 | 2011-08-26 21:00 | 2d |  |  |  | 18h | 18h |
| 6 | 1.1.1.1.1.1 | Coordinación de Reuniones |  | 1h | 2011-08-25 19:00 A | 2011-08-25 20:00 A |  | 100% |  | 2011-08-25 19:00 | 2011-08-25 20:00 | 1h |  | start no earlier than 2011-08-25 19:00 | LP | 1h | 1h |
| 7 | 1.1.1.1.1.2 | Reunion con el Cliente |  | 4h | 2011-08-25 20:00 A | 2011-08-26 20:00 A | 6 | 100% |  | 2011-08-25 20:00 | 2011-08-25 21:00 | 1h |  |  | LP;AN | 4h | 4h |
| 8 | 1.1.1.1.1.3 | Revision y Entendimiento de GP-MR-Minuta de Relevamiento |  | 1h | 2011-08-25 21:00 A | 2011-08-25 22:00 A | 7 | 100% |  | 2011-08-25 21:00 | 2011-08-25 22:00 | 1h |  |  | AN | 1h | 1h |
| 9 | 1.1.1.1.1.4 | Modelar los procesos Identificados |  | 4h | 2011-08-25 21:00 A | 2011-08-26 21:00 A | 7 | 100% |  | 2011-08-25 21:00 | 2011-08-26 21:00 | 4h |  |  | AN | 4h | 4h |
| 10 | 1.1.1.1.1.5 | Integrar los procesos de negocio |  | 2h | 2011-08-25 21:00 A | 2011-08-25 23:00 A | 7 | 100% |  | 2011-08-25 21:00 | 2011-08-25 23:00 | 2h |  |  | AN | 2h | 2h |
| 11 | 1.1.1.1.1.6 | Recaudar informacion del Cliente |  | 6h | 2011-08-25 21:00 A | 2011-08-27 12:10 A | 7 | 100% |  | 2011-08-25 21:00 | 2011-08-25 22:00 | 1h |  |  | AN | 6h | 6h |
| 12 | 1.1.1.1.2 | **Entregables** |  | 2d | 2011-08-25 21:00 A | 2011-08-26 21:00 A |  | 100% |  | 2011-08-25 21:00 | 2011-08-27 12:10 | 2d |  |  |  |  |  |
| 13 | 1.1.1.1.2.1 | MN-PN: Descripción de los Procesos de Negocio ( preliminar) | milestone | 0h | 2011-08-26 21:00 A | 2011-08-26 21:00 A | 8, 9, 10, 11 | 100% |  | 2011-08-26 21:00 | 2011-08-27 12:10 | 4h |  |  | AN |  |  |
| 14 | 1.1.1.1.2.2 | MN-PC: Documento de Presentación del Cliente | milestone | 0h | 2011-08-25 21:00 A | 2011-08-25 21:00 A | 6, 7 | 100% |  | 2011-08-25 21:00 | 2011-08-25 23:00 | 2h |  |  | AN |  |  |
| 15 | 1.1.1.2 | **Administracion de Proyecto** |  | 0d | 2011-08-27 12:10 A | 2011-08-27 14:10 A |  | 100% |  | 2011-08-27 12:10 | 2011-08-27 16:10 | 0d |  |  |  | 3h | 3h |
| 16 | 1.1.1.2.1 | **Tareas** |  | 0d | 2011-08-27 12:10 A | 2011-08-27 14:10 A |  | 100% |  | 2011-08-27 12:10 | 2011-08-27 14:10 | 0d |  |  |  | 3h | 3h |
| 17 | 1.1.1.2.1.1 | Estructurar el Proyecto en Iteraciones |  | 1h | 2011-08-27 12:10 A | 2011-08-27 13:10 A | 12 | 100% |  | 2011-08-27 12:10 | 2011-08-27 13:10 | 1h |  |  | LP | 1h | 1h |
| 18 | 1.1.1.2.1.2 | Planificar primeros objetivos |  | 2h | 2011-08-27 12:10 A | 2011-08-27 14:10 A | 12 | 100% |  | 2011-08-27 12:10 | 2011-08-27 14:10 | 2h |  |  | LP;AN | 2h | 2h |
| 19 | 1.1.1.2.2 | **Entregables** |  | 0d | 2011-08-27 14:10 A | 2011-08-27 14:10 A |  | 100% |  | 2011-08-27 14:10 | 2011-08-27 16:10 | 0d |  |  |  |  |  |
| 20 | 1.1.1.2.2.1 | GP-PP: Planificacion de Proyecto ( 3 Iteraciones) | milestone | 0h | 2011-08-27 14:10 A | 2011-08-27 14:10 A | 17, 18 | 100% |  | 2011-08-27 14:10 | 2011-08-27 16:10 | 2h |  |  | AN |  |  |
| 21 | 1.1.2 | **Iteracion 2** |  | 10d | 2011-09-01 19:00 A | 2011-09-08 20:10 A |  | 100% |  | 2011-09-01 19:00 | 2011-09-08 20:10 | 10d |  |  |  | 51h | 51h |
| 22 | 1.1.2.1 | **Administracion de Proyecto** |  | 2d | 2011-09-01 19:00 A | 2011-09-02 21:00 A |  | 100% |  | 2011-09-01 19:00 | 2011-09-02 20:00 | 2d |  |  |  | 15h | 15h |
| 23 | 1.1.2.1.1 | **Tareas** |  | 2d | 2011-09-01 19:00 A | 2011-09-02 21:00 A |  | 100% |  | 2011-09-01 19:00 | 2011-09-01 22:00 | 0d |  |  |  | 14h | 14h |
| 24 | 1.1.2.1.1.1 | Identificar Riesgos del Proyecto |  | 1h | 2011-09-01 19:00 A | 2011-09-01 20:00 A | 20 | 100% |  | 2011-09-01 19:00 | 2011-09-01 20:00 | 1h |  | start no earlier than 2011-09-01 19:00 | LP | 1h | 1h |
| 25 | 1.1.2.1.1.2 | Definir cantidad de iteraciones y entregables |  | 3h | 2011-09-01 20:00 A | 2011-09-01 23:00 A | 24 | 100% |  | 2011-09-01 20:00 | 2011-09-01 21:00 | 1h |  |  | LP | 3h | 3h |
| 26 | 1.1.2.1.1.3 | Identificar tareas detalladas de planificacion por recurso |  | 3h | 2011-09-01 21:00 A | 2011-09-02 21:00 A | 25 | 100% |  | 2011-09-01 21:00 | 2011-09-01 22:00 | 1h |  |  | LP;AN | 3h | 3h |
| 27 | 1.1.2.1.1.4 | Identificar recursos y formalidad de comunicación |  | 3h | 2011-09-01 20:00 A | 2011-09-01 23:00 A | 24 | 100% |  | 2011-09-01 20:00 | 2011-09-01 21:00 | 1h |  |  | LP | 3h | 3h |
| 28 | 1.1.2.1.1.5 | Realizar anotaciones de los hablado en cada reunion de avance |  | 3h | 2011-09-01 20:00 A | 2011-09-01 23:00 A | 24 | 100% |  | 2011-09-01 20:00 | 2011-09-01 21:00 | 1h |  |  | AN | 3h | 3h |
| 29 | 1.1.2.1.1.6 | analisis de riesgos identificados |  | 1h | 2011-09-01 20:00 A | 2011-09-01 21:00 A | 24 | 100% |  | 2011-09-01 20:00 | 2011-09-01 21:00 | 1h |  |  | LP | 1h | 1h |

| ID | WBS | Task | Type | Duration | Start | Finish | Predecessors | Complete | Baseline start | Baseline finish | Baseline duration | Resources | Work | Actual work |
| --- | --- | --- | --- | --- | --- | --- | --- | --- | --- | --- | --- | --- | --- | --- |
| 30 | 1.1.2.1.2 | **Entregables** |  | 2d | 2011-09-01 21:00 A | 2011-09-02 20:00 A |  | 100% | 2011-09-01 21:00 | 2011-09-02 20:00 | 2d |  | 1h | 1h |
| 31 | 1.1.2.1.2.1 | GP-PI: Planificacion de Iteraciones | milestone | 0h | 2011-09-01 21:00 A | 2011-09-01 21:00 A | 25 | 100% | 2011-09-01 21:00 | 2011-09-01 23:00 | 2h | LP |  |  |
| 32 | 1.1.2.1.2.2 | GP-PP: Planificacion de Proyecto | milestone | 0h | 2011-09-01 22:00 A | 2011-09-01 22:00 A | 26 | 100% | 2011-09-01 22:00 | 2011-09-02 20:00 | 2h | LP |  |  |
| 33 | 1.1.2.1.2.3 | GP-PC: Plan de Comunicacion | milestone | 0h | 2011-09-01 21:00 A | 2011-09-01 21:00 A | 27 | 100% | 2011-09-01 21:00 | 2011-09-01 23:00 | 2h | LP |  |  |
| 34 | 1.1.2.1.2.4 | GP-MI: Minuta de reunion | milestone | 0h | 2011-09-01 21:00 A | 2011-09-01 21:00 A | 27 | 100% | 2011-09-01 21:00 | 2011-09-01 23:00 | 2h | LP |  |  |
| 35 | 1.1.2.1.2.5 | GP-LR: Gestion de Riesgos |  | 1h | 2011-09-02 19:00 A | 2011-09-02 20:00 A | 34 | 100% | 2011-09-02 19:00 | 2011-09-02 20:00 | 1h | LP | 1h | 1h |
| 36 | 1.1.2.2 | **Modelado de Negocio** |  | 8d | 2011-09-02 20:00 A | 2011-09-08 20:10 A |  | 100% | 2011-09-02 20:00 | 2011-09-08 20:10 | 8d |  | 34h | 34h |
| 37 | 1.1.2.2.1 | **Tareas** |  | 8d | 2011-09-02 20:00 A | 2011-09-08 20:10 A |  | 100% | 2011-09-02 20:00 | 2011-09-05 19:10 | 2d |  | 34h | 34h |
| 38 | 1.1.2.2.1.1 | Validar Proceso-Caso de Uso de Negocio-Actividad |  | 8h | 2011-09-02 20:00 A | 2011-09-03 15:10 A | 35 | 100% | 2011-09-02 20:00 | 2011-09-03 11:10 | 4h | AN | 8h | 8h |
| 39 | 1.1.2.2.1.2 | Refinado de Modelado de Negocio |  | 5h | 2011-09-03 11:10 A | 2011-09-03 17:10 A | 38 | 100% | 2011-09-03 11:10 | 2011-09-03 14:10 | 3h | AN | 5h | 5h |
| 40 | 1.1.2.2.1.3 | Esquematizar los procesos de la compañía |  | 5h | 2011-09-03 14:10 A | 2011-09-04 11:10 A | 39 | 100% | 2011-09-03 14:10 | 2011-09-03 17:10 | 3h | AN | 5h | 5h |
| 41 | 1.1.2.2.1.4 | Diagramacion de la lógica de negocio |  | 6h | 2011-09-03 17:10 A | 2011-09-04 15:10 A | 40 | 100% | 2011-09-03 17:10 | 2011-09-04 12:10 | 3h | AN | 6h | 6h |
| 42 | 1.1.2.2.1.5 | Creación de los CU según acciones que ejecuta cada rol |  | 4h | 2011-09-04 12:10 A | 2011-09-04 16:10 A | 41 | 100% | 2011-09-04 12:10 | 2011-09-04 16:10 | 4h | AN | 4h | 4h |
| 43 | 1.1.2.2.1.6 | Documentar cada palabra o termino |  | 6h | 2011-09-04 16:10 A | 2011-09-08 20:10 A | 42 | 100% | 2011-09-04 16:10 | 2011-09-05 19:10 | 2h | AN | 6h | 6h |
| 44 | 1.1.2.2.2 | **Entregables** |  | 2d | 2011-09-04 12:10 A | 2011-09-05 19:10 A |  | 100% | 2011-09-04 12:10 | 2011-09-08 20:10 | 8d |  |  |  |
| 45 | 1.1.2.2.2.1 | MN-PN: Descripción de los Procesos de Negocio | milestone | 0h | 2011-09-05 19:10 A | 2011-09-05 19:10 A | 43 | 100% | 2011-09-05 19:10 | 2011-09-08 20:10 | 4h | AN |  |  |
| 46 | 1.1.2.2.2.2 | MN-DA: Diagrama de Actividades | milestone | 0h | 2011-09-04 12:10 A | 2011-09-04 12:10 A | 40, 41 | 100% | 2011-09-04 12:10 | 2011-09-04 16:10 | 4h | AN |  |  |
| 47 | 1.1.2.2.2.3 | MN-CU: Diagrama de Casos de Uso del Negocio | milestone | 0h | 2011-09-04 16:10 A | 2011-09-04 16:10 A | 42 | 100% | 2011-09-04 16:10 | 2011-09-07 19:10 | 4h | AN |  |  |
| 48 | 1.1.2.2.2.4 | MN-GL: Glosario | milestone | 0h | 2011-09-05 19:10 A | 2011-09-05 19:10 A | 42, 43 | 100% | 2011-09-05 19:10 | 2011-09-06 19:10 | 1h | AN |  |  |
| 49 | 1.1.2.3 | **Requerimientos** |  | 2d | 2011-09-06 19:10 A | 2011-09-07 19:10 A |  | 100% | 2011-09-06 19:10 | 2011-09-06 19:10 | 0d |  | 2h | 2h |
| 50 | 1.1.2.3.1 | **Tareas** |  | 2d | 2011-09-06 19:10 A | 2011-09-07 19:10 A |  | 100% | 2011-09-06 19:10 | 2011-09-06 19:10 | 0d |  | 2h | 2h |
| 51 | 1.1.2.3.1.1 | Establecer que procesos impactan sobre los requerimientos |  | 1h | 2011-09-06 19:10 A | 2011-09-07 19:10 A | 48 | 100% | 2011-09-06 19:10 | 2011-09-06 19:10 | 0h | AN | 1h | 1h |
| 52 | 1.1.2.3.1.2 | Identificar requerimientos del cliente |  | 1h | 2011-09-06 19:10 A | 2011-09-07 19:10 A | 48 | 100% | 2011-09-06 19:10 | 2011-09-06 19:10 | 0h | AN | 1h | 1h |
| 53 | 1.1.2.3.2 | **Entregables** |  | 0d | 2011-09-06 19:10 A | 2011-09-06 19:10 A |  | 100% | 2011-09-06 19:10 | 2011-09-06 19:10 | 0d |  |  |  |
| 54 | 1.1.2.3.2.1 | IR-ER: Especificacion de Requerimientos (Preliminar) | milestone | 0h | 2011-09-06 19:10 A | 2011-09-06 19:10 A | 51, 52 | 100% | 2011-09-06 19:10 | 2011-09-06 19:10 | 0h | AN |  |  |

| ID | WBS | Task | Type | Duration | Start | Finish | Predecessors | Complete | Baseline start | Baseline finish | Baseline duration | Constraint | Resources | Work | Actual work |
| --- | --- | --- | --- | --- | --- | --- | --- | --- | --- | --- | --- | --- | --- | --- | --- |
| 55 | 1.1.3 | **Iteracion 3** |  | 12d | 2011-09-08 19:00 A | 2011-09-17 16:10 A |  | 100% | 2011-09-08 19:00 | 2011-09-17 16:10 | 12d |  |  | 57h | 57h |
| 56 | 1.1.3.1 | **Modelado de Negocio** |  | 2d | 2011-09-08 19:00 A | 2011-09-10 13:10 A |  | 100% | 2011-09-08 19:00 | 2011-09-09 23:00 | 2d |  |  | 12h | 12h |
| 57 | 1.1.3.1.1 | **Tareas** |  | 2d | 2011-09-08 19:00 A | 2011-09-10 13:10 A |  | 100% | 2011-09-08 19:00 | 2011-09-08 21:00 | 0d |  |  | 12h | 12h |
| 58 | 1.1.3.1.1.1 | Validar docuentos de moledalo de negocio obtenidos |  | 6h | 2011-09-08 19:00 A | 2011-09-09 21:00 A | 54 | 100% | 2011-09-08 19:00 | 2011-09-08 20:00 | 1h | start no earlier than 2011-09-08 19:00 | AN | 6h | 6h |
| 59 | 1.1.3.1.1.2 | Identificar requerimientos no funcionales |  | 6h | 2011-09-08 20:00 A | 2011-09-10 13:10 A | 58 | 100% | 2011-09-08 20:00 | 2011-09-08 21:00 | 1h |  | AN | 6h | 6h |
| 60 | 1.1.3.1.2 | **Entregables** |  | 0d | 2011-09-08 21:00 A | 2011-09-08 21:00 A |  | 100% | 2011-09-08 21:00 | 2011-09-09 23:00 | 2d |  |  |  |  |
| 61 | 1.1.3.1.2.1 | IR-AS: Documento de Alcance del Sistema (Preliminar) | milestone | 0h | 2011-09-08 21:00 A | 2011-09-08 21:00 A | 59 | 100% | 2011-09-08 21:00 | 2011-09-09 23:00 | 6h |  | AN |  |  |
| 62 | 1.1.3.1.2.2 | IR-EC: Especificación Complementaria (No Funcional) | milestone | 0h | 2011-09-08 21:00 A | 2011-09-08 21:00 A | 59 | 100% | 2011-09-08 21:00 | 2011-09-09 23:00 | 6h |  | AN |  |  |
| 63 | 1.1.3.2 | **Requerimientos** |  | 2d | 2011-09-08 21:00 A | 2011-09-12 08:00 A |  | 100% | 2011-09-10 10:10 | 2011-09-12 10:00 | 0.5d |  |  | 17h | 17h |
| 64 | 1.1.3.2.1 | **Tareas** |  | 0d | 2011-09-08 21:00 A | 2011-09-08 23:00 A |  | 100% | 2011-09-10 10:10 | 2011-09-10 12:10 | 0d |  |  | 17h | 17h |
| 65 | 1.1.3.2.1.1 | Identificar los requerimientos funcionales |  | 1h | 2011-09-08 21:00 A | 2011-09-08 22:00 A | 61 | 100% | 2011-09-10 10:10 | 2011-09-10 11:10 | 1h |  | AN | 1h | 1h |
| 66 | 1.1.3.2.1.2 | Relacionar cada requerimiento, al rol particular dentro de la organización que lo requirió |  | 1h | 2011-09-08 21:00 A | 2011-09-08 22:00 A | 61 | 100% | 2011-09-10 10:10 | 2011-09-10 11:10 | 1h |  | AN | 1h | 1h |
| 67 | 1.1.3.2.1.3 | Realizar una descripción del requerimiento |  | 1h | 2011-09-08 21:00 A | 2011-09-08 22:00 A | 61 | 100% | 2011-09-10 10:10 | 2011-09-10 11:10 | 1h |  | AN | 1h | 1h |
| 68 | 1.1.3.2.1.4 | Analizar los posibles requerimientos no funcionales, expresados o no por el cliente |  | 2h | 2011-09-08 21:00 A | 2011-09-08 23:00 A | 61 | 100% | 2011-09-10 10:10 | 2011-09-10 12:10 | 2h |  | AN | 2h | 2h |
| 69 | 1.1.3.2.1.5 | Establecer arquitectura candidata |  | 2h | 2011-09-08 21:00 A | 2011-09-08 23:00 A | 61 | 100% | 2011-09-10 10:10 | 2011-09-10 12:10 | 2h |  | AN | 2h | 2h |
| 70 | 1.1.3.2.1.6 | Definir las capas que formaran parte del sistema |  | 2h | 2011-09-08 21:00 A | 2011-09-08 23:00 A | 61 | 100% | 2011-09-10 10:10 | 2011-09-10 12:10 | 2h |  | AN | 2h | 2h |
| 71 | 1.1.3.2.1.7 | Examinar la disponibilidad de componentes fisicos |  | 2h | 2011-09-08 21:00 A | 2011-09-08 23:00 A | 61 | 100% | 2011-09-10 10:10 | 2011-09-10 12:10 | 2h |  | AN | 2h | 2h |
| 72 | 1.1.3.2.1.8 | Ilustrar la arquitectura logica utilizando los diagrama de paquetes |  | 2h | 2011-09-08 21:00 A | 2011-09-08 23:00 A | 61 | 100% | 2011-09-10 10:10 | 2011-09-10 12:10 | 2h |  | AN | 2h | 2h |
| 73 | 1.1.3.2.1.9 | Especificar la interacción entre los componentes |  | 2h | 2011-09-08 21:00 A | 2011-09-08 23:00 A | 61 | 100% | 2011-09-10 10:10 | 2011-09-10 12:10 | 2h |  | AN | 2h | 2h |
| 74 | 1.1.3.2.1.10 | Aplicar patrones de diseño |  | 2h | 2011-09-08 21:00 A | 2011-09-08 23:00 A | 61 | 100% | 2011-09-10 10:10 | 2011-09-10 12:10 | 2h |  | AN | 2h | 2h |
| 75 | 1.1.3.2.2 | **Entregables** |  | 0d | 2011-09-10 11:10 A | 2011-09-12 08:00 A |  | 100% | 2011-09-10 11:10 | 2011-09-12 10:00 | 0.5d |  |  |  |  |
| 76 | 1.1.3.2.2.1 | IR-ER: Especificacion de Requerimientos | milestone | 0h | 2011-09-10 11:10 A | 2011-09-10 11:10 A | 65, 66, 67 | 100% | 2011-09-10 11:10 | 2011-09-10 13:10 | 2h |  | AN |  |  |
| 77 | 1.1.3.2.2.2 | AD-DA: Definición de Arquitectura | milestone | 0h | 2011-09-12 08:00 A | 2011-09-12 08:00 A | 70, 71, 72, 73, 74 | 100% | 2011-09-12 08:00 | 2011-09-12 10:00 | 2h |  | ARQ |  |  |
| 78 | 1.1.3.3 | **Administracion de Proyecto** |  | 8d | 2011-09-12 19:00 A | 2011-09-17 16:10 A |  | 100% | 2011-09-12 19:00 | 2011-09-17 16:10 | 8d |  |  | 28h | 28h |
| 79 | 1.1.3.3.1 | **Tareas** |  | 0d | 2011-09-12 19:00 A | 2011-09-12 20:00 A |  | 100% | 2011-09-12 19:00 | 2011-09-12 20:00 | 0d |  |  | 4h | 4h |
| 80 | 1.1.3.3.1.1 | Identificar Riesgos del Proyecto formalmente |  | 1h | 2011-09-12 19:00 A | 2011-09-12 20:00 A | 77 | 100% | 2011-09-12 19:00 | 2011-09-12 20:00 | 1h |  | LP | 1h | 1h |
| 81 | 1.1.3.3.1.2 | Priorizacion y cuantificacion de riesgos |  | 1h | 2011-09-12 19:00 A | 2011-09-12 20:00 A | 77 | 100% | 2011-09-12 19:00 | 2011-09-12 20:00 | 1h |  | LP | 1h | 1h |
| 82 | 1.1.3.3.1.3 | Definir plan de contingencia y mitigacion |  | 1h | 2011-09-12 19:00 A | 2011-09-12 20:00 A | 77 | 100% | 2011-09-12 19:00 | 2011-09-12 20:00 | 1h |  | LP | 1h | 1h |
| 83 | 1.1.3.3.1.4 | Reunion de avance semanal |  | 1h | 2011-09-12 19:00 A | 2011-09-12 20:00 A | 77 | 100% | 2011-09-12 19:00 | 2011-09-12 20:00 | 1h |  | LP | 1h | 1h |

| ID | WBS | Task | Type | Duration | Start | Finish | Predecessors | Complete | Baseline start | Baseline finish | Baseline duration | Resources | Work | Actual work |
| --- | --- | --- | --- | --- | --- | --- | --- | --- | --- | --- | --- | --- | --- | --- |
| 84 | 1.1.3.3.2 | **Entregables** |  | 6d | 2011-09-13 19:00 A | 2011-09-17 16:10 A |  | 100% | 2011-09-13 19:00 | 2011-09-17 16:10 | 6d |  | 24h | 24h |
| 85 | 1.1.3.3.2.1 | GP-LR: Gestion de Riesgos |  | 4d | 2011-09-13 19:00 A | 2011-09-17 16:10 A | 80, 81, 82 | 100% | 2011-09-13 19:00 | 2011-09-17 16:10 | 4d | LP | 16h | 16h |
| 86 | 1.1.3.3.2.2 | GP-MI: Minuta de reunion |  | 2d | 2011-09-13 19:00 A | 2011-09-16 21:00 A | 83 | 100% | 2011-09-13 19:00 | 2011-09-16 21:00 | 2d | LP | 8h | 8h |
| 87 | 1.1.4 | **Iteracion 4** |  | 6d | 2011-09-17 16:10 A | 2011-09-22 08:00 A |  | 100% | 2011-09-17 16:10 | 2011-09-22 20:10 | 8d |  | 49.5h | 49.5h |
| 88 | 1.1.4.1 | **Modelado de Negocio** |  | 0d | 2011-09-17 16:10 A | 2011-09-18 12:10 A |  | 100% | 2011-09-17 16:10 | 2011-09-18 13:10 | 0d |  | 20h | 20h |
| 89 | 1.1.4.1.1 | **Tareas** |  | 0d | 2011-09-17 16:10 A | 2011-09-18 12:10 A |  | 100% | 2011-09-17 16:10 | 2011-09-18 12:10 | 0d |  | 20h | 20h |
| 90 | 1.1.4.1.1.1 | Refinado de Procesos de Negocios |  | 4h | 2011-09-17 16:10 A | 2011-09-18 12:10 A | 78 | 100% | 2011-09-17 16:10 | 2011-09-18 12:10 | 4h | AN | 4h | 4h |
| 91 | 1.1.4.1.1.2 | Refinado de Diagramas de Actividad |  | 4h | 2011-09-17 16:10 A | 2011-09-18 12:10 A | 78 | 100% | 2011-09-17 16:10 | 2011-09-18 12:10 | 4h | AN | 4h | 4h |
| 92 | 1.1.4.1.1.3 | Refinado de Casos de Uso de Negocio |  | 4h | 2011-09-17 16:10 A | 2011-09-18 12:10 A | 78 | 100% | 2011-09-17 16:10 | 2011-09-18 12:10 | 4h | AN | 4h | 4h |
| 93 | 1.1.4.1.1.4 | Extension de Glosario |  | 4h | 2011-09-17 16:10 A | 2011-09-18 12:10 A | 78 | 100% | 2011-09-17 16:10 | 2011-09-18 12:10 | 4h | AN | 4h | 4h |
| 94 | 1.1.4.1.1.5 | Generacion de Trazabilidad de Entregables |  | 4h | 2011-09-17 16:10 A | 2011-09-18 12:10 A | 78 | 100% | 2011-09-17 16:10 | 2011-09-18 12:10 | 4h | AN | 4h | 4h |
| 95 | 1.1.4.1.2 | **Entretable** |  | 0d | 2011-09-18 12:10 A | 2011-09-18 12:10 A |  | 100% | 2011-09-18 12:10 | 2011-09-18 13:10 | 0d |  |  |  |
| 96 | 1.1.4.1.2.1 | MN-PC: Documento de Presentación del Cliente | milestone | 0h | 2011-09-18 12:10 A | 2011-09-18 12:10 A | 89 | 100% | 2011-09-18 12:10 | 2011-09-18 13:10 | 1h | AN |  |  |
| 97 | 1.1.4.1.2.2 | MN-PN: Descripción de los Procesos de Negocio | milestone | 0h | 2011-09-18 12:10 A | 2011-09-18 12:10 A | 89 | 100% | 2011-09-18 12:10 | 2011-09-18 13:10 | 1h | AN |  |  |
| 98 | 1.1.4.1.2.3 | MN-DA: Diagrama de Actividades | milestone | 0h | 2011-09-18 12:10 A | 2011-09-18 12:10 A | 89 | 100% | 2011-09-18 12:10 | 2011-09-18 13:10 | 1h | AN |  |  |
| 99 | 1.1.4.1.2.4 | MN-CU: Diagrama de Casos de Uso del Negocio | milestone | 0h | 2011-09-18 12:10 A | 2011-09-18 12:10 A | 89 | 100% | 2011-09-18 12:10 | 2011-09-18 13:10 | 1h | AN |  |  |
| 100 | 1.1.4.1.2.5 | MN-GL: Glosario | milestone | 0h | 2011-09-18 12:10 A | 2011-09-18 12:10 A | 89 | 100% | 2011-09-18 12:10 | 2011-09-18 13:10 | 1h | AN |  |  |
| 101 | 1.1.4.1.2.6 | MN-TR: Documento de trazabilidad | milestone | 0h | 2011-09-18 12:10 A | 2011-09-18 12:10 A | 89 | 100% | 2011-09-18 12:10 | 2011-09-18 13:10 | 1h | AN |  |  |
| 102 | 1.1.4.2 | **Administracion de Proyecto** |  | 2d | 2011-09-18 13:10 A | 2011-09-19 19:10 A |  | 100% | 2011-09-18 13:10 | 2011-09-19 19:10 | 2d |  | 10h | 10h |
| 103 | 1.1.4.2.1 | **Tarea** |  | 2d | 2011-09-18 13:10 A | 2011-09-19 19:10 A |  | 100% | 2011-09-18 13:10 | 2011-09-18 14:10 | 0d |  | 10h | 10h |
| 104 | 1.1.4.2.1.1 | Detalle y Refinado de Alcance del Proyecto |  | 5h | 2011-09-18 13:10 A | 2011-09-19 19:10 A | 88 | 100% | 2011-09-18 13:10 | 2011-09-18 14:10 | 1h | AN | 5h | 5h |
| 105 | 1.1.4.2.1.2 | Planificacion Iteracion 4 y 5 |  | 5h | 2011-09-18 13:10 A | 2011-09-19 19:10 A | 88 | 100% | 2011-09-18 13:10 | 2011-09-18 14:10 | 1h | AN | 5h | 5h |
| 106 | 1.1.4.2.2 | **Entregable** |  | 0d | 2011-09-18 14:10 A | 2011-09-18 14:10 A |  | 100% | 2011-09-18 14:10 | 2011-09-19 19:10 | 2d |  |  |  |
| 107 | 1.1.4.2.2.1 | GP-AS: Documento de Alcance del Sistema | milestone | 0h | 2011-09-18 14:10 A | 2011-09-18 14:10 A | 103 | 100% | 2011-09-18 14:10 | 2011-09-19 19:10 | 4h | AN |  |  |
| 108 | 1.1.4.2.2.2 | GP-PP: Planificacion de Proyecto | milestone | 0h | 2011-09-18 14:10 A | 2011-09-18 14:10 A | 103 | 100% | 2011-09-18 14:10 | 2011-09-19 19:10 | 4h | LP |  |  |

| ID | WBS | Task | Type | Duration | Start | Finish | Predecessors | Complete | Baseline start | Baseline finish | Baseline duration | Resources | Work | Actual work |
| --- | --- | --- | --- | --- | --- | --- | --- | --- | --- | --- | --- | --- | --- | --- |
| 109 | 1.1.4.3 | **Analisis y Diseño** |  | 4d | 2011-09-19 19:10 A | 2011-09-22 08:00 A |  | 100% | 2011-09-19 19:10 | 2011-09-22 10:00 | 4.5d |  | 9h | 9h |
| 110 | 1.1.4.3.1 | **Tareas** |  | 4d | 2011-09-19 19:10 A | 2011-09-21 19:10 A |  | 100% | 2011-09-19 19:10 | 2011-09-21 19:10 | 4d |  | 9h | 9h |
| 111 | 1.1.4.3.1.1 | Definir las capas que forman parte del sistema |  | 1h | 2011-09-19 19:10 A | 2011-09-20 19:10 A | 102 | 100% | 2011-09-19 19:10 | 2011-09-20 19:10 | 1h | AN | 1h | 1h |
| 112 | 1.1.4.3.1.2 | Examinar la responsabilidad de componentes fisicos |  | 2h | 2011-09-19 19:10 A | 2011-09-21 19:10 A | 102 | 100% | 2011-09-19 19:10 | 2011-09-21 19:10 | 2h | AN | 2h | 2h |
| 113 | 1.1.4.3.1.3 | Ilustrar la Arquitectura logica utilizando los diagramas de paquetes. |  | 1h | 2011-09-19 19:10 A | 2011-09-20 19:10 A | 102 | 100% | 2011-09-19 19:10 | 2011-09-20 19:10 | 1h | AN | 1h | 1h |
| 114 | 1.1.4.3.1.4 | Especificar la iteracion entre los componentes |  | 1h | 2011-09-19 19:10 A | 2011-09-20 19:10 A | 102 | 100% | 2011-09-19 19:10 | 2011-09-20 19:10 | 1h | AN | 1h | 1h |
| 115 | 1.1.4.3.1.5 | Aplicar patrones de diseño |  | 2h | 2011-09-19 19:10 A | 2011-09-21 19:10 A | 102 | 100% | 2011-09-19 19:10 | 2011-09-21 19:10 | 2h | AN | 2h | 2h |
| 116 | 1.1.4.3.1.6 | Validacion con Arquitecto |  | 2h | 2011-09-19 19:10 A | 2011-09-21 19:10 A | 102 | 100% | 2011-09-19 19:10 | 2011-09-21 19:10 | 2h | ARQ;AN | 2h | 2h |
| 117 | 1.1.4.3.2 | **Entregables** |  | 0d | 2011-09-22 08:00 A | 2011-09-22 08:00 A |  | 100% | 2011-09-22 08:00 | 2011-09-22 10:00 | 0.5d |  |  |  |
| 118 | 1.1.4.3.2.1 | AD-DA:Definicion de Arquitectura | milestone | 0h | 2011-09-22 08:00 A | 2011-09-22 08:00 A | 110 | 100% | 2011-09-22 08:00 | 2011-09-22 10:00 | 2h | ARG |  |  |
| 119 | 1.1.4.4 | **Ingenieria de Requerimientos** |  | 4d | 2011-09-19 19:10 A | 2011-09-21 19:10 A |  | 100% | 2011-09-19 19:10 | 2011-09-22 20:10 | 6d |  | 4h | 4h |
| 120 | 1.1.4.4.1 | **Tareas** |  | 4d | 2011-09-19 19:10 A | 2011-09-21 19:10 A |  | 100% | 2011-09-19 19:10 | 2011-09-21 19:10 | 4d |  | 4h | 4h |
| 121 | 1.1.4.4.1.1 | Detalle de Especificacion de Requerimientos |  | 2h | 2011-09-19 19:10 A | 2011-09-21 19:10 A | 102 | 100% | 2011-09-19 19:10 | 2011-09-21 19:10 | 2h | AN | 2h | 2h |
| 122 | 1.1.4.4.1.2 | Refinado de Especificacion No Funcional |  | 2h | 2011-09-19 19:10 A | 2011-09-21 19:10 A | 102 | 100% | 2011-09-19 19:10 | 2011-09-21 19:10 | 2h | AN | 2h | 2h |
| 123 | 1.1.4.4.2 | **Entregable** |  | 0d | 2011-09-21 19:10 A | 2011-09-21 19:10 A |  | 100% | 2011-09-21 19:10 | 2011-09-22 20:10 | 2d |  |  |  |
| 124 | 1.1.4.4.2.1 | IR-ER: Especificacion de Requerimientos | milestone | 0h | 2011-09-21 19:10 A | 2011-09-21 19:10 A | 120 | 100% | 2011-09-21 19:10 | 2011-09-22 20:10 | 2h | AN |  |  |
| 125 | 1.1.4.4.2.2 | IR-EC: Especificación Complementaria (No Funcional) | milestone | 0h | 2011-09-21 19:10 A | 2011-09-21 19:10 A | 120 | 100% | 2011-09-21 19:10 | 2011-09-22 19:10 | 1h | AN |  |  |
| 126 | 1.1.4.5 | **Aseguramiento de la Calidad** |  | 0d | 2011-09-18 14:10 A | 2011-09-18 16:10 A |  | 100% | 2011-09-18 14:10 | 2011-09-19 19:10 | 2d |  | 4.5h | 4.5h |
| 127 | 1.1.4.5.1 | **Tareas** |  | 0d | 2011-09-18 14:10 A | 2011-09-18 15:10 A |  | 100% | 2011-09-18 14:10 | 2011-09-18 15:10 | 0d |  | 2h | 2h |
| 128 | 1.1.4.5.1.1 | Refinado del Plan de Comunicación |  | 1h | 2011-09-18 14:10 A | 2011-09-18 15:10 A | 103 | 100% | 2011-09-18 14:10 | 2011-09-18 15:10 | 1h | AN | 1h | 1h |
| 129 | 1.1.4.5.1.2 | Revision de los Artefactos |  | 1h | 2011-09-18 14:10 A | 2011-09-18 15:10 A | 103 | 100% | 2011-09-18 14:10 | 2011-09-18 15:10 | 1h | AN | 1h | 1h |
| 130 | 1.1.4.5.2 | **Comprobacion con el Cliente** |  | 0d | 2011-09-18 15:10 A | 2011-09-18 16:10 A |  | 100% | 2011-09-18 15:10 | 2011-09-18 16:10 | 0d |  | 2.5h | 2.5h |
| 131 | 1.1.4.5.2.1 | Requerimientos |  | 0.5h | 2011-09-18 15:10 A | 2011-09-18 15:40 A | 127 | 100% | 2011-09-18 15:10 | 2011-09-18 15:40 | 0.5h | AN | 0.5h | 0.5h |
| 132 | 1.1.4.5.2.2 | Alcance |  | 1h | 2011-09-18 15:10 A | 2011-09-18 16:10 A | 127 | 100% | 2011-09-18 15:10 | 2011-09-18 16:10 | 1h | AN | 1h | 1h |
| 133 | 1.1.4.5.2.3 | Modelado del Negocio |  | 1h | 2011-09-18 15:10 A | 2011-09-18 16:10 A | 127 | 100% | 2011-09-18 15:10 | 2011-09-18 16:10 | 1h | AN | 1h | 1h |

| ID | WBS | Task | Type | Duration | Start | Finish | Predecessors | Complete | Baseline start | Baseline finish | Baseline duration | Resources | Work | Actual work |
| --- | --- | --- | --- | --- | --- | --- | --- | --- | --- | --- | --- | --- | --- | --- |
| 134 | 1.1.4.5.3 | **Entregable** |  | 0d | 2011-09-18 16:10 A | 2011-09-18 16:10 A |  | 100% | 2011-09-18 16:10 | 2011-09-19 19:10 | 2d |  |  |  |
| 135 | 1.1.4.5.3.1 | QA-PC: Plan de Comunicacion | milestone | 0h | 2011-09-18 16:10 A | 2011-09-18 16:10 A | 130 | 100% | 2011-09-18 16:10 | 2011-09-19 19:10 | 2h | LP |  |  |
| 136 | 1.1.4.5.3.2 | QA-LC: Lista de Control | milestone | 0h | 2011-09-18 16:10 A | 2011-09-18 16:10 A | 130 | 100% | 2011-09-18 16:10 | 2011-09-19 19:10 | 2h | LP |  |  |
| 137 | 1.1.4.6 | **Gestion del Cambio** |  | 2d | 2011-09-19 19:10 A | 2011-09-20 19:10 A |  | 100% | 2011-09-19 19:10 | 2011-09-20 19:10 | 2d |  | 2h | 2h |
| 138 | 1.1.4.6.1 | **Tareas** |  | 2d | 2011-09-19 19:10 A | 2011-09-20 19:10 A |  | 100% | 2011-09-19 19:10 | 2011-09-20 19:10 | 2d |  | 2h | 2h |
| 139 | 1.1.4.6.1.1 | Revision de las nuevas versiones de los artefactos |  | 1h | 2011-09-19 19:10 A | 2011-09-20 19:10 A | 134 | 100% | 2011-09-19 19:10 | 2011-09-20 19:10 | 1h | AN | 1h | 1h |
| 140 | 1.1.4.6.1.2 | Aprobacion de las nuevas versiones de los artefactos |  | 1h | 2011-09-19 19:10 A | 2011-09-20 19:10 A | 134 | 100% | 2011-09-19 19:10 | 2011-09-20 19:10 | 1h | AN | 1h | 1h |
| 141 | 1.1.4.6.2 | **Entregable** |  | 0d | 2011-09-20 19:10 A | 2011-09-20 19:10 A |  | 100% | 2011-09-20 19:10 | 2011-09-20 19:10 | 0d |  |  |  |
| 142 | 1.1.4.6.2.1 | Seccion de Aprobacion y Revision en los Artefactos Involucrados | milestone | 0h | 2011-09-20 19:10 A | 2011-09-20 19:10 A | 138 | 100% | 2011-09-20 19:10 | 2011-09-20 19:10 | 0h | AN |  |  |
| 143 | 1.1.5 | Entregable - Informe de Solucion de Proyecto (preliminar) |  | 1h | 2011-09-20 19:10 A | 2011-09-21 19:10 A | 138 | 100% | 2011-09-20 19:10 | 2011-09-21 19:10 | 1h | AN | 1h | 1h |
| 144 | 1.1.6 | Hito - Objetivo y Alcance del Sistema |  | 25.67h | 2011-09-20 19:10 A | 2011-09-25 18:00 A | 138 | 100% | 2011-09-20 19:10 | 2011-09-21 19:10 | 1h | AN | 25.67h | 25.67h |
| 145 | 1.1.7 | **Iteracion 5** |  | 2d | 2011-09-22 20:10 A | 2011-09-25 14:20 A |  | 100% | 2011-09-17 16:10 | 2011-09-22 20:10 | 8d |  | 75h | 75h |
| 146 | 1.1.7.1 | **Modelado de Negocio** |  | 2d | 2011-09-22 20:10 A | 2011-09-23 19:10 A |  | 100% | 2011-09-17 16:10 | 2011-09-18 13:10 | 0d |  | 15h | 15h |
| 147 | 1.1.7.1.1 | **Tareas** |  | 2d | 2011-09-22 20:10 A | 2011-09-23 19:10 A |  | 100% | 2011-09-17 16:10 | 2011-09-18 12:10 | 0d |  | 15h | 15h |
| 148 | 1.1.7.1.1.1 | Refinado de Procesos de Negocios |  | 3h | 2011-09-22 20:10 A | 2011-09-23 19:10 A | 87 | 100% | 2011-09-17 16:10 | 2011-09-18 12:10 | 4h | AN | 3h | 3h |
| 149 | 1.1.7.1.1.2 | Refinado de Diagramas de Actividad |  | 3h | 2011-09-22 20:10 A | 2011-09-23 19:10 A | 87 | 100% | 2011-09-17 16:10 | 2011-09-18 12:10 | 4h | AN | 3h | 3h |
| 150 | 1.1.7.1.1.3 | Refinado de Casos de Uso de Negocio |  | 3h | 2011-09-22 20:10 A | 2011-09-23 19:10 A | 87 | 100% | 2011-09-17 16:10 | 2011-09-18 12:10 | 4h | AN | 3h | 3h |
| 151 | 1.1.7.1.1.4 | Extension de Glosario |  | 3h | 2011-09-22 20:10 A | 2011-09-23 19:10 A | 87 | 100% | 2011-09-17 16:10 | 2011-09-18 12:10 | 4h | AN | 3h | 3h |
| 152 | 1.1.7.1.1.5 | Generacion de Trazabilidad de Entregables |  | 3h | 2011-09-22 20:10 A | 2011-09-23 19:10 A | 87 | 100% | 2011-09-17 16:10 | 2011-09-18 12:10 | 4h | AN | 3h | 3h |
| 153 | 1.1.7.2 | **Administracion de Proyecto** |  | 2d | 2011-09-22 20:10 A | 2011-09-23 20:10 A |  | 100% | 2011-09-18 13:10 | 2011-09-19 19:10 | 2d |  | 8h | 8h |
| 154 | 1.1.7.2.1 | **Tarea** |  | 2d | 2011-09-22 20:10 A | 2011-09-23 20:10 A |  | 100% | 2011-09-18 13:10 | 2011-09-18 14:10 | 0d |  | 8h | 8h |
| 155 | 1.1.7.2.1.1 | Detalle y Refinado de Alcance del Proyecto |  | 4h | 2011-09-22 20:10 A | 2011-09-23 20:10 A | 87 | 100% | 2011-09-18 13:10 | 2011-09-18 14:10 | 1h | AN | 4h | 4h |
| 156 | 1.1.7.2.1.2 | Planificacion Iteracion 4 y 5 |  | 4h | 2011-09-22 20:10 A | 2011-09-23 20:10 A | 87 | 100% | 2011-09-18 13:10 | 2011-09-18 14:10 | 1h | AN | 4h | 4h |
| 157 | 1.1.7.3 | **Analisis y Diseño** |  | 0d | 2011-09-23 20:10 A | 2011-09-24 13:20 A |  | 100% | 2011-09-19 19:10 | 2011-09-22 10:00 | 4.5d |  | 32h | 32h |
| 158 | 1.1.7.3.1 | **Tareas** |  | 0d | 2011-09-23 20:10 A | 2011-09-24 13:20 A |  | 100% | 2011-09-19 19:10 | 2011-09-21 19:10 | 4d |  | 32h | 32h |
| 159 | 1.1.7.3.1.1 | Definir las capas que forman parte del sistema |  | 6h | 2011-09-23 20:10 A | 2011-09-24 13:20 A | 155 | 100% | 2011-09-19 19:10 | 2011-09-20 19:10 | 1h | AN | 6h | 6h |
| 160 | 1.1.7.3.1.2 | Examinar la responsabilidad de componentes fisicos |  | 6h | 2011-09-23 20:10 A | 2011-09-24 13:20 A | 155 | 100% | 2011-09-19 19:10 | 2011-09-21 19:10 | 2h | AN | 6h | 6h |
| 161 | 1.1.7.3.1.3 | Ilustrar la Arquitectura logica utilizando los diagramas de paquetes. |  | 6h | 2011-09-23 20:10 A | 2011-09-24 13:20 A | 155 | 100% | 2011-09-19 19:10 | 2011-09-20 19:10 | 1h | AN | 6h | 6h |
| 162 | 1.1.7.3.1.4 | Especificar la iteracion entre los componentes |  | 6h | 2011-09-23 20:10 A | 2011-09-24 13:20 A | 155 | 100% | 2011-09-19 19:10 | 2011-09-20 19:10 | 1h | AN | 6h | 6h |
| 163 | 1.1.7.3.1.5 | Aplicar patrones de diseño |  | 4h | 2011-09-23 20:10 A | 2011-09-24 11:20 A | 155 | 100% | 2011-09-19 19:10 | 2011-09-21 19:10 | 2h | AN | 4h | 4h |
| 164 | 1.1.7.3.1.6 | Validacion con Arquitecto |  | 4h | 2011-09-23 20:10 A | 2011-09-24 11:20 A | 155 | 100% | 2011-09-19 19:10 | 2011-09-21 19:10 | 2h | ARQ;AN | 4h | 4h |

| ID | WBS | Task | Type | Duration | Start | Finish | Predecessors | Complete | Baseline start | Baseline finish | Baseline duration | Resources | Work | Actual work |
| --- | --- | --- | --- | --- | --- | --- | --- | --- | --- | --- | --- | --- | --- | --- |
| 165 | 1.1.7.4 | **Ingenieria de Requerimientos** |  | 0d | 2011-09-24 13:20 A | 2011-09-24 15:20 A |  | 100% | 2011-09-19 19:10 | 2011-09-22 20:10 | 6d |  | 4h | 4h |
| 166 | 1.1.7.4.1 | **Tareas** |  | 0d | 2011-09-24 13:20 A | 2011-09-24 15:20 A |  | 100% | 2011-09-19 19:10 | 2011-09-21 19:10 | 4d |  | 4h | 4h |
| 167 | 1.1.7.4.1.1 | Detalle de Especificacion de Requerimientos |  | 2h | 2011-09-24 13:20 A | 2011-09-24 15:20 A | 157 | 100% | 2011-09-19 19:10 | 2011-09-21 19:10 | 2h | AN | 2h | 2h |
| 168 | 1.1.7.4.1.2 | Refinado de Especificacion No Funcional |  | 2h | 2011-09-24 13:20 A | 2011-09-24 15:20 A | 157 | 100% | 2011-09-19 19:10 | 2011-09-21 19:10 | 2h | AN | 2h | 2h |
| 169 | 1.1.7.5 | **Aseguramiento de la Calidad** |  | 0d | 2011-09-24 15:20 A | 2011-09-25 11:20 A |  | 100% | 2011-09-18 14:10 | 2011-09-19 19:10 | 2d |  | 10h | 10h |
| 170 | 1.1.7.5.1 | **Tareas** |  | 0d | 2011-09-24 15:20 A | 2011-09-24 17:20 A |  | 100% | 2011-09-18 14:10 | 2011-09-18 15:10 | 0d |  | 4h | 4h |
| 171 | 1.1.7.5.1.1 | Refinado del Plan de Comunicación |  | 2h | 2011-09-24 15:20 A | 2011-09-24 17:20 A | 165 | 100% | 2011-09-18 14:10 | 2011-09-18 15:10 | 1h | AN | 2h | 2h |
| 172 | 1.1.7.5.1.2 | Revision de los Artefactos |  | 2h | 2011-09-24 15:20 A | 2011-09-24 17:20 A | 165 | 100% | 2011-09-18 14:10 | 2011-09-18 15:10 | 1h | AN | 2h | 2h |
| 173 | 1.1.7.5.2 | **Comprobacion con el Cliente** |  | 0d | 2011-09-24 17:20 A | 2011-09-25 11:20 A |  | 100% | 2011-09-18 15:10 | 2011-09-18 16:10 | 0d |  | 6h | 6h |
| 174 | 1.1.7.5.2.1 | Requerimientos |  | 2h | 2011-09-24 17:20 A | 2011-09-25 11:20 A | 170 | 100% | 2011-09-18 15:10 | 2011-09-18 15:40 | 0.5h | AN | 2h | 2h |
| 175 | 1.1.7.5.2.2 | Alcance |  | 2h | 2011-09-24 17:20 A | 2011-09-25 11:20 A | 170 | 100% | 2011-09-18 15:10 | 2011-09-18 16:10 | 1h | AN | 2h | 2h |
| 176 | 1.1.7.5.2.3 | Modelado del Negocio |  | 2h | 2011-09-24 17:20 A | 2011-09-25 11:20 A | 170 | 100% | 2011-09-18 15:10 | 2011-09-18 16:10 | 1h | AN | 2h | 2h |
| 177 | 1.1.7.6 | **Gestion del Cambio** |  | 0d | 2011-09-25 11:20 A | 2011-09-25 14:20 A |  | 100% | 2011-09-19 19:10 | 2011-09-20 19:10 | 2d |  | 6h | 6h |
| 178 | 1.1.7.6.1 | **Tareas** |  | 0d | 2011-09-25 11:20 A | 2011-09-25 14:20 A |  | 100% | 2011-09-19 19:10 | 2011-09-20 19:10 | 2d |  | 6h | 6h |
| 179 | 1.1.7.6.1.1 | Revision de las nuevas versiones de los artefactos |  | 3h | 2011-09-25 11:20 A | 2011-09-25 14:20 A | 169 | 100% | 2011-09-19 19:10 | 2011-09-20 19:10 | 1h | AN | 3h | 3h |
| 180 | 1.1.7.6.1.2 | Aprobacion de las nuevas versiones de los artefactos |  | 3h | 2011-09-25 11:20 A | 2011-09-25 14:20 A | 169 | 100% | 2011-09-19 19:10 | 2011-09-20 19:10 | 1h | AN | 3h | 3h |
| 181 | 1.1.7.6.2 | **Entregable** |  | 0d | 2011-09-25 14:20 A | 2011-09-25 14:20 A |  | 100% | 2011-09-20 19:10 | 2011-09-20 19:10 | 0d |  |  |  |
| 182 | 1.1.7.6.2.1 | Seccion de Aprobacion y Revision en los Artefactos Involucrados | milestone | 0h | 2011-09-25 14:20 A | 2011-09-25 14:20 A | 178 | 100% | 2011-09-20 19:10 | 2011-09-20 19:10 | 0h | AN |  |  |
| 183 | 1.1.8 | **Iteracion 6** |  | 16d | 2011-09-25 15:20 A | 2011-10-05 19:00 A |  | 100% | 2011-09-17 16:10 | 2011-09-22 20:10 | 8d |  | 62h | 62h |
| 184 | 1.1.8.1 | **Modelado de Negocio** |  | 4d | 2011-09-25 15:20 A | 2011-09-27 19:20 A |  | 100% | 2011-09-17 16:10 | 2011-09-18 13:10 | 0d |  | 22h | 22h |
| 185 | 1.1.8.1.1 | **Tareas** |  | 4d | 2011-09-25 15:20 A | 2011-09-27 19:20 A |  | 100% | 2011-09-17 16:10 | 2011-09-18 12:10 | 0d |  | 22h | 22h |
| 186 | 1.1.8.1.1.1 | Refinado de Procesos de Negocios |  | 4h | 2011-09-25 15:20 A | 2011-09-27 19:20 A | 145 | 100% | 2011-09-17 16:10 | 2011-09-18 12:10 | 4h | AN | 4h | 4h |
| 187 | 1.1.8.1.1.2 | Refinado de Diagramas de Actividad |  | 4h | 2011-09-25 15:20 A | 2011-09-27 19:20 A | 145 | 100% | 2011-09-17 16:10 | 2011-09-18 12:10 | 4h | AN | 4h | 4h |
| 188 | 1.1.8.1.1.3 | Refinado de Casos de Uso de Negocio |  | 4h | 2011-09-25 15:20 A | 2011-09-27 19:20 A | 145 | 100% | 2011-09-17 16:10 | 2011-09-18 12:10 | 4h | AN | 4h | 4h |
| 189 | 1.1.8.1.1.4 | Extension de Glosario |  | 4h | 2011-09-25 15:20 A | 2011-09-27 19:20 A | 145 | 100% | 2011-09-17 16:10 | 2011-09-18 12:10 | 4h | AN | 4h | 4h |
| 190 | 1.1.8.1.1.5 | Generacion de Trazabilidad de Entregables |  | 4h | 2011-09-25 15:20 A | 2011-09-27 19:20 A | 145 | 100% | 2011-09-17 16:10 | 2011-09-18 12:10 | 4h | AN | 4h | 4h |
| 191 | 1.1.8.1.1.6 | Refinamiento de Arquitectura Actual |  | 2h | 2011-09-25 15:20 A | 2011-09-25 17:20 A | 145 | 100% |  |  |  | AN | 2h | 2h |

| ID | WBS | Task | Type | Duration | Start | Finish | Predecessors | Complete | Baseline start | Baseline finish | Baseline duration | Resources | Work | Actual work |
| --- | --- | --- | --- | --- | --- | --- | --- | --- | --- | --- | --- | --- | --- | --- |
| 192 | 1.1.8.1.2 | **Entretable** |  | 0d | 2011-09-27 19:20 A | 2011-09-27 19:20 A |  | 100% | 2011-09-18 12:10 | 2011-09-18 13:10 | 0d |  |  |  |
| 193 | 1.1.8.1.2.1 | MN-PC: Documento de Presentación del Cliente | milestone | 0h | 2011-09-27 19:20 A | 2011-09-27 19:20 A | 185 | 100% | 2011-09-18 12:10 | 2011-09-18 13:10 | 1h | AN |  |  |
| 194 | 1.1.8.1.2.2 | MN-PN: Descripción de los Procesos de Negocio | milestone | 0h | 2011-09-27 19:20 A | 2011-09-27 19:20 A | 185 | 100% | 2011-09-18 12:10 | 2011-09-18 13:10 | 1h | AN |  |  |
| 195 | 1.1.8.1.2.3 | MN-DA: Diagrama de Actividades | milestone | 0h | 2011-09-27 19:20 A | 2011-09-27 19:20 A | 185 | 100% | 2011-09-18 12:10 | 2011-09-18 13:10 | 1h | AN |  |  |
| 196 | 1.1.8.1.2.4 | MN-CU: Diagrama de Casos de Uso del Negocio | milestone | 0h | 2011-09-27 19:20 A | 2011-09-27 19:20 A | 185 | 100% | 2011-09-18 12:10 | 2011-09-18 13:10 | 1h | AN |  |  |
| 197 | 1.1.8.1.2.5 | MN-GL: Glosario | milestone | 0h | 2011-09-27 19:20 A | 2011-09-27 19:20 A | 185 | 100% | 2011-09-18 12:10 | 2011-09-18 13:10 | 1h | AN |  |  |
| 198 | 1.1.8.1.2.6 | MN-TR: Documento de trazabilidad | milestone | 0h | 2011-09-27 19:20 A | 2011-09-27 19:20 A | 185 | 100% | 2011-09-18 12:10 | 2011-09-18 13:10 | 1h | AN |  |  |
| 199 | 1.1.8.2 | **Administracion de Proyecto** |  | 0d | 2011-09-29 21:20 A | 2011-09-29 22:20 A |  | 100% | 2011-09-18 13:10 | 2011-09-19 19:10 | 2d |  | 2h | 2h |
| 200 | 1.1.8.2.1 | **Tarea** |  | 0d | 2011-09-29 21:20 A | 2011-09-29 22:20 A |  | 100% | 2011-09-18 13:10 | 2011-09-18 14:10 | 0d |  | 2h | 2h |
| 201 | 1.1.8.2.1.1 | Detalle y Refinado de Alcance del Proyecto |  | 1h | 2011-09-29 21:20 A | 2011-09-29 22:20 A | 184 | 100% | 2011-09-18 13:10 | 2011-09-18 14:10 | 1h | AN | 1h | 1h |
| 202 | 1.1.8.2.1.2 | Planificacion Iteracion 4 y 5 |  | 1h | 2011-09-29 21:20 A | 2011-09-29 22:20 A | 184 | 100% | 2011-09-18 13:10 | 2011-09-18 14:10 | 1h | AN | 1h | 1h |
| 203 | 1.1.8.2.2 | **Entregable** |  | 0d | 2011-09-29 22:20 A | 2011-09-29 22:20 A |  | 100% | 2011-09-18 14:10 | 2011-09-19 19:10 | 2d |  |  |  |
| 204 | 1.1.8.2.2.1 | GP-AS: Documento de Alcance del Sistema | milestone | 0h | 2011-09-29 22:20 A | 2011-09-29 22:20 A | 201, 202 | 100% | 2011-09-18 14:10 | 2011-09-19 19:10 | 4h | AN |  |  |
| 205 | 1.1.8.2.2.2 | GP-PP: RePlanificacion de Proyecto | milestone | 0h | 2011-09-29 22:20 A | 2011-09-29 22:20 A | 201, 202 | 100% | 2011-09-18 14:10 | 2011-09-19 19:10 | 4h | LP |  |  |
| 206 | 1.1.8.3 | **Analisis y Diseño** |  | 0d | 2011-09-30 22:20 A | 2011-10-03 08:00 A |  | 100% | 2011-09-19 19:10 | 2011-09-22 10:00 | 4.5d |  | 24h | 24h |
| 207 | 1.1.8.3.1 | **Tareas** |  | 0d | 2011-09-30 22:20 A | 2011-10-01 13:30 A |  | 100% | 2011-09-19 19:10 | 2011-09-21 19:10 | 4d |  | 24h | 24h |
| 208 | 1.1.8.3.1.1 | Definir las capas que forman parte del sistema |  | 4h | 2011-09-30 22:20 A | 2011-10-01 13:30 A | 199 | 100% | 2011-09-19 19:10 | 2011-09-20 19:10 | 1h | AN | 4h | 4h |
| 209 | 1.1.8.3.1.2 | Examinar la responsabilidad de componentes fisicos |  | 4h | 2011-09-30 22:20 A | 2011-10-01 13:30 A | 199 | 100% | 2011-09-19 19:10 | 2011-09-21 19:10 | 2h | AN | 4h | 4h |
| 210 | 1.1.8.3.1.3 | Ilustrar la Arquitectura logica utilizando los diagramas de paquetes. |  | 4h | 2011-09-30 22:20 A | 2011-10-01 13:30 A | 199 | 100% | 2011-09-19 19:10 | 2011-09-20 19:10 | 1h | AN | 4h | 4h |
| 211 | 1.1.8.3.1.4 | Especificar la iteracion entre los componentes |  | 4h | 2011-09-30 22:20 A | 2011-10-01 13:30 A | 199 | 100% | 2011-09-19 19:10 | 2011-09-20 19:10 | 1h | AN | 4h | 4h |
| 212 | 1.1.8.3.1.5 | Aplicar patrones de diseño |  | 4h | 2011-09-30 22:20 A | 2011-10-01 13:30 A | 199 | 100% | 2011-09-19 19:10 | 2011-09-21 19:10 | 2h | AN | 4h | 4h |
| 213 | 1.1.8.3.1.6 | Validacion con Arquitecto |  | 4h | 2011-09-30 22:20 A | 2011-10-01 13:30 A | 199 | 100% | 2011-09-19 19:10 | 2011-09-21 19:10 | 2h | ARQ;AN | 4h | 4h |
| 214 | 1.1.8.3.2 | **Entregables** |  | 0d | 2011-10-03 08:00 A | 2011-10-03 08:00 A |  | 100% | 2011-09-22 08:00 | 2011-09-22 10:00 | 0.5d |  |  |  |
| 215 | 1.1.8.3.2.1 | AD-DA:Definicion de Arquitectura | milestone | 0h | 2011-10-03 08:00 A | 2011-10-03 08:00 A | 207 | 100% | 2011-09-22 08:00 | 2011-09-22 10:00 | 2h | ARG |  |  |

| ID | WBS | Task | Type | Duration | Start | Finish | Predecessors | Complete | Baseline start | Baseline finish | Baseline duration | Resources | Work | Actual work |
| --- | --- | --- | --- | --- | --- | --- | --- | --- | --- | --- | --- | --- | --- | --- |
| 216 | 1.1.8.4 | **Ingenieria de Requerimientos** |  | 4d | 2011-10-03 19:00 A | 2011-10-05 19:00 A |  | 100% | 2011-09-19 19:10 | 2011-09-22 20:10 | 6d |  | 4h | 4h |
| 217 | 1.1.8.4.1 | **Tareas** |  | 2d | 2011-10-03 19:00 A | 2011-10-04 20:00 A |  | 100% | 2011-09-19 19:10 | 2011-09-21 19:10 | 4d |  | 4h | 4h |
| 218 | 1.1.8.4.1.1 | Detalle de Especificacion de Requerimientos |  | 2h | 2011-10-03 19:00 A | 2011-10-04 20:00 A | 206 | 100% | 2011-09-19 19:10 | 2011-09-21 19:10 | 2h | AN | 2h | 2h |
| 219 | 1.1.8.4.1.2 | Refinado de Especificacion No Funcional |  | 2h | 2011-10-03 19:00 A | 2011-10-04 20:00 A | 206 | 100% | 2011-09-19 19:10 | 2011-09-21 19:10 | 2h | AN | 2h | 2h |
| 220 | 1.1.8.4.2 | **Entregable** |  | 0d | 2011-10-05 19:00 A | 2011-10-05 19:00 A |  | 100% | 2011-09-21 19:10 | 2011-09-22 20:10 | 2d |  |  |  |
| 221 | 1.1.8.4.2.1 | IR-ER: Especificacion de Requerimientos | milestone | 0h | 2011-10-05 19:00 A | 2011-10-05 19:00 A | 217 | 100% | 2011-09-21 19:10 | 2011-09-22 20:10 | 2h | AN |  |  |
| 222 | 1.1.8.4.2.2 | IR-EC: Especificación Complementaria (No Funcional) | milestone | 0h | 2011-10-05 19:00 A | 2011-10-05 19:00 A | 217 | 100% | 2011-09-21 19:10 | 2011-09-22 19:10 | 1h | AN |  |  |
| 223 | 1.1.8.5 | **Aseguramiento de la Calidad** |  | 2d | 2011-09-29 22:20 A | 2011-09-30 21:20 A |  | 100% | 2011-09-18 14:10 | 2011-09-19 19:10 | 2d |  | 8h | 8h |
| 224 | 1.1.8.5.1 | **Tareas** |  | 2d | 2011-09-29 22:20 A | 2011-09-30 19:20 A |  | 100% | 2011-09-18 14:10 | 2011-09-18 15:10 | 0d |  | 2h | 2h |
| 225 | 1.1.8.5.1.1 | Refinado del Plan de Comunicación |  | 1h | 2011-09-29 22:20 A | 2011-09-30 19:20 A | 200 | 100% | 2011-09-18 14:10 | 2011-09-18 15:10 | 1h | AN | 1h | 1h |
| 226 | 1.1.8.5.1.2 | Revision de los Artefactos |  | 1h | 2011-09-29 22:20 A | 2011-09-30 19:20 A | 200 | 100% | 2011-09-18 14:10 | 2011-09-18 15:10 | 1h | AN | 1h | 1h |
| 227 | 1.1.8.5.2 | **Comprobacion con el Cliente** |  | 0d | 2011-09-30 19:20 A | 2011-09-30 21:20 A |  | 100% | 2011-09-18 15:10 | 2011-09-18 16:10 | 0d |  | 6h | 6h |
| 228 | 1.1.8.5.2.1 | Requerimientos |  | 2h | 2011-09-30 19:20 A | 2011-09-30 21:20 A | 224 | 100% | 2011-09-18 15:10 | 2011-09-18 15:40 | 0.5h | AN | 2h | 2h |
| 229 | 1.1.8.5.2.2 | Alcance |  | 2h | 2011-09-30 19:20 A | 2011-09-30 21:20 A | 224 | 100% | 2011-09-18 15:10 | 2011-09-18 16:10 | 1h | AN | 2h | 2h |
| 230 | 1.1.8.5.2.3 | Modelado del Negocio |  | 2h | 2011-09-30 19:20 A | 2011-09-30 21:20 A | 224 | 100% | 2011-09-18 15:10 | 2011-09-18 16:10 | 1h | AN | 2h | 2h |
| 231 | 1.1.8.5.3 | **Entregable** |  | 0d | 2011-09-30 21:20 A | 2011-09-30 21:20 A |  | 100% | 2011-09-18 16:10 | 2011-09-19 19:10 | 2d |  |  |  |
| 232 | 1.1.8.5.3.1 | QA-PC: Plan de Comunicacion | milestone | 0h | 2011-09-30 21:20 A | 2011-09-30 21:20 A | 227 | 100% | 2011-09-18 16:10 | 2011-09-19 19:10 | 2h | LP |  |  |
| 233 | 1.1.8.5.3.2 | QA-LC: Lista de Control | milestone | 0h | 2011-09-30 21:20 A | 2011-09-30 21:20 A | 227 | 100% | 2011-09-18 16:10 | 2011-09-19 19:10 | 2h | LP |  |  |
| 234 | 1.1.8.6 | **Gestion del Cambio** |  | 0d | 2011-10-01 12:30 A | 2011-10-01 13:30 A |  | 100% | 2011-09-19 19:10 | 2011-09-20 19:10 | 2d |  | 2h | 2h |
| 235 | 1.1.8.6.1 | **Tareas** |  | 0d | 2011-10-01 12:30 A | 2011-10-01 13:30 A |  | 100% | 2011-09-19 19:10 | 2011-09-20 19:10 | 2d |  | 2h | 2h |
| 236 | 1.1.8.6.1.1 | Revision de las nuevas versiones de los artefactos |  | 1h | 2011-10-01 12:30 A | 2011-10-01 13:30 A | 231 | 100% | 2011-09-19 19:10 | 2011-09-20 19:10 | 1h | AN | 1h | 1h |
| 237 | 1.1.8.6.1.2 | Aprobacion de las nuevas versiones de los artefactos |  | 1h | 2011-10-01 12:30 A | 2011-10-01 13:30 A | 231 | 100% | 2011-09-19 19:10 | 2011-09-20 19:10 | 1h | AN | 1h | 1h |
| 238 | 1.1.8.6.2 | **Entregable** |  | 0d | 2011-10-01 13:30 A | 2011-10-01 13:30 A |  | 100% | 2011-09-20 19:10 | 2011-09-20 19:10 | 0d |  |  |  |
| 239 | 1.1.8.6.2.1 | Seccion de Aprobacion y Revision en los Artefactos Involucrados | milestone | 0h | 2011-10-01 13:30 A | 2011-10-01 13:30 A | 235 | 100% | 2011-09-20 19:10 | 2011-09-20 19:10 | 0h | AN |  |  |
| 240 | 1.1.9 | Entregable - Informe de Solucion de Proyecto (Final) |  | 1h | 2011-10-06 22:00 A | 2011-10-06 23:00 A | 183 | 100% | 2011-09-20 19:10 | 2011-09-21 19:10 | 1h | AN | 1h | 1h |
| 241 | 1.1.10 | Hito - Objetivo y Alcance del Sistema |  | 1h | 2011-10-06 22:00 A | 2011-10-06 23:00 A | 183 | 100% | 2011-09-20 19:10 | 2011-09-21 19:10 | 1h | AN | 1h | 1h |

| ID | WBS | Task | Type | Duration | Start | Finish | Predecessors | Complete | Remaining | Baseline start | Baseline finish | Baseline duration | Total slack | Resources | Work | Actual work |
| --- | --- | --- | --- | --- | --- | --- | --- | --- | --- | --- | --- | --- | --- | --- | --- | --- |
| 242 | 1.2 | **Fase de Elaboracion** |  | 74.25d | 2011-10-07 19:00 A | 2011-11-30 09:00 | 241 | 99% | 0.2d | 2011-08-29 08:00 | 2011-11-03 20:00 | 98d? | 0d |  | 297.33h | 297.33h |
| 243 | 1.2.1 | **Iteracion 7** |  | 8d | 2011-10-07 19:00 A | 2011-10-13 22:10 A |  | 100% |  | 2011-08-29 08:00 | 2011-09-29 20:20 | 48d? |  |  | 24h | 24h |
| 244 | 1.2.1.1 | **Analisis y Diseño** |  | 6d | 2011-10-07 19:00 A | 2011-10-12 19:10 A |  | 100% |  | 2011-09-22 20:10 | 2011-09-23 21:10 | 2d? |  |  | 13h | 13h |
| 245 | 1.2.1.1.1 | **Tareas** |  | 0d | 2011-10-07 19:00 A | 2011-10-09 11:10 A | 241 | 100% |  | 2011-09-22 20:10 | 2011-09-23 20:10 | 2d? |  |  | 13h | 13h |
| 246 | 1.2.1.1.1.1 | Diagramar los casos de uso de sistema identificados con los actore identificados |  | 1h | 2011-10-07 19:00 A | 2011-10-07 20:00 A |  | 100% |  | 2011-09-22 20:10 | 2011-09-22 21:10 | 1h |  | AN | 1h | 1h |
| 247 | 1.2.1.1.1.2 | Identificar las interacciones entre actores y el sistema |  | 1h | 2011-10-07 20:00 A | 2011-10-07 21:00 A | 246 | 100% |  | 2011-09-22 20:10 | 2011-09-22 21:10 | 1h |  | AN | 1h | 1h |
| 248 | 1.2.1.1.1.3 | Generar una lista de casos de uso, y realizar una breve descripción de los mismos |  | 1h | 2011-10-07 21:00 A | 2011-10-07 22:00 A | 247 | 100% |  | 2011-09-22 20:10 | 2011-09-22 21:10 | 1h |  | AN | 1h | 1h |
| 249 | 1.2.1.1.1.4 | Detallar las interacciones entre los actores y el sistema |  | 1h | 2011-10-07 22:00 A | 2011-10-07 23:00 A | 248 | 100% |  | 2011-09-22 20:10 | 2011-09-22 21:10 | 1h |  | AN | 1h | 1h |
| 250 | 1.2.1.1.1.5 | Evaluar las alternativas de acción en los casos de uso |  | 1h | 2011-10-08 10:10 A | 2011-10-08 11:10 A | 249 | 100% |  | 2011-09-22 20:10 | 2011-09-22 21:10 | 1h |  | AN | 1h | 1h |
| 251 | 1.2.1.1.1.6 | Identificar los objetos necesarios para llevar a cabo el curso normal del caso de uso |  | 1h | 2011-10-08 11:10 A | 2011-10-08 12:10 A | 250 | 100% |  | 2011-09-22 20:10 | 2011-09-22 21:10 | 1h |  | AN | 1h | 1h |
| 252 | 1.2.1.1.1.7 | Diagramar la interacción a través del tiempo entre los objetos que intervienen en el caso de uso |  | 1h | 2011-10-08 12:10 A | 2011-10-08 13:10 A | 251 | 100% |  | 2011-09-22 20:10 | 2011-09-22 21:10 | 1h |  | AN | 1h | 1h |
| 253 | 1.2.1.1.1.8 | Definir las capas que formaran parte del sistema |  | 1h | 2011-10-08 13:10 A | 2011-10-08 14:10 A | 252 | 100% |  | 2011-09-22 20:10 | 2011-09-22 21:10 | 1h |  | AN | 1h | 1h |
| 254 | 1.2.1.1.1.9 | Examinar la disponibilidad de componentes fisicos |  | 1h | 2011-10-08 14:10 A | 2011-10-08 15:10 A | 253 | 100% |  | 2011-09-22 20:10 | 2011-09-22 21:10 | 1h |  | AN | 1h | 1h |
| 255 | 1.2.1.1.1.10 | Ilustrar la arquitectura logica utilizando los diagrama de paquetes |  | 1h | 2011-10-08 15:10 A | 2011-10-08 16:10 A | 254 | 100% |  | 2011-09-22 20:10 | 2011-09-22 21:10 | 1h |  | AN | 1h | 1h |
| 256 | 1.2.1.1.1.11 | Especificar la interacción entre los componentes |  | 1h | 2011-10-08 16:10 A | 2011-10-08 17:10 A | 255 | 100% |  | 2011-09-22 20:10 | 2011-09-22 21:10 | 1h |  | AN | 1h | 1h |
| 257 | 1.2.1.1.1.12 | Aplicar patrones de diseño |  | 1h | 2011-10-08 17:10 A | 2011-10-09 10:10 A | 256 | 100% |  | 2011-09-22 20:10 | 2011-09-22 21:10 | 1h |  | AN | 1h | 1h |
| 258 | 1.2.1.1.1.13 | Identificar la trazabilidad entre requerimiento – caso de uso de sistema - alcance |  | 1h | 2011-10-09 10:10 A | 2011-10-09 11:10 A | 257 | 100% |  | 2011-09-22 20:10 | 2011-09-23 20:10 | 4h? |  | AN | 1h | 1h |
| 259 | 1.2.1.1.2 | **Entregables** |  | 6d | 2011-10-09 11:10 A | 2011-10-12 19:10 A | 245 | 100% |  | 2011-09-22 21:10 | 2011-09-23 21:10 | 2d |  |  |  |  |
| 260 | 1.2.1.1.2.1 | AD-TG-Documento de casos de uso del sistema - Trazo Grueso (Preliminar) | milestone | 0h | 2011-10-09 11:10 A | 2011-10-09 11:10 A |  | 100% |  | 2011-09-22 21:10 | 2011-09-23 19:10 | 2h |  | AN |  |  |
| 261 | 1.2.1.1.2.2 | AD-TF-Documento de casos de uso del sistema - Trazo Fino (Preliminar) | milestone | 0h | 2011-10-09 13:10 A | 2011-10-09 13:10 A | 260 | 100% |  | 2011-09-22 21:10 | 2011-09-23 19:10 | 2h |  | AN |  |  |
| 262 | 1.2.1.1.2.3 | AD-DC-Diagrama del casos de uso del sistema (Preliminar) | milestone | 0h | 2011-10-09 15:10 A | 2011-10-09 15:10 A | 261 | 100% |  | 2011-09-22 21:10 | 2011-09-22 22:10 | 1h |  | AN |  |  |
| 263 | 1.2.1.1.2.4 | AD-DS-Diagramas de Secuencia (Preliminar) | milestone | 0h | 2011-10-09 16:10 A | 2011-10-09 16:10 A | 262 | 100% |  | 2011-09-22 21:10 | 2011-09-23 19:10 | 2h |  | AN |  |  |
| 264 | 1.2.1.1.2.5 | AD-DS-Diagrama de Clases (Preliminar) | milestone | 0h | 2011-10-10 19:10 A | 2011-10-10 19:10 A | 263 | 100% |  | 2011-09-22 21:10 | 2011-09-23 19:10 | 2h |  | AN |  |  |
| 265 | 1.2.1.1.2.6 | AD-TR-Trazabilidad (Preliminar) | milestone | 0h | 2011-10-12 19:10 A | 2011-10-12 19:10 A | 264 | 100% |  | 2011-09-23 20:10 | 2011-09-23 21:10 | 1h |  | AN |  |  |

| ID | WBS | Task | Type | Duration | Start | Finish | Predecessors | Complete | Baseline start | Baseline finish | Baseline duration | Resources | Work | Actual work |
| --- | --- | --- | --- | --- | --- | --- | --- | --- | --- | --- | --- | --- | --- | --- |
| 266 | 1.2.1.2 | **Administracion de Poryecto** |  | 2d | 2011-10-07 19:00 A | 2011-10-10 19:10 A |  | 100% | 2011-08-29 08:00 | 2011-09-28 19:20 | 46d |  | 4h | 4h |
| 267 | 1.2.1.2.1 | **Tareas** |  | 0d | 2011-10-07 19:00 A | 2011-10-07 23:00 A | 241 | 100% | 2011-08-29 08:00 | 2011-09-22 21:10 | 38d |  | 4h | 4h |
| 268 | 1.2.1.2.1.1 | Revision e insercion de valor agregar al Alcance de Sistema |  | 1h | 2011-10-07 19:00 A | 2011-10-07 20:00 A |  | 100% | 2011-09-22 20:10 | 2011-09-22 21:10 | 1h | LP | 1h | 1h |
| 269 | 1.2.1.2.1.2 | Identificar tareas de fase de elaboracion |  | 1h | 2011-10-07 20:00 A | 2011-10-07 21:00 A | 268 | 100% | 2011-09-22 20:10 | 2011-09-22 21:10 | 1h | LP | 1h | 1h |
| 270 | 1.2.1.2.1.3 | Asignacion de recursos para cada tarea identificada |  | 1h | 2011-10-07 21:00 A | 2011-10-07 22:00 A | 269 | 100% | 2011-09-22 20:10 | 2011-09-22 21:10 | 1h | LP | 1h | 1h |
| 271 | 1.2.1.2.1.4 | Asignacion de tiempos a tarea/recurso |  | 1h | 2011-10-07 22:00 A | 2011-10-07 23:00 A | 270 | 100% | 2011-09-22 20:10 | 2011-09-22 21:10 | 1h | LP | 1h | 1h |
| 272 | 1.2.1.2.2 | **Entregables** |  | 2d | 2011-10-08 10:10 A | 2011-10-10 19:10 A | 267 | 100% | 2011-08-29 19:00 | 2011-09-28 19:20 | 44d |  |  |  |
| 273 | 1.2.1.2.2.1 | GP-AS: Documento de Alcance del Sistema | milestone | 0d | 2011-10-08 10:10 A | 2011-10-08 10:10 A | 268 | 100% | 2011-09-22 21:10 | 2011-09-28 19:20 | 6d | LP |  |  |
| 274 | 1.2.1.2.2.2 | GP-PP Planificacion del Proyecto | milestone | 0h | 2011-10-10 19:10 A | 2011-10-10 19:10 A | 273 | 100% | 2011-09-22 21:10 | 2011-09-23 20:10 | 3h | LP |  |  |
| 275 | 1.2.1.3 | **Aseguramiento de la Calidad** |  | 6d | 2011-10-10 19:10 A | 2011-10-13 20:10 A |  | 100% | 2011-09-22 20:10 | 2011-09-29 19:20 | 10d |  | 4h | 4h |
| 276 | 1.2.1.3.1 | **Tareas** |  | 2d | 2011-10-10 19:10 A | 2011-10-11 19:10 A | 273 | 100% | 2011-09-22 20:10 | 2011-09-22 21:10 | 0d |  | 1h | 1h |
| 277 | 1.2.1.3.1.1 | Revision de todos los artefactos |  | 1h | 2011-10-10 19:10 A | 2011-10-11 19:10 A |  | 100% | 2011-09-22 20:10 | 2011-09-22 21:10 | 1h | AN | 1h | 1h |
| 278 | 1.2.1.3.2 | **Comprobacion con el Cliente** |  | 4d | 2011-10-11 19:10 A | 2011-10-13 20:10 A | 276 | 100% | 2011-09-22 21:10 | 2011-09-22 22:10 | 0d |  | 3h | 3h |
| 279 | 1.2.1.3.2.1 | Requerimientos |  | 1h | 2011-10-11 19:10 A | 2011-10-12 19:10 A |  | 100% | 2011-09-22 21:10 | 2011-09-22 21:40 | 0.5h | AN | 1h | 1h |
| 280 | 1.2.1.3.2.2 | Alcance |  | 1h | 2011-10-12 19:10 A | 2011-10-13 19:10 A | 279 | 100% | 2011-09-22 21:10 | 2011-09-22 22:10 | 1h | AN | 1h | 1h |
| 281 | 1.2.1.3.2.3 | Modelado del Negocio |  | 1h | 2011-10-13 19:10 A | 2011-10-13 20:10 A | 280 | 100% | 2011-09-22 21:10 | 2011-09-22 22:10 | 1h | AN | 1h | 1h |
| 282 | 1.2.1.3.3 | **Entregable** |  | 0d | 2011-10-13 20:10 A | 2011-10-13 20:10 A | 278 | 100% | 2011-09-28 19:20 | 2011-09-29 19:20 | 2d |  |  |  |
| 283 | 1.2.1.3.3.1 | QA-LC: Lista de Control | milestone | 0h | 2011-10-13 20:10 A | 2011-10-13 20:10 A |  | 100% | 2011-09-28 19:20 | 2011-09-29 19:20 | 1h | LP |  |  |
| 284 | 1.2.1.4 | **Gestion del Cambio** |  | 0d | 2011-10-13 19:10 A | 2011-10-13 22:10 A |  | 100% | 2011-09-29 19:20 | 2011-09-29 20:20 | 0d |  | 3h | 3h |
| 285 | 1.2.1.4.1 | **Tareas** |  | 0d | 2011-10-13 19:10 A | 2011-10-13 21:10 A |  | 100% | 2011-09-29 19:20 | 2011-09-29 20:20 | 0d |  | 2h | 2h |
| 286 | 1.2.1.4.1.1 | Revision de las nuevas versiones de los artefactos |  | 1h | 2011-10-13 19:10 A | 2011-10-13 20:10 A | 272 | 100% | 2011-09-29 19:20 | 2011-09-29 20:20 | 1h | AN | 1h | 1h |
| 287 | 1.2.1.4.1.2 | Aprobacion de las nuevas versiones de los artefactos |  | 1h | 2011-10-13 20:10 A | 2011-10-13 21:10 A | 286 | 100% | 2011-09-29 19:20 | 2011-09-29 20:20 | 1h | AN | 1h | 1h |
| 288 | 1.2.1.4.2 | **Entregable** |  | 0d | 2011-10-13 21:10 A | 2011-10-13 22:10 A |  | 100% | 2011-09-29 20:20 | 2011-09-29 20:20 | 0d |  | 1h | 1h |
| 289 | 1.2.1.4.2.1 | Seccion de Aprobacion y Revision en los Artefactos Involucrados |  | 1h | 2011-10-13 21:10 A | 2011-10-13 22:10 A | 287 | 100% | 2011-09-29 20:20 | 2011-09-29 20:20 | 0h | AN | 1h | 1h |

| ID | WBS | Task | Type | Duration | Start | Finish | Predecessors | Complete | Baseline start | Baseline finish | Baseline duration | Resources | Work | Actual work |
| --- | --- | --- | --- | --- | --- | --- | --- | --- | --- | --- | --- | --- | --- | --- |
| 290 | 1.2.2 | **Iteracion 8** |  | 10d | 2011-10-14 08:00 A | 2011-10-20 17:00 A | 243 | 100% | 2011-09-29 20:20 | 2011-10-06 21:30 | 10d? |  | 44.67h | 44.67h |
| 291 | 1.2.2.1 | **Analisis y Diseño** |  | 9.5d | 2011-10-14 08:00 A | 2011-10-20 15:00 A |  | 100% | 2011-09-29 20:20 | 2011-10-01 13:30 | 2d? | AN | 22.83h | 22.83h |
| 292 | 1.2.2.1.1 | **Tareas** |  | 5.5d | 2011-10-14 08:00 A | 2011-10-18 15:00 A |  | 100% | 2011-09-29 20:20 | 2011-09-30 20:20 | 2d? |  |  |  |
| 293 | 1.2.2.1.1.1 | Diagramar los casos de uso de sistema identificados con los actore identificados |  | 2h | 2011-10-14 08:00 A | 2011-10-14 10:00 A |  | 100% | 2011-09-29 20:20 | 2011-09-29 22:20 | 2h |  |  |  |
| 294 | 1.2.2.1.1.2 | Identificar las interacciones entre actores y el sistema |  | 2h | 2011-10-14 08:00 A | 2011-10-14 10:00 A | 263 | 100% | 2011-09-29 20:20 | 2011-09-29 22:20 | 2h |  |  |  |
| 295 | 1.2.2.1.1.3 | Generar una lista de casos de uso, y realizar una breve descripción de los mismos |  | 2h | 2011-10-14 08:00 A | 2011-10-14 10:00 A | 264 | 100% | 2011-09-29 20:20 | 2011-09-29 22:20 | 2h |  |  |  |
| 296 | 1.2.2.1.1.4 | Detallar las interacciones entre los actores y el sistema |  | 2h | 2011-10-14 08:00 A | 2011-10-14 10:00 A | 265 | 100% | 2011-09-29 20:20 | 2011-09-29 22:20 | 2h |  |  |  |
| 297 | 1.2.2.1.1.5 | Evaluar las alternativas de acción en los casos de uso |  | 2h | 2011-10-14 10:00 A | 2011-10-14 12:00 A | 296 | 100% | 2011-09-29 20:20 | 2011-09-29 22:20 | 2h |  |  |  |
| 298 | 1.2.2.1.1.6 | Identificar los objetos necesarios para llevar a cabo el curso normal del caso de uso |  | 2h | 2011-10-14 13:00 A | 2011-10-14 15:00 A | 297 | 100% | 2011-09-29 20:20 | 2011-09-29 22:20 | 2h |  |  |  |
| 299 | 1.2.2.1.1.7 | Diagramar la interacción a través del tiempo entre los objetos que intervienen en el caso de uso |  | 2h | 2011-10-14 15:00 A | 2011-10-14 17:00 A | 298 | 100% | 2011-09-29 20:20 | 2011-09-29 22:20 | 2h |  |  |  |
| 300 | 1.2.2.1.1.8 | Definir las capas que formaran parte del sistema |  | 2h | 2011-10-17 08:00 A | 2011-10-17 10:00 A | 299 | 100% | 2011-09-29 20:20 | 2011-09-29 22:20 | 2h |  |  |  |
| 301 | 1.2.2.1.1.9 | Examinar la disponibilidad de componentes fisicos |  | 2h | 2011-10-17 10:00 A | 2011-10-17 12:00 A | 300 | 100% | 2011-09-29 20:20 | 2011-09-29 22:20 | 2h |  |  |  |
| 302 | 1.2.2.1.1.10 | Ilustrar la arquitectura logica utilizando los diagrama de paquetes |  | 2h | 2011-10-17 13:00 A | 2011-10-17 15:00 A | 301 | 100% | 2011-09-29 20:20 | 2011-09-29 22:20 | 2h |  |  |  |
| 303 | 1.2.2.1.1.11 | Especificar la interacción entre los componentes |  | 2h | 2011-10-17 15:00 A | 2011-10-17 17:00 A | 302 | 100% | 2011-09-29 20:20 | 2011-09-29 22:20 | 2h |  |  |  |
| 304 | 1.2.2.1.1.12 | Aplicar patrones de diseño |  | 2h | 2011-10-18 08:00 A | 2011-10-18 10:00 A | 303 | 100% | 2011-09-29 20:20 | 2011-09-29 22:20 | 2h |  |  |  |
| 305 | 1.2.2.1.1.13 | Identificar la trazabilidad entre requerimiento – caso de uso de sistema - alcance |  | 4h | 2011-10-18 10:00 A | 2011-10-18 15:00 A | 304 | 100% | 2011-09-29 20:20 | 2011-09-30 20:20 | 4h? |  |  |  |
| 306 | 1.2.2.1.2 | **Entregables** |  | 4d | 2011-10-18 15:00 A | 2011-10-20 15:00 A |  | 100% | 2011-09-29 22:20 | 2011-10-01 13:30 | 2d |  |  |  |
| 307 | 1.2.2.1.2.1 | AD-TG-Documento de casos de uso del sistema - Trazo Grueso (Preliminar) | milestone | 0h | 2011-10-18 15:00 A | 2011-10-18 15:00 A | 292 | 100% | 2011-09-29 22:20 | 2011-10-01 13:30 | 8h |  |  |  |
| 308 | 1.2.2.1.2.2 | AD-TF-Documento de casos de uso del sistema - Trazo Fino (Preliminar) | milestone | 0h | 2011-10-19 08:00 A | 2011-10-19 08:00 A | 307 | 100% | 2011-09-29 22:20 | 2011-09-30 22:20 | 4h |  |  |  |
| 309 | 1.2.2.1.2.3 | AD-DC-Diagrama del casos de uso del sistema (Preliminar) | milestone | 0h | 2011-10-19 15:00 A | 2011-10-19 15:00 A | 308 | 100% | 2011-09-29 22:20 | 2011-09-30 22:20 | 4h |  |  |  |
| 310 | 1.2.2.1.2.4 | AD-DS-Diagramas de Secuencia (Preliminar) | milestone | 0h | 2011-10-20 10:00 A | 2011-10-20 10:00 A | 309 | 100% | 2011-09-29 22:20 | 2011-09-30 22:20 | 4h |  |  |  |
| 311 | 1.2.2.1.2.5 | AD-TR-Trazabilidad (Preliminar) | milestone | 0h | 2011-10-20 15:00 A | 2011-10-20 15:00 A | 310 | 100% | 2011-09-30 20:20 | 2011-09-30 22:20 | 2h |  |  |  |
| 312 | 1.2.2.2 | **Administracion de Poryecto** |  | 2.75d | 2011-10-14 08:00 A | 2011-10-17 11:00 A |  | 100% | 2011-10-01 13:30 | 2011-10-02 15:30 | 0d | LP | 19.83h | 19.83h |
| 313 | 1.2.2.2.1 | **Tareas** |  | 1.75d | 2011-10-14 08:00 A | 2011-10-14 16:00 A |  | 100% | 2011-10-01 13:30 | 2011-10-01 15:30 | 0d |  |  |  |
| 314 | 1.2.2.2.1.1 | Identificar Riesgos del Proyecto formalmente |  | 2h | 2011-10-14 08:00 A | 2011-10-14 10:00 A |  | 100% | 2011-10-01 13:30 | 2011-10-01 15:30 | 2h |  |  |  |
| 315 | 1.2.2.2.1.2 | Priorizacion y cuantificacion de riesgos |  | 2h | 2011-10-14 10:00 A | 2011-10-14 12:00 A | 314 | 100% | 2011-10-01 13:30 | 2011-10-01 15:30 | 2h |  |  |  |
| 316 | 1.2.2.2.1.3 | Definir plan de contingencia y mitigacion |  | 2h | 2011-10-14 13:00 A | 2011-10-14 15:00 A | 315 | 100% | 2011-10-01 13:30 | 2011-10-01 15:30 | 2h |  |  |  |
| 317 | 1.2.2.2.1.4 | Reunion de avance semanal |  | 1h | 2011-10-14 15:00 A | 2011-10-14 16:00 A | 316 | 100% | 2011-10-01 13:30 | 2011-10-01 14:30 | 1h |  |  |  |

| ID | WBS | Task | Type | Duration | Start | Finish | Predecessors | Complete | Baseline start | Baseline finish | Baseline duration | Resources | Work | Actual work |
| --- | --- | --- | --- | --- | --- | --- | --- | --- | --- | --- | --- | --- | --- | --- |
| 318 | 1.2.2.2.2 | **Entregables** |  | 1d | 2011-10-14 16:00 A | 2011-10-17 11:00 A |  | 100% | 2011-10-01 15:30 | 2011-10-02 15:30 | 0d |  |  |  |
| 319 | 1.2.2.2.2.1 | GP-LR: Gestion de Riesgos | milestone | 0d | 2011-10-14 16:00 A | 2011-10-14 16:00 A | 313 | 100% | 2011-10-01 15:30 | 2011-10-02 11:30 | 1d |  |  |  |
| 320 | 1.2.2.2.2.2 | GP-MI: Minuta de reunion | milestone | 0d | 2011-10-17 11:00 A | 2011-10-17 11:00 A | 319 | 100% | 2011-10-01 15:30 | 2011-10-02 15:30 | 2d |  |  |  |
| 321 | 1.2.2.3 | **Aseguramiento de Calidad** |  | 3d | 2011-10-18 15:00 A | 2011-10-20 10:00 A |  | 100% | 2011-10-03 08:00 | 2011-10-03 10:00 | 0.5d | LP | 2h | 2h |
| 322 | 1.2.2.3.1 | **Tareas** |  | 2d | 2011-10-18 15:00 A | 2011-10-19 15:00 A |  | 100% | 2011-10-03 08:00 | 2011-10-03 10:00 | 2h |  |  |  |
| 323 | 1.2.2.3.1.1 | Verificacion de las Tareas según Lista de Control |  | 4h | 2011-10-18 15:00 A | 2011-10-19 10:00 A | 305 | 100% |  |  |  |  |  |  |
| 324 | 1.2.2.3.1.2 | Revision de los documentos realizados |  | 4h | 2011-10-19 10:00 A | 2011-10-19 15:00 A | 323 | 100% |  |  |  |  |  |  |
| 325 | 1.2.2.3.2 | **Entregables** |  | 1d | 2011-10-19 15:00 A | 2011-10-20 10:00 A |  | 100% | 2011-10-03 08:00 | 2011-10-03 10:00 | 2h |  |  |  |
| 326 | 1.2.2.3.2.1 | QA-LC Lista de Control | milestone | 0h | 2011-10-19 15:00 A | 2011-10-19 15:00 A | 324 | 100% |  |  |  |  |  |  |
| 327 | 1.2.2.3.2.2 | Revision en Todos los Documentos Entregables de la Iteracion | milestone | 0h | 2011-10-20 10:00 A | 2011-10-20 10:00 A | 326 | 100% |  |  |  |  |  |  |
| 328 | 1.2.2.4 | **Gestion del Cambio** |  | 4.5d | 2011-10-18 15:00 A | 2011-10-20 17:00 A |  | 100% | 2011-10-02 15:30 | 2011-10-06 21:30 | 8d |  |  |  |
| 329 | 1.2.2.4.1 | **Tareas** |  | 2d | 2011-10-18 15:00 A | 2011-10-19 15:00 A |  | 100% | 2011-10-02 15:30 | 2011-10-04 19:30 | 4d |  |  |  |
| 330 | 1.2.2.4.1.1 | Revision de las nuevas versiones de los artefactos |  | 4h | 2011-10-18 15:00 A | 2011-10-19 10:00 A | 305 | 100% | 2011-10-02 15:30 | 2011-10-04 19:30 | 4h |  |  |  |
| 331 | 1.2.2.4.1.2 | Aprobacion de las nuevas versiones de los artefactos |  | 4h | 2011-10-19 10:00 A | 2011-10-19 15:00 A | 330 | 100% | 2011-10-02 15:30 | 2011-10-04 19:30 | 4h |  |  |  |
| 332 | 1.2.2.4.2 | **Entregable** |  | 2.5d | 2011-10-19 15:00 A | 2011-10-20 17:00 A |  | 100% | 2011-10-04 19:30 | 2011-10-06 21:30 | 4d |  |  |  |
| 333 | 1.2.2.4.2.1 | Seccion de Aprobacion y Revision en los Artefactos Involucrados |  | 10h | 2011-10-19 15:00 A | 2011-10-20 17:00 A | 331 | 100% | 2011-10-04 19:30 | 2011-10-06 21:30 | 4h |  |  |  |
| 334 | 1.2.3 | **Iteracion 9** |  | 10d | 2011-10-20 19:00 A | 2011-10-27 21:10 A | 290 | 100% | 2011-10-06 21:30 | 2011-10-13 22:00 | 10d? |  | 67.67h | 67.67h |
| 335 | 1.2.3.1 | **Analisis y Diseño** |  | 10d | 2011-10-20 19:00 A | 2011-10-27 21:10 A |  | 100% | 2011-10-06 21:30 | 2011-10-08 14:40 | 2d? |  | 24h | 24h |
| 336 | 1.2.3.1.1 | **Tareas** |  | 2d | 2011-10-20 19:00 A | 2011-10-23 15:10 A |  | 100% | 2011-10-06 21:30 | 2011-10-07 21:30 | 2d? |  | 24h | 24h |
| 337 | 1.2.3.1.1.1 | Diagramar los casos de uso de sistema identificados con los actore identificados |  | 2h | 2011-10-20 19:00 A | 2011-10-20 21:00 A |  | 100% | 2011-10-06 21:30 | 2011-10-07 21:30 | 4h | AN | 2h | 2h |
| 338 | 1.2.3.1.1.2 | Identificar las interacciones entre actores y el sistema |  | 1h | 2011-10-20 19:00 A | 2011-10-20 20:00 A |  | 100% | 2011-10-06 21:30 | 2011-10-07 21:30 | 4h | AN | 1h | 1h |
| 339 | 1.2.3.1.1.3 | Generar una lista de casos de uso, y realizar una breve descripción de los mismos |  | 2h | 2011-10-20 19:00 A | 2011-10-20 21:00 A |  | 100% | 2011-10-06 21:30 | 2011-10-07 21:30 | 4h | AN | 2h | 2h |
| 340 | 1.2.3.1.1.4 | Detallar las interacciones entre los actores y el sistema |  | 2h | 2011-10-20 21:00 A | 2011-10-20 23:00 A | 339 | 100% | 2011-10-06 21:30 | 2011-10-07 21:30 | 4h | AN | 2h | 2h |
| 341 | 1.2.3.1.1.5 | Evaluar las alternativas de acción en los casos de uso |  | 2h | 2011-10-21 19:00 A | 2011-10-21 21:00 A | 340 | 100% | 2011-10-06 21:30 | 2011-10-07 21:30 | 4h | AN | 2h | 2h |
| 342 | 1.2.3.1.1.6 | Identificar los objetos necesarios para llevar a cabo el curso normal del caso de uso |  | 1h | 2011-10-21 21:00 A | 2011-10-21 22:00 A | 341 | 100% | 2011-10-06 21:30 | 2011-10-07 21:30 | 4h | AN | 1h | 1h |
| 343 | 1.2.3.1.1.7 | Diagramar la interacción a través del tiempo entre los objetos que intervienen en el caso de uso |  | 2h | 2011-10-21 22:00 A | 2011-10-22 11:10 A | 342 | 100% | 2011-10-06 21:30 | 2011-10-07 21:30 | 4h | AN | 2h | 2h |
| 344 | 1.2.3.1.1.8 | Definir las capas que formaran parte del sistema |  | 2h | 2011-10-22 11:10 A | 2011-10-22 13:10 A | 343 | 100% | 2011-10-06 21:30 | 2011-10-07 21:30 | 4h | AN | 2h | 2h |
| 345 | 1.2.3.1.1.9 | Examinar la disponibilidad de componentes fisicos |  | 2h | 2011-10-22 13:10 A | 2011-10-22 15:10 A | 344 | 100% | 2011-10-06 21:30 | 2011-10-07 21:30 | 4h | AN | 2h | 2h |
| 346 | 1.2.3.1.1.10 | Ilustrar la arquitectura logica utilizando los diagrama de paquetes |  | 2h | 2011-10-22 15:10 A | 2011-10-22 17:10 A | 345 | 100% | 2011-10-06 21:30 | 2011-10-07 21:30 | 4h | AN | 2h | 2h |
| 347 | 1.2.3.1.1.11 | Especificar la interacción entre los componentes |  | 2h | 2011-10-22 17:10 A | 2011-10-23 11:10 A | 346 | 100% | 2011-10-06 21:30 | 2011-10-07 21:30 | 4h | AN | 2h | 2h |
| 348 | 1.2.3.1.1.12 | Aplicar patrones de diseño |  | 2h | 2011-10-23 11:10 A | 2011-10-23 13:10 A | 347 | 100% | 2011-10-06 21:30 | 2011-10-07 21:30 | 4h | AN | 2h | 2h |
| 349 | 1.2.3.1.1.13 | Identificar la trazabilidad entre requerimiento – caso de uso de sistema - alcance |  | 2h | 2011-10-23 13:10 A | 2011-10-23 15:10 A | 348 | 100% | 2011-10-06 21:30 | 2011-10-07 21:30 | 4h? | AN | 2h | 2h |

| ID | WBS | Task | Type | Duration | Start | Finish | Predecessors | Complete | Baseline start | Baseline finish | Baseline duration | Resources | Work | Actual work |
| --- | --- | --- | --- | --- | --- | --- | --- | --- | --- | --- | --- | --- | --- | --- |
| 350 | 1.2.3.1.2 | **Entregables** |  | 8d | 2011-10-23 15:10 A | 2011-10-27 21:10 A |  | 100% | 2011-10-07 21:30 | 2011-10-08 14:40 | 0d |  |  |  |
| 351 | 1.2.3.1.2.1 | AD-TG-Documento de casos de uso del sistema - Trazo Grueso (Preliminar) | milestone | 0h | 2011-10-23 15:10 A | 2011-10-23 15:10 A | 336 | 100% | 2011-10-07 21:30 | 2011-10-08 14:40 | 6h | AN |  |  |
| 352 | 1.2.3.1.2.2 | AD-TF-Documento de casos de uso del sistema - Trazo Fino (Preliminar) | milestone | 0h | 2011-10-23 17:10 A | 2011-10-23 17:10 A | 351 | 100% | 2011-10-07 21:30 | 2011-10-08 12:40 | 4h | AN |  |  |
| 353 | 1.2.3.1.2.3 | AD-DC-Diagrama del casos de uso del sistema (Preliminar) | milestone | 0h | 2011-10-25 19:10 A | 2011-10-25 19:10 A | 352 | 100% | 2011-10-07 21:30 | 2011-10-08 12:40 | 4h | AN |  |  |
| 354 | 1.2.3.1.2.4 | AD-DS-Diagramas de Secuencia (Preliminar) | milestone | 0h | 2011-10-27 19:10 A | 2011-10-27 19:10 A | 353 | 100% | 2011-10-07 21:30 | 2011-10-08 12:40 | 4h | AN |  |  |
| 355 | 1.2.3.1.2.5 | AD-TR-Trazabilidad (Preliminar) | milestone | 0h | 2011-10-27 21:10 A | 2011-10-27 21:10 A | 354 | 100% | 2011-10-07 21:30 | 2011-10-08 12:40 | 4h | AN |  |  |
| 356 | 1.2.3.2 | **Administracion de Poryecto** |  | 5.5d | 2011-10-21 08:00 A | 2011-10-25 15:00 A |  | 100% | 2011-10-08 14:40 | 2011-10-12 19:40 | 6d | AN | 40.67h | 40.67h |
| 357 | 1.2.3.2.1 | **Tareas** |  | 2.5d | 2011-10-21 08:00 A | 2011-10-24 10:00 A |  | 100% | 2011-10-08 14:40 | 2011-10-08 16:40 | 0d | LP | 19.83h | 19.83h |
| 358 | 1.2.3.2.1.1 | Identificar Riesgos del Proyecto formalmente |  | 4h | 2011-10-21 08:00 A | 2011-10-21 12:00 A |  | 100% | 2011-10-08 14:40 | 2011-10-08 16:40 | 2h |  |  |  |
| 359 | 1.2.3.2.1.2 | Priorizacion y cuantificacion de riesgos |  | 2h | 2011-10-21 13:00 A | 2011-10-21 15:00 A | 358 | 100% | 2011-10-08 14:40 | 2011-10-08 16:40 | 2h |  |  |  |
| 360 | 1.2.3.2.1.3 | Definir plan de contingencia y mitigacion |  | 2h | 2011-10-21 15:00 A | 2011-10-21 17:00 A | 359 | 100% | 2011-10-08 14:40 | 2011-10-08 16:40 | 2h |  |  |  |
| 361 | 1.2.3.2.1.4 | Reunion de avance semanal |  | 2h | 2011-10-24 08:00 A | 2011-10-24 10:00 A | 360 | 100% | 2011-10-08 14:40 | 2011-10-08 16:40 | 2h |  |  |  |
| 362 | 1.2.3.2.2 | **Entregables** |  | 3d | 2011-10-24 10:00 A | 2011-10-25 15:00 A |  | 100% | 2011-10-08 16:40 | 2011-10-12 19:40 | 6d |  |  |  |
| 363 | 1.2.3.2.2.1 | GP-LR: Gestion de Riesgos | milestone | 0d | 2011-10-24 10:00 A | 2011-10-24 10:00 A | 357 | 100% | 2011-10-08 16:40 | 2011-10-12 19:40 | 3d |  |  |  |
| 364 | 1.2.3.2.2.2 | GP-MI: Minuta de reunion | milestone | 0d | 2011-10-25 15:00 A | 2011-10-25 15:00 A | 363 | 100% | 2011-10-08 16:40 | 2011-10-09 16:40 | 2d |  |  |  |
| 365 | 1.2.3.3 | **Aseguramiento de Calidad** |  | 4d | 2011-10-24 10:00 A | 2011-10-26 10:00 A |  | 100% | 2011-10-13 08:00 | 2011-10-13 10:00 | 0.5d | LP | 2h | 2h |
| 366 | 1.2.3.3.1 | **Tareas** |  | 3d | 2011-10-24 10:00 A | 2011-10-25 15:00 A |  | 100% | 2011-10-13 08:00 | 2011-10-13 10:00 | 2h |  |  |  |
| 367 | 1.2.3.3.1.1 | Revision de las Tareas según Lista de Control |  | 4h | 2011-10-24 10:00 A | 2011-10-24 15:00 A | 357 | 100% |  |  |  |  |  |  |
| 368 | 1.2.3.3.1.2 | Revision de los documentos Realizados |  | 8h | 2011-10-24 15:00 A | 2011-10-25 15:00 A | 367 | 100% |  |  |  |  |  |  |
| 369 | 1.2.3.3.2 | **Entregables** |  | 1d | 2011-10-25 15:00 A | 2011-10-26 10:00 A |  | 100% | 2011-10-13 08:00 | 2011-10-13 10:00 | 2h |  |  |  |
| 370 | 1.2.3.3.2.1 | QA-LC Lista de Control | milestone | 0h | 2011-10-25 15:00 A | 2011-10-25 15:00 A | 368 | 100% |  |  |  |  |  |  |
| 371 | 1.2.3.3.2.2 | Revision de los documentos realizados | milestone | 0h | 2011-10-26 10:00 A | 2011-10-26 10:00 A | 370 | 100% |  |  |  |  |  |  |
| 372 | 1.2.3.4 | **Gestion del Cambio** |  | 1d | 2011-10-26 15:00 A | 2011-10-27 10:00 A |  | 100% | 2011-10-13 19:00 | 2011-10-13 22:00 | 0d | LP | 1h | 1h |
| 373 | 1.2.3.4.1 | **Tareas** |  | 1d | 2011-10-26 15:00 A | 2011-10-27 10:00 A |  | 100% | 2011-10-13 19:00 | 2011-10-13 21:00 | 0d |  |  |  |
| 374 | 1.2.3.4.1.1 | Revision de las nuevas versiones de los artefactos |  | 2h | 2011-10-26 15:00 A | 2011-10-26 17:00 A | 365 | 100% | 2011-10-13 19:00 | 2011-10-13 21:00 | 2h |  |  |  |
| 375 | 1.2.3.4.1.2 | Aprobacion de las nuevas versiones de los artefactos |  | 2h | 2011-10-27 08:00 A | 2011-10-27 10:00 A | 374 | 100% | 2011-10-13 19:00 | 2011-10-13 21:00 | 2h |  |  |  |

| ID | WBS | Task | Type | Duration | Start | Finish | Predecessors | Complete | Baseline start | Baseline finish | Baseline duration | Resources | Work | Actual work |
| --- | --- | --- | --- | --- | --- | --- | --- | --- | --- | --- | --- | --- | --- | --- |
| 376 | 1.2.3.4.2 | **Entregable** |  | 0d | 2011-10-27 10:00 A | 2011-10-27 10:00 A |  | 100% | 2011-10-13 21:00 | 2011-10-13 22:00 | 0d |  |  |  |
| 377 | 1.2.3.4.2.1 | Seccion de Aprobacion y Revision en los Artefactos Involucrados | milestone | 0h | 2011-10-27 10:00 A | 2011-10-27 10:00 A | 375 | 100% | 2011-10-13 21:00 | 2011-10-13 22:00 | 1h |  |  |  |
| 378 | 1.2.4 | **Iteracion 10** |  | 10d | 2011-10-27 22:10 A | 2011-11-03 19:00 A | 334 | 100% | 2011-10-13 22:00 | 2011-10-20 23:00 | 10d |  | 32h | 32h |
| 379 | 1.2.4.1 | **Analisis y Diseño** |  | 2d | 2011-10-27 22:10 A | 2011-10-28 20:10 A |  | 100% | 2011-10-13 22:00 | 2011-10-15 13:10 | 2d |  | 26h | 26h |
| 380 | 1.2.4.1.1 | **Tareas** |  | 2d | 2011-10-27 22:10 A | 2011-10-28 20:10 A |  | 100% | 2011-10-13 22:00 | 2011-10-14 20:00 | 2d |  | 26h | 26h |
| 381 | 1.2.4.1.1.1 | Diagramar los casos de uso de sistema identificados con los actore identificados |  | 2h | 2011-10-27 22:10 A | 2011-10-28 20:10 A | 334 | 100% | 2011-10-13 22:00 | 2011-10-14 20:00 | 2h | AN | 2h | 2h |
| 382 | 1.2.4.1.1.2 | Identificar las interacciones entre actores y el sistema |  | 2h | 2011-10-27 22:10 A | 2011-10-28 20:10 A | 334 | 100% | 2011-10-13 22:00 | 2011-10-14 20:00 | 2h | AN | 2h | 2h |
| 383 | 1.2.4.1.1.3 | Generar una lista de casos de uso, y realizar una breve descripción de los mismos |  | 2h | 2011-10-27 22:10 A | 2011-10-28 20:10 A | 334 | 100% | 2011-10-13 22:00 | 2011-10-14 20:00 | 2h | AN | 2h | 2h |
| 384 | 1.2.4.1.1.4 | Detallar las interacciones entre los actores y el sistema |  | 2h | 2011-10-27 22:10 A | 2011-10-28 20:10 A | 334 | 100% | 2011-10-13 22:00 | 2011-10-14 20:00 | 2h | AN | 2h | 2h |
| 385 | 1.2.4.1.1.5 | Evaluar las alternativas de acción en los casos de uso |  | 2h | 2011-10-27 22:10 A | 2011-10-28 20:10 A | 334 | 100% | 2011-10-13 22:00 | 2011-10-14 20:00 | 2h | AN | 2h | 2h |
| 386 | 1.2.4.1.1.6 | Identificar los objetos necesarios para llevar a cabo el curso normal del caso de uso |  | 2h | 2011-10-27 22:10 A | 2011-10-28 20:10 A | 334 | 100% | 2011-10-13 22:00 | 2011-10-14 20:00 | 2h | AN | 2h | 2h |
| 387 | 1.2.4.1.1.7 | Diagramar la interacción a través del tiempo entre los objetos que intervienen en el caso de uso |  | 2h | 2011-10-27 22:10 A | 2011-10-28 20:10 A | 334 | 100% | 2011-10-13 22:00 | 2011-10-14 20:00 | 2h | AN | 2h | 2h |
| 388 | 1.2.4.1.1.8 | Definir las capas que formaran parte del sistema |  | 2h | 2011-10-27 22:10 A | 2011-10-28 20:10 A | 334 | 100% | 2011-10-13 22:00 | 2011-10-14 20:00 | 2h | AN | 2h | 2h |
| 389 | 1.2.4.1.1.9 | Examinar la disponibilidad de componentes fisicos |  | 2h | 2011-10-27 22:10 A | 2011-10-28 20:10 A | 334 | 100% | 2011-10-13 22:00 | 2011-10-14 20:00 | 2h | AN | 2h | 2h |
| 390 | 1.2.4.1.1.10 | Ilustrar la arquitectura logica utilizando los diagrama de paquetes |  | 2h | 2011-10-27 22:10 A | 2011-10-28 20:10 A | 334 | 100% | 2011-10-13 22:00 | 2011-10-14 20:00 | 2h | AN | 2h | 2h |
| 391 | 1.2.4.1.1.11 | Especificar la interacción entre los componentes |  | 2h | 2011-10-27 22:10 A | 2011-10-28 20:10 A | 334 | 100% | 2011-10-13 22:00 | 2011-10-14 20:00 | 2h | AN | 2h | 2h |
| 392 | 1.2.4.1.1.12 | Aplicar patrones de diseño |  | 2h | 2011-10-27 22:10 A | 2011-10-28 20:10 A | 334 | 100% | 2011-10-13 22:00 | 2011-10-14 20:00 | 2h | AN | 2h | 2h |
| 393 | 1.2.4.1.1.13 | Identificar la trazabilidad entre requerimiento – caso de uso de sistema - alcance |  | 2h | 2011-10-27 22:10 A | 2011-10-28 20:10 A | 334 | 100% | 2011-10-13 22:00 | 2011-10-14 20:00 | 2h | AN | 2h | 2h |
| 394 | 1.2.4.1.2 | **Entregables** |  | 0d | 2011-10-28 20:10 A | 2011-10-28 20:10 A |  | 100% | 2011-10-14 20:00 | 2011-10-15 13:10 | 0d |  |  |  |
| 395 | 1.2.4.1.2.1 | AD-TG-Documento de casos de uso del sistema - Trazo Grueso (Preliminar) | milestone | 0h | 2011-10-28 20:10 A | 2011-10-28 20:10 A | 382, 383 | 100% | 2011-10-14 20:00 | 2011-10-15 13:10 | 6h | AN |  |  |
| 396 | 1.2.4.1.2.2 | AD-TF-Documento de casos de uso del sistema - Trazo Fino (Preliminar) | milestone | 0h | 2011-10-28 20:10 A | 2011-10-28 20:10 A | 384, 385 | 100% | 2011-10-14 20:00 | 2011-10-15 13:10 | 6h | AN |  |  |
| 397 | 1.2.4.1.2.3 | AD-DC-Diagrama del casos de uso del sistema (Preliminar) | milestone | 0h | 2011-10-28 20:10 A | 2011-10-28 20:10 A | 381 | 100% | 2011-10-14 20:00 | 2011-10-15 13:10 | 6h | AN |  |  |
| 398 | 1.2.4.1.2.4 | AD-DS-Diagramas de Secuencia (Preliminar) | milestone | 0h | 2011-10-28 20:10 A | 2011-10-28 20:10 A | 386, 387 | 100% | 2011-10-14 20:00 | 2011-10-15 13:10 | 6h | AN |  |  |
| 399 | 1.2.4.1.2.5 | AD-DS-Diagrama de Clases (Preliminar) | milestone | 0h | 2011-10-28 20:10 A | 2011-10-28 20:10 A | 388, 389, 390, 391, 392 | 100% | 2011-10-14 20:00 | 2011-10-15 13:10 | 6h | AN |  |  |
| 400 | 1.2.4.1.2.6 | AD-TR-Trazabilidad (Preliminar) | milestone | 0h | 2011-10-28 20:10 A | 2011-10-28 20:10 A | 393 | 100% | 2011-10-14 20:00 | 2011-10-15 11:10 | 4h | AN |  |  |

| ID | WBS | Task | Type | Duration | Start | Finish | Predecessors | Complete | Baseline start | Baseline finish | Baseline duration | Resources | Work | Actual work |
| --- | --- | --- | --- | --- | --- | --- | --- | --- | --- | --- | --- | --- | --- | --- |
| 401 | 1.2.4.2 | **Administracion de Poryecto** |  | 0d | 2011-10-29 11:20 A | 2011-10-29 14:20 A |  | 100% | 2011-10-15 11:10 | 2011-10-18 19:10 | 4d |  | 4h | 4h |
| 402 | 1.2.4.2.1 | **Tareas** |  | 0d | 2011-10-29 13:20 A | 2011-10-29 14:20 A |  | 100% | 2011-10-15 13:10 | 2011-10-15 14:10 | 0d |  | 4h | 4h |
| 403 | 1.2.4.2.1.1 | Identificar Riesgos del Proyecto formalmente |  | 1h | 2011-10-29 13:20 A | 2011-10-29 14:20 A | 394 | 100% | 2011-10-15 13:10 | 2011-10-15 14:10 | 1h | LP | 1h | 1h |
| 404 | 1.2.4.2.1.2 | Priorizacion y cuantificacion de riesgos |  | 1h | 2011-10-29 13:20 A | 2011-10-29 14:20 A | 394 | 100% | 2011-10-15 13:10 | 2011-10-15 14:10 | 1h | LP | 1h | 1h |
| 405 | 1.2.4.2.1.3 | Definir plan de contingencia y mitigacion |  | 1h | 2011-10-29 13:20 A | 2011-10-29 14:20 A | 394 | 100% | 2011-10-15 13:10 | 2011-10-15 14:10 | 1h | LP | 1h | 1h |
| 406 | 1.2.4.2.1.4 | Reunion de avance semanal |  | 1h | 2011-10-29 13:20 A | 2011-10-29 14:20 A | 394 | 100% | 2011-10-15 13:10 | 2011-10-15 14:10 | 1h | LP | 1h | 1h |
| 407 | 1.2.4.2.2 | **Entregables** |  | 0d | 2011-10-29 11:20 A | 2011-10-29 11:20 A |  | 100% | 2011-10-15 11:10 | 2011-10-18 19:10 | 4d |  |  |  |
| 408 | 1.2.4.2.2.1 | GP-LR: Gestion de Riesgos | milestone | 0d | 2011-10-29 11:20 A | 2011-10-29 11:20 A | 400 | 100% | 2011-10-15 11:10 | 2011-10-18 19:10 | 4d | LP |  |  |
| 409 | 1.2.4.2.2.2 | GP-MI: Minuta de reunion | milestone | 0d | 2011-10-29 11:20 A | 2011-10-29 11:20 A | 400 | 100% | 2011-10-15 11:10 | 2011-10-18 19:10 | 4d | LP |  |  |
| 410 | 1.2.4.3 | **Aseguramiento de Calidad** |  | 1d | 2011-11-02 08:00 A | 2011-11-02 12:00 A |  | 100% | 2011-10-19 08:00 | 2011-10-19 10:00 | 0.5d |  |  |  |
| 411 | 1.2.4.3.1 | **Tareas** |  | 1d | 2011-11-02 08:00 A | 2011-11-02 12:00 A | 407 | 100% | 2011-10-19 08:00 | 2011-10-19 10:00 | 2h |  |  |  |
| 412 | 1.2.4.3.1.1 | Revision de las Tareas según Lista de Control |  | 4h | 2011-11-02 08:00 A | 2011-11-02 12:00 A |  | 100% |  |  |  |  |  |  |
| 413 | 1.2.4.3.1.2 | Revision de los documentos Realizados |  | 4h | 2011-11-02 08:00 A | 2011-11-02 12:00 A |  | 100% |  |  |  |  |  |  |
| 414 | 1.2.4.3.2 | **Entregables** |  | 0d | 2011-11-02 08:00 A | 2011-11-02 08:00 A | 407 | 100% | 2011-10-19 08:00 | 2011-10-19 10:00 | 2h |  |  |  |
| 415 | 1.2.4.3.2.1 | QA-LC Lista de Control | milestone | 0h | 2011-11-02 08:00 A | 2011-11-02 08:00 A |  | 100% |  |  |  |  |  |  |
| 416 | 1.2.4.3.2.2 | Revision de los documentos realizados | milestone | 0h | 2011-11-02 08:00 A | 2011-11-02 08:00 A |  | 100% |  |  |  |  |  |  |
| 417 | 1.2.4.4 | **Gestion del Cambio** |  | 2d | 2011-11-02 19:00 A | 2011-11-03 19:00 A |  | 100% | 2011-10-19 19:00 | 2011-10-20 23:00 | 2d |  | 2h | 2h |
| 418 | 1.2.4.4.1 | **Tareas** |  | 0d | 2011-11-02 19:00 A | 2011-11-02 20:00 A |  | 100% | 2011-10-19 19:00 | 2011-10-19 20:00 | 0d |  | 2h | 2h |
| 419 | 1.2.4.4.1.1 | Revision de las nuevas versiones de los artefactos |  | 1h | 2011-11-02 19:00 A | 2011-11-02 20:00 A | 410 | 100% | 2011-10-19 19:00 | 2011-10-19 20:00 | 1h | AN | 1h | 1h |
| 420 | 1.2.4.4.1.2 | Aprobacion de las nuevas versiones de los artefactos |  | 1h | 2011-11-02 19:00 A | 2011-11-02 20:00 A | 410 | 100% | 2011-10-19 19:00 | 2011-10-19 20:00 | 1h | AN | 1h | 1h |
| 421 | 1.2.4.4.2 | **Entregable** |  | 0d | 2011-11-03 19:00 A | 2011-11-03 19:00 A |  | 100% | 2011-10-20 19:00 | 2011-10-20 23:00 | 0d |  |  |  |
| 422 | 1.2.4.4.2.1 | Seccion de Aprobacion y Revision en los Artefactos Involucrados | milestone | 0h | 2011-11-03 19:00 A | 2011-11-03 19:00 A | 418 | 100% | 2011-10-20 19:00 | 2011-10-20 23:00 | 4h | AN |  |  |
| 423 | 1.2.5 | **Iteracion 11** |  | 10d | 2011-11-03 23:00 A | 2011-11-10 20:10 A | 378 | 100% | 2011-10-21 08:00 | 2011-10-27 21:00 | 10d |  | 24h | 24h |
| 424 | 1.2.5.1 | **Analisis y Diseño** |  | 7d | 2011-11-03 23:00 A | 2011-11-09 12:00 A |  | 100% | 2011-10-21 08:00 | 2011-10-24 10:00 | 2.5d |  |  |  |
| 425 | 1.2.5.1.1 | **Tareas** |  | 7d | 2011-11-04 08:00 A | 2011-11-09 12:00 A |  | 100% | 2011-10-21 08:00 | 2011-10-21 23:00 | 2d |  |  |  |
| 426 | 1.2.5.1.1.1 | Diagramar los casos de uso de sistema identificados con los actore identificados |  | 4h | 2011-11-04 08:00 A | 2011-11-04 12:00 A |  | 100% | 2011-10-21 19:00 | 2011-10-21 23:00 | 4h |  |  |  |
| 427 | 1.2.5.1.1.2 | Identificar las interacciones entre actores y el sistema |  | 4h | 2011-11-04 13:00 A | 2011-11-04 17:00 A | 426 | 100% | 2011-10-21 19:00 | 2011-10-21 23:00 | 4h |  |  |  |
| 428 | 1.2.5.1.1.3 | Generar una lista de casos de uso, y realizar una breve descripción de los mismos |  | 4h | 2011-11-07 08:00 A | 2011-11-07 12:00 A | 427 | 100% | 2011-10-21 19:00 | 2011-10-21 23:00 | 4h |  |  |  |
| 429 | 1.2.5.1.1.4 | Detallar las interacciones entre los actores y el sistema |  | 3h | 2011-11-07 13:00 A | 2011-11-07 16:00 A | 428 | 100% | 2011-10-21 19:00 | 2011-10-21 20:00 | 1h |  |  |  |
| 430 | 1.2.5.1.1.5 | Evaluar las alternativas de acción en los casos de uso |  | 4h | 2011-11-07 14:00 A | 2011-11-08 10:00 A | 429 | 100% | 2011-10-21 08:00 | 2011-10-21 09:00 | 1h |  |  |  |
| 431 | 1.2.5.1.1.6 | Identificar los objetos necesarios para llevar a cabo el curso normal del caso de uso |  | 1h | 2011-11-07 15:00 A | 2011-11-07 16:00 A | 430 | 100% | 2011-10-21 08:00 | 2011-10-21 09:00 | 1h |  |  |  |
| 432 | 1.2.5.1.1.7 | Diagramar la interacción a través del tiempo entre los objetos que intervienen en el caso de uso |  | 2h | 2011-11-07 16:00 A | 2011-11-08 09:00 A | 431 | 100% | 2011-10-21 08:00 | 2011-10-21 10:00 | 2h |  |  |  |
| 433 | 1.2.5.1.1.8 | Definir las capas que formaran parte del sistema |  | 2h | 2011-11-08 09:00 A | 2011-11-08 11:00 A | 432 | 100% | 2011-10-21 08:00 | 2011-10-21 10:00 | 2h |  |  |  |
| 434 | 1.2.5.1.1.9 | Examinar la disponibilidad de componentes fisicos |  | 4h | 2011-11-08 11:00 A | 2011-11-08 16:00 A | 433 | 100% | 2011-10-21 08:00 | 2011-10-21 10:00 | 2h |  |  |  |
| 435 | 1.2.5.1.1.10 | Ilustrar la arquitectura logica utilizando los diagrama de paquetes |  | 4h | 2011-11-08 14:00 A | 2011-11-09 09:00 A | 434 | 100% | 2011-10-21 08:00 | 2011-10-21 10:00 | 2h |  |  |  |
| 436 | 1.2.5.1.1.11 | Especificar la interacción entre los componentes |  | 2h | 2011-11-08 16:00 A | 2011-11-09 09:00 A | 435 | 100% | 2011-10-21 08:00 | 2011-10-21 10:00 | 2h |  |  |  |
| 437 | 1.2.5.1.1.12 | Aplicar patrones de diseño |  | 2h | 2011-11-09 09:00 A | 2011-11-09 11:00 A | 436 | 100% | 2011-10-21 08:00 | 2011-10-21 10:00 | 2h |  |  |  |
| 438 | 1.2.5.1.1.13 | Identificar la trazabilidad entre requerimiento – caso de uso de sistema - alcance |  | 1h | 2011-11-09 11:00 A | 2011-11-09 12:00 A | 437 | 100% | 2011-10-21 08:00 | 2011-10-21 09:00 | 1h |  |  |  |

| ID | WBS | Task | Type | Duration | Start | Finish | Predecessors | Complete | Baseline start | Baseline finish | Baseline duration |
| --- | --- | --- | --- | --- | --- | --- | --- | --- | --- | --- | --- |
| 439 | 1.2.5.1.2 | **Entregables** |  | 7d | 2011-11-03 23:00 A | 2011-11-09 12:00 A |  | 100% | 2011-10-21 09:00 | 2011-10-24 10:00 | 2.25d |
| 440 | 1.2.5.1.2.1 | **GP-AS-18. Gestión Reclamos con Proveedores.** |  | 0d | 2011-11-04 08:00 A | 2011-11-04 08:00 A |  | 100% |  |  |  |
| 441 | 1.2.5.1.2.1.1 | AS18.01. Registrando Reclamo | milestone | 0h | 2011-11-04 08:00 A | 2011-11-04 08:00 A | 425 | 100% |  |  |  |
| 442 | 1.2.5.1.2.1.2 | AS18.02. Consultando Reclamo | milestone | 0h | 2011-11-04 08:00 A | 2011-11-04 08:00 A | 425 | 100% |  |  |  |
| 443 | 1.2.5.1.2.1.3 | AS18.03. Editando reclamo | milestone | 0h | 2011-11-04 08:00 A | 2011-11-04 08:00 A | 425 | 100% |  |  |  |
| 444 | 1.2.5.1.2.2 | **GP-AS-17. Calidad de Proveedores** |  | 0d | 2011-11-04 08:00 A | 2011-11-04 08:00 A |  | 100% |  |  |  |
| 445 | 1.2.5.1.2.2.1 | AS17.01.Evaluando Calidad de Proveedores | milestone | 0h | 2011-11-04 08:00 A | 2011-11-04 08:00 A | 425 | 100% |  |  |  |
| 446 | 1.2.5.1.2.3 | **GP-AS-16. Cumplimiento de Objetivo de Fza de Vta** |  | 0d | 2011-11-04 08:00 A | 2011-11-04 08:00 A |  | 100% |  |  |  |
| 447 | 1.2.5.1.2.3.1 | AS16.01. Visualizando resultado de fuerza de venta | milestone | 0h | 2011-11-04 08:00 A | 2011-11-04 08:00 A | 425 | 100% |  |  |  |
| 448 | 1.2.5.1.2.4 | **GP-AS-15.Objetivos de Facturación** |  | 0d | 2011-11-03 23:00 A | 2011-11-03 23:00 A |  | 100% |  |  |  |
| 449 | 1.2.5.1.2.4.1 | AS15.01.Generando informe de objetivos de facturación | milestone | 0h | 2011-11-03 23:00 A | 2011-11-03 23:00 A | 425 | 100% |  |  |  |
| 450 | 1.2.5.1.2.4.2 | AS15.02.Ingresando objetivos de facturación | milestone | 0h | 2011-11-03 23:00 A | 2011-11-03 23:00 A | 425 | 100% |  |  |  |
| 451 | 1.2.5.1.2.5 | **GP-AS-14.Fuerza de venta por localidad** |  | 0d | 2011-11-03 23:00 A | 2011-11-03 23:00 A |  | 100% |  |  |  |
| 452 | 1.2.5.1.2.5.1 | AS14.01.Generando mapa de clientes por localidad | milestone | 0h | 2011-11-03 23:00 A | 2011-11-03 23:00 A | 425 | 100% |  |  |  |
| 453 | 1.2.5.1.2.5.2 | AS14.02. Asignando Vendedores a localidades | milestone | 0h | 2011-11-03 23:00 A | 2011-11-03 23:00 A | 425 | 100% |  |  |  |
| 454 | 1.2.5.1.2.6 | **GP-AS-13.Simulador de Crecimiento** |  | 0d | 2011-11-09 12:00 A | 2011-11-09 12:00 A |  | 100% |  |  |  |
| 455 | 1.2.5.1.2.6.1 | AS13.01. Mostrando Simulación de Crecimiento | milestone | 0h | 2011-11-09 12:00 A | 2011-11-09 12:00 A | 425 | 100% |  |  |  |
| 456 | 1.2.5.1.2.7 | **GP-AS-12.Retorno de inversión de marketing** |  | 0d | 2011-11-09 12:00 A | 2011-11-09 12:00 A |  | 100% |  |  |  |
| 457 | 1.2.5.1.2.7.1 | AS12.01. Ingresando inversión de Marketing por Cliente | milestone | 0h | 2011-11-09 12:00 A | 2011-11-09 12:00 A | 425 | 100% | 2011-10-24 08:00 | 2011-10-24 10:00 | 2h |
| 458 | 1.2.5.1.2.7.2 | AS12.02. Mostrando recupero de Marketing por Cliente | milestone | 0h | 2011-11-09 12:00 A | 2011-11-09 12:00 A | 457 | 100% | 2011-10-21 10:00 | 2011-10-21 11:00 | 1h |
| 459 | 1.2.5.1.2.8 | **GP-AS-11.Proyección de potencial de compra** |  | 0d | 2011-11-09 12:00 A | 2011-11-09 12:00 A |  | 100% | 2011-10-21 10:00 | 2011-10-21 11:00 | 1h |
| 460 | 1.2.5.1.2.8.1 | AS11.01 Calculando Proyección de Potencial de Compra | milestone | 0h | 2011-11-09 12:00 A | 2011-11-09 12:00 A | 425 | 100% | 2011-10-21 09:00 | 2011-10-21 10:00 | 1h |
| 461 | 1.2.5.1.2.9 | **GP-AS-10.Interfaz de planificación de la demanda para Proveedores** |  | 0d | 2011-11-03 23:00 A | 2011-11-03 23:00 A |  | 100% |  |  |  |
| 462 | 1.2.5.1.2.9.1 | AS10.01. Ingresando a Planificación de la Demanda (Proveedor) | milestone | 0h | 2011-11-03 23:00 A | 2011-11-03 23:00 A | 425 | 100% |  |  |  |

| ID | WBS | Task | Type | Duration | Start | Finish | Predecessors | Complete | Baseline start | Baseline finish | Baseline duration | Resources | Work | Actual work |
| --- | --- | --- | --- | --- | --- | --- | --- | --- | --- | --- | --- | --- | --- | --- |
| 463 | 1.2.5.1.2.10 | **GP-AS-09.Planificación de la demanda** |  | 0d | 2011-11-09 12:00 A | 2011-11-09 12:00 A |  | 100% |  |  |  |  |  |  |
| 464 | 1.2.5.1.2.10.1 | AS09.01. Mostrando planificación de la demanda | milestone | 0h | 2011-11-09 12:00 A | 2011-11-09 12:00 A | 425 | 100% |  |  |  |  |  |  |
| 465 | 1.2.5.1.2.11 | **GP-AS-08.Avance de sucursales** |  | 0d | 2011-11-09 12:00 A | 2011-11-09 12:00 A |  | 100% |  |  |  |  |  |  |
| 466 | 1.2.5.1.2.11.1 | AS08.01.Ingresando niveles de rendimiento máximo en sucursal. | milestone | 0h | 2011-11-09 12:00 A | 2011-11-09 12:00 A | 425 | 100% |  |  |  |  |  |  |
| 467 | 1.2.5.1.2.11.2 | AS08.02.Generando informe de avance de sucursales | milestone | 0h | 2011-11-09 12:00 A | 2011-11-09 12:00 A | 425 | 100% |  |  |  |  |  |  |
| 468 | 1.2.5.1.3 | AD-DS-Diagrama de Clases Preliminar | milestone | 0h | 2011-11-03 23:00 A | 2011-11-03 23:00 A | 425 | 100% |  |  |  |  |  |  |
| 469 | 1.2.5.1.4 | AD-TR-Trazabilidad (Preliminar) | milestone | 0h | 2011-11-03 23:00 A | 2011-11-03 23:00 A | 425 | 100% |  |  |  |  |  |  |
| 470 | 1.2.5.1.5 | AD-DA- Arquitectura (Preliminar) | milestone | 0h | 2011-11-03 23:00 A | 2011-11-03 23:00 A | 425 | 100% |  |  |  |  |  |  |
| 471 | 1.2.5.2 | **Administracion de Proyecto** |  | 8d | 2011-11-04 19:00 A | 2011-11-10 20:10 A |  | 100% | 2011-10-24 19:00 | 2011-10-26 20:00 | 4d |  | 24h | 24h |
| 472 | 1.2.5.2.1 | **Tareas** |  | 0d | 2011-11-04 19:00 A | 2011-11-06 10:10 A |  | 100% | 2011-10-24 19:00 | 2011-10-24 20:00 | 0d |  | 12h | 12h |
| 473 | 1.2.5.2.1.1 | Priorizacion y cuantificacion de riesgos |  | 4h | 2011-11-04 19:00 A | 2011-11-04 23:00 A |  | 100% | 2011-10-24 19:00 | 2011-10-24 20:00 | 1h | LP | 4h | 4h |
| 474 | 1.2.5.2.1.2 | Definir plan de contingencia y mitigacion |  | 6h | 2011-11-05 10:10 A | 2011-11-05 16:10 A | 473 | 100% | 2011-10-24 19:00 | 2011-10-24 20:00 | 1h | LP | 6h | 6h |
| 475 | 1.2.5.2.1.3 | Reunion de avance semanal |  | 2h | 2011-11-05 16:10 A | 2011-11-06 10:10 A | 474 | 100% | 2011-10-24 19:00 | 2011-10-24 20:00 | 1h | LP | 2h | 2h |
| 476 | 1.2.5.2.2 | **Entregables** |  | 8d | 2011-11-06 10:10 A | 2011-11-10 20:10 A |  | 100% | 2011-10-25 19:00 | 2011-10-26 20:00 | 2d |  | 12h | 12h |
| 477 | 1.2.5.2.2.1 | GP-LR: Gestion de Riesgos |  | 2d | 2011-11-06 10:10 A | 2011-11-07 19:10 A | 472 | 100% | 2011-10-25 19:00 | 2011-10-26 20:00 | 0.5d | LP | 8h | 8h |
| 478 | 1.2.5.2.2.2 | GP-MI: Minuta de reunion |  | 1d | 2011-11-07 19:10 A | 2011-11-10 20:10 A | 477 | 100% | 2011-10-25 19:00 | 2011-10-26 20:00 | 0.5d | LP | 4h | 4h |
| 479 | 1.2.5.3 | **Aseguramiento de Calidad** |  | 4d | 2011-11-07 08:00 A | 2011-11-08 17:00 A |  | 100% | 2011-10-27 08:00 | 2011-10-27 09:00 | 0.25d |  |  |  |
| 480 | 1.2.5.3.1 | **Tareas** |  | 2d | 2011-11-07 08:00 A | 2011-11-07 17:00 A |  | 100% | 2011-10-27 08:00 | 2011-10-27 09:00 | 1h |  |  |  |
| 481 | 1.2.5.3.1.1 | Revision de las Tareas según Lista de Control |  | 4h | 2011-11-07 08:00 A | 2011-11-07 12:00 A | 475 | 100% |  |  |  |  |  |  |
| 482 | 1.2.5.3.1.2 | Revision de los documentos Realizados |  | 4h | 2011-11-07 13:00 A | 2011-11-07 17:00 A | 481 | 100% |  |  |  |  |  |  |
| 483 | 1.2.5.3.2 | **Entregables** |  | 2d | 2011-11-08 08:00 A | 2011-11-08 17:00 A |  | 100% | 2011-10-27 08:00 | 2011-10-27 09:00 | 1h |  |  |  |
| 484 | 1.2.5.3.2.1 | QA-LC Lista de Control |  | 4h | 2011-11-08 08:00 A | 2011-11-08 12:00 A | 482 | 100% |  |  |  |  |  |  |
| 485 | 1.2.5.3.2.2 | Revision de los documentos realizados |  | 4h | 2011-11-08 13:00 A | 2011-11-08 17:00 A | 484 | 100% |  |  |  |  |  |  |
| 486 | 1.2.5.4 | **Gestion del Cambio** |  | 0.75d | 2011-11-07 08:00 A | 2011-11-07 11:00 A |  | 100% | 2011-10-27 19:00 | 2011-10-27 21:00 | 0d |  |  |  |
| 487 | 1.2.5.4.1 | **Tareas** |  | 0.5d | 2011-11-07 08:00 A | 2011-11-07 10:00 A |  | 100% | 2011-10-27 19:00 | 2011-10-27 20:00 | 0d |  |  |  |
| 488 | 1.2.5.4.1.1 | Revision de las nuevas versiones de los artefactos |  | 1h | 2011-11-07 08:00 A | 2011-11-07 09:00 A | 474 | 100% | 2011-10-27 19:00 | 2011-10-27 20:00 | 1h |  |  |  |
| 489 | 1.2.5.4.1.2 | Aprobacion de las nuevas versiones de los artefactos |  | 1h | 2011-11-07 09:00 A | 2011-11-07 10:00 A | 488 | 100% | 2011-10-27 19:00 | 2011-10-27 20:00 | 1h |  |  |  |

| ID | WBS | Task | Type | Duration | Start | Finish | Predecessors | Complete | Baseline start | Baseline finish | Baseline duration | Resources | Work | Actual work |
| --- | --- | --- | --- | --- | --- | --- | --- | --- | --- | --- | --- | --- | --- | --- |
| 490 | 1.2.5.4.2 | **Entregable** |  | 0.25d | 2011-11-07 10:00 A | 2011-11-07 11:00 A |  | 100% | 2011-10-27 20:00 | 2011-10-27 21:00 | 0d |  |  |  |
| 491 | 1.2.5.4.2.1 | Seccion de Aprobacion y Revision en los Artefactos Involucrados |  | 1h | 2011-11-07 10:00 A | 2011-11-07 11:00 A | 489 | 100% | 2011-10-27 20:00 | 2011-10-27 21:00 | 1h |  |  |  |
| 492 | 1.2.6 | **Iteracion 12** |  | 8d | 2011-11-10 20:10 A | 2011-11-16 20:00 A | 423 | 100% | 2011-10-27 21:00 | 2011-11-03 20:00 | 10d? |  | 21h | 21h |
| 493 | 1.2.6.1 | **Analisis y Diseño** |  | 2d | 2011-11-10 20:10 A | 2011-11-11 20:10 A |  | 100% | 2011-10-27 21:00 | 2011-10-31 10:00 | 2.5d? |  | 16h | 16h |
| 494 | 1.2.6.1.1 | **Tareas** |  | 2d | 2011-11-10 20:10 A | 2011-11-11 20:10 A |  | 100% | 2011-10-27 21:00 | 2011-10-28 21:00 | 2d? |  | 16h | 16h |
| 495 | 1.2.6.1.1.1 | Diagramar los casos de uso de sistema identificados con los actore identificados |  | 1h | 2011-11-10 20:10 A | 2011-11-10 21:10 A | 423 | 100% | 2011-10-27 21:00 | 2011-10-27 22:00 | 1h | AN | 1h | 1h |
| 496 | 1.2.6.1.1.2 | Identificar las interacciones entre actores y el sistema |  | 1h | 2011-11-10 20:10 A | 2011-11-10 21:10 A | 423 | 100% | 2011-10-27 21:00 | 2011-10-27 22:00 | 1h | AN | 1h | 1h |
| 497 | 1.2.6.1.1.3 | Generar una lista de casos de uso, y realizar una breve descripción de los mismos |  | 1h | 2011-11-10 20:10 A | 2011-11-10 21:10 A | 423 | 100% | 2011-10-27 21:00 | 2011-10-27 22:00 | 1h | AN | 1h | 1h |
| 498 | 1.2.6.1.1.4 | Detallar las interacciones entre los actores y el sistema |  | 1h | 2011-11-10 20:10 A | 2011-11-10 21:10 A | 423 | 100% | 2011-10-27 21:00 | 2011-10-27 22:00 | 1h | AN | 1h | 1h |
| 499 | 1.2.6.1.1.5 | Evaluar las alternativas de acción en los casos de uso |  | 1h | 2011-11-10 20:10 A | 2011-11-10 21:10 A | 423 | 100% | 2011-10-27 21:00 | 2011-10-27 22:00 | 1h | AN | 1h | 1h |
| 500 | 1.2.6.1.1.6 | Identificar los objetos necesarios para llevar a cabo el curso normal del caso de uso |  | 1h | 2011-11-10 20:10 A | 2011-11-10 21:10 A | 423 | 100% | 2011-10-27 21:00 | 2011-10-27 22:00 | 1h | AN | 1h | 1h |
| 501 | 1.2.6.1.1.7 | Diagramar la interacción a través del tiempo entre los objetos que intervienen en el caso de uso |  | 1h | 2011-11-10 20:10 A | 2011-11-10 21:10 A | 423 | 100% | 2011-10-27 21:00 | 2011-10-27 22:00 | 1h | AN | 1h | 1h |
| 502 | 1.2.6.1.1.8 | Definir las capas que formaran parte del sistema |  | 1h | 2011-11-10 20:10 A | 2011-11-10 21:10 A | 423 | 100% | 2011-10-27 21:00 | 2011-10-27 22:00 | 1h | AN | 1h | 1h |
| 503 | 1.2.6.1.1.9 | Examinar la disponibilidad de componentes fisicos |  | 1h | 2011-11-10 20:10 A | 2011-11-10 21:10 A | 423 | 100% | 2011-10-27 21:00 | 2011-10-27 22:00 | 1h | AN | 1h | 1h |
| 504 | 1.2.6.1.1.10 | Ilustrar la arquitectura logica utilizando los diagrama de paquetes |  | 1h | 2011-11-10 20:10 A | 2011-11-10 21:10 A | 423 | 100% | 2011-10-27 21:00 | 2011-10-27 22:00 | 1h | AN | 1h | 1h |
| 505 | 1.2.6.1.1.11 | Especificar la interacción entre los componentes |  | 1h | 2011-11-10 20:10 A | 2011-11-10 21:10 A | 423 | 100% | 2011-10-27 21:00 | 2011-10-27 22:00 | 1h | AN | 1h | 1h |
| 506 | 1.2.6.1.1.12 | Aplicar patrones de diseño |  | 1h | 2011-11-10 20:10 A | 2011-11-10 21:10 A | 423 | 100% | 2011-10-27 21:00 | 2011-10-27 22:00 | 1h | AN | 1h | 1h |
| 507 | 1.2.6.1.1.13 | Identificar la trazabilidad entre requerimiento – caso de uso de sistema - alcance |  | 4h | 2011-11-10 20:10 A | 2011-11-11 20:10 A | 423 | 100% | 2011-10-27 21:00 | 2011-10-28 21:00 | 4h? | AN | 4h | 4h |
| 508 | 1.2.6.1.2 | **Entregables** |  | 2d | 2011-11-10 20:10 A | 2011-11-11 20:10 A |  | 100% | 2011-10-27 22:00 | 2011-10-31 10:00 | 2.5d |  |  |  |
| 509 | 1.2.6.1.2.1 | **GP-AS-07 Asesor de Cobranza** |  | 0d | 2011-11-11 08:00 A | 2011-11-11 08:00 A |  | 100% | 2011-10-27 22:00 | 2011-10-28 20:00 | 2h | AN |  |  |
| 510 | 1.2.6.1.2.1.1 | AS-07-01 Parametrizando Scorecard de Cliente | milestone | 0h | 2011-11-11 08:00 A | 2011-11-11 08:00 A |  | 100% |  |  |  |  |  |  |
| 511 | 1.2.6.1.2.1.2 | AS-07-02 Generando Reporte de Puntaje de Cliente | milestone | 0h | 2011-11-11 08:00 A | 2011-11-11 08:00 A |  | 100% |  |  |  |  |  |  |
| 512 | 1.2.6.1.2.2 | **GP-AS-06 Analizando Comportamiento de Ventas** |  | 0d | 2011-11-10 20:10 A | 2011-11-11 08:00 A |  | 100% |  |  |  |  |  |  |
| 513 | 1.2.6.1.2.2.1 | AS-06-01 Parametrizando Combo de Product | milestone | 0h | 2011-11-10 20:10 A | 2011-11-10 20:10 A |  | 100% |  |  |  |  |  |  |
| 514 | 1.2.6.1.2.2.2 | AS-06-02 Validando Combo contra Cotizacion | milestone | 0h | 2011-11-10 20:10 A | 2011-11-10 20:10 A |  | 100% |  |  |  |  |  |  |
| 515 | 1.2.6.1.2.2.3 | AS-06-03 Enviando Historial de Alertas de Combo | milestone | 0h | 2011-11-11 08:00 A | 2011-11-11 08:00 A |  | 100% |  |  |  |  |  |  |

| ID | WBS | Task | Type | Duration | Start | Finish | Predecessors | Complete | Baseline start | Baseline finish | Baseline duration | Resources | Work | Actual work |
| --- | --- | --- | --- | --- | --- | --- | --- | --- | --- | --- | --- | --- | --- | --- |
| 516 | 1.2.6.1.2.3 | **GP-AS-05 Controlador de Flujo de Venta** |  | 0d | 2011-11-10 20:10 A | 2011-11-10 20:10 A |  | 100% | 2011-10-27 22:00 | 2011-10-28 20:00 | 2h | AN |  |  |
| 517 | 1.2.6.1.2.3.1 | AS-05-01 Revisando estado de Cotizacio | milestone | 0h | 2011-11-10 20:10 A | 2011-11-10 20:10 A | 313 | 100% |  |  |  |  |  |  |
| 518 | 1.2.6.1.2.4 | **GP-AS-04 Centralizador de Stock** |  | 0d | 2011-11-10 20:10 A | 2011-11-10 20:10 A |  | 100% |  |  |  |  |  |  |
| 519 | 1.2.6.1.2.4.1 | AS-04-01 Ingresando Cotización | milestone | 0h | 2011-11-10 20:10 A | 2011-11-10 20:10 A |  | 100% |  |  |  |  |  |  |
| 520 | 1.2.6.1.2.5 | **GP-AS-03 Localizador de Stock** |  | 0d | 2011-11-10 20:10 A | 2011-11-10 20:10 A |  | 100% | 2011-10-27 22:00 | 2011-10-28 20:00 | 2h | AN |  |  |
| 521 | 1.2.6.1.2.5.1 | AS-03-01 Consultando Pedidos Pendiente | milestone | 0h | 2011-11-10 20:10 A | 2011-11-10 20:10 A |  | 100% |  |  |  |  |  |  |
| 522 | 1.2.6.1.2.5.2 | AS-03-02 Localizando Productos en Deposito | milestone | 0h | 2011-11-10 20:10 A | 2011-11-10 20:10 A |  | 100% |  |  |  |  |  |  |
| 523 | 1.2.6.1.2.6 | **GP-AS-02 Ubicador de Stock** |  | 0d | 2011-11-10 20:10 A | 2011-11-11 08:00 A |  | 100% |  |  |  |  |  |  |
| 524 | 1.2.6.1.2.6.1 | AS-02-01 Parametrizando Sectores | milestone | 0h | 2011-11-10 20:10 A | 2011-11-10 20:10 A |  | 100% |  |  |  |  |  |  |
| 525 | 1.2.6.1.2.6.2 | AS-02-02 Relacionando Productos a Sector | milestone | 0h | 2011-11-10 20:10 A | 2011-11-10 20:10 A |  | 100% |  |  |  |  |  |  |
| 526 | 1.2.6.1.2.6.3 | AS-02-03 Generando Alternativas de reubicación de Producto | milestone | 0h | 2011-11-11 08:00 A | 2011-11-11 08:00 A |  | 100% |  |  |  |  |  |  |
| 527 | 1.2.6.1.2.7 | **GP-AS-01 Controlador de Stock Critico** |  | 0d | 2011-11-10 20:10 A | 2011-11-10 20:10 A |  | 100% | 2011-10-27 22:00 | 2011-10-28 20:00 | 2h | AN |  |  |
| 528 | 1.2.6.1.2.7.1 | AS-01-01 Alertando de Faltante de Producto | milestone | 0h | 2011-11-10 20:10 A | 2011-11-10 20:10 A |  | 100% |  |  |  |  |  |  |
| 529 | 1.2.6.1.2.7.2 | AS-01-02 Enviando Alertas semanal por Faltante de Producto | milestone | 0h | 2011-11-10 20:10 A | 2011-11-10 20:10 A |  | 100% |  |  |  |  |  |  |
| 530 | 1.2.6.1.2.8 | AD-DS-Diagrama de Clases (Preliminar) | milestone | 0h | 2011-11-10 21:10 A | 2011-11-10 21:10 A | 502, 503, 504, 505, 506 | 100% | 2011-10-27 22:00 | 2011-10-28 20:00 | 2h | AN |  |  |
| 531 | 1.2.6.1.2.9 | AD-TR-Trazabilidad (Preliminar) | milestone | 0h | 2011-11-11 20:10 A | 2011-11-11 20:10 A | 507 | 100% | 2011-10-31 08:00 | 2011-10-31 10:00 | 2h | ARQ |  |  |
| 532 | 1.2.6.1.2.10 | AD-DA- Arquitectura (Preliminar) | milestone | 0h | 2011-11-11 20:10 A | 2011-11-11 20:10 A | 507 | 100% | 2011-10-31 08:00 | 2011-10-31 10:00 | 2h | ARQ |  |  |
| 533 | 1.2.6.2 | **Administracion de Poryecto** |  | 2d | 2011-11-14 19:00 A | 2011-11-15 19:30 A |  | 100% | 2011-10-31 19:00 | 2011-11-01 19:30 | 2d |  | 4h | 4h |
| 534 | 1.2.6.2.1 | **Tareas** |  | 0d | 2011-11-14 19:00 A | 2011-11-14 19:30 A |  | 100% | 2011-10-31 19:00 | 2011-10-31 19:30 | 0d |  | 2h | 2h |
| 535 | 1.2.6.2.1.1 | Identificar Riesgos del Proyecto formalmente |  | 0.5h | 2011-11-14 19:00 A | 2011-11-14 19:30 A | 508 | 100% | 2011-10-31 19:00 | 2011-10-31 19:30 | 0.5h | LP | 0.5h | 0.5h |
| 536 | 1.2.6.2.1.2 | Priorizacion y cuantificacion de riesgos |  | 0.5h | 2011-11-14 19:00 A | 2011-11-14 19:30 A | 508 | 100% | 2011-10-31 19:00 | 2011-10-31 19:30 | 0.5h | LP | 0.5h | 0.5h |
| 537 | 1.2.6.2.1.3 | Definir plan de contingencia y mitigacion |  | 0.5h | 2011-11-14 19:00 A | 2011-11-14 19:30 A | 508 | 100% | 2011-10-31 19:00 | 2011-10-31 19:30 | 0.5h | LP | 0.5h | 0.5h |
| 538 | 1.2.6.2.1.4 | Reunion de avance semanal |  | 0.5h | 2011-11-14 19:00 A | 2011-11-14 19:30 A | 508 | 100% | 2011-10-31 19:00 | 2011-10-31 19:30 | 0.5h | LP | 0.5h | 0.5h |
| 539 | 1.2.6.2.2 | **Entregables** |  | 2d | 2011-11-14 19:30 A | 2011-11-15 19:30 A |  | 100% | 2011-10-31 19:30 | 2011-11-01 19:30 | 2d |  | 2h | 2h |
| 540 | 1.2.6.2.2.1 | GP-LR: Gestion de Riesgos |  | 1h | 2011-11-14 19:30 A | 2011-11-15 19:30 A | 534 | 100% | 2011-10-31 19:30 | 2011-11-01 19:30 | 1h | LP | 1h | 1h |
| 541 | 1.2.6.2.2.2 | GP-MI: Minuta de reunion |  | 1h | 2011-11-14 19:30 A | 2011-11-15 19:30 A | 534 | 100% | 2011-10-31 19:30 | 2011-11-01 19:30 | 1h | LP | 1h | 1h |

| ID | WBS | Task | Type | Duration | Start | Finish | Predecessors | Complete | Baseline start | Baseline finish | Baseline duration | Resources | Work | Actual work |
| --- | --- | --- | --- | --- | --- | --- | --- | --- | --- | --- | --- | --- | --- | --- |
| 542 | 1.2.6.3 | **Aseguramiento de Calidad** |  | 0.25d | 2011-11-16 08:00 A | 2011-11-16 09:00 A |  | 100% | 2011-11-02 08:00 | 2011-11-02 09:00 | 0.25d |  |  |  |
| 543 | 1.2.6.3.1 | Tareas |  | 1h | 2011-11-16 08:00 A | 2011-11-16 09:00 A | 539 | 100% | 2011-11-02 08:00 | 2011-11-02 09:00 | 1h |  |  |  |
| 544 | 1.2.6.3.2 | Entregables |  | 1h | 2011-11-16 08:00 A | 2011-11-16 09:00 A | 539 | 100% | 2011-11-02 08:00 | 2011-11-02 09:00 | 1h |  |  |  |
| 545 | 1.2.6.4 | **Gestion del Cambio** |  | 0d | 2011-11-16 19:00 A | 2011-11-16 20:00 A |  | 100% | 2011-11-02 19:00 | 2011-11-03 20:00 | 2d |  | 1h | 1h |
| 546 | 1.2.6.4.1 | **Tareas** |  | 0d | 2011-11-16 19:00 A | 2011-11-16 20:00 A |  | 100% | 2011-11-02 19:00 | 2011-11-02 20:00 | 0d |  | 1h | 1h |
| 547 | 1.2.6.4.1.1 | Revision de las nuevas versiones de los artefactos |  | 1h | 2011-11-16 19:00 A | 2011-11-16 20:00 A | 542 | 100% | 2011-11-02 19:00 | 2011-11-02 20:00 | 1h | AN | 1h | 1h |
| 548 | 1.2.7 | **Iteracion 13** |  | 18d | 2011-11-10 20:10 A | 2011-11-23 19:10 A | 492 | 100% | 2011-10-27 21:00 | 2011-11-03 20:00 | 10d? |  | 47h | 47h |
| 549 | 1.2.7.1 | **Analisis y Diseño** |  | 18d | 2011-11-10 20:10 A | 2011-11-23 19:10 A |  | 100% | 2011-10-27 21:00 | 2011-10-31 10:00 | 2.5d? |  | 26h | 26h |
| 550 | 1.2.7.1.1 | **Tareas** |  | 8d | 2011-11-17 19:00 A | 2011-11-23 19:10 A |  | 100% | 2011-10-27 21:00 | 2011-10-28 21:00 | 2d? |  | 26h | 26h |
| 551 | 1.2.7.1.1.1 | Afinamiento de Casos de Uso TF |  | 5h | 2011-11-17 19:00 A | 2011-11-18 20:00 A | 492 | 100% | 2011-10-27 21:00 | 2011-10-27 22:00 | 1h | AN | 5h | 5h |
| 552 | 1.2.7.1.1.2 | Afinamiento de Diagrama de Secuencias |  | 5h | 2011-11-18 20:00 A | 2011-11-19 12:10 A | 551 | 100% | 2011-10-27 21:00 | 2011-10-27 22:00 | 1h | AN | 5h | 5h |
| 553 | 1.2.7.1.1.3 | Afinamiento de Diagrama de Clases |  | 5h | 2011-11-19 12:10 A | 2011-11-19 17:10 A | 552 | 100% | 2011-10-27 21:00 | 2011-10-27 22:00 | 1h | AN | 5h | 5h |
| 554 | 1.2.7.1.1.4 | Actualizacion y afinamiento de la trazabilidad |  | 5h | 2011-11-19 17:10 A | 2011-11-20 14:10 A | 553 | 100% | 2011-10-27 21:00 | 2011-10-27 22:00 | 1h | AN | 5h | 5h |
| 555 | 1.2.7.1.1.5 | Examinar la disponibilidad de componentes fisicos |  | 1h | 2011-11-20 14:10 A | 2011-11-20 15:10 A | 554 | 100% | 2011-10-27 21:00 | 2011-10-27 22:00 | 1h | AN | 1h | 1h |
| 556 | 1.2.7.1.1.6 | Refinaminto de Ilustrar la arquitectura logica utilizando los diagrama de paquetes |  | 1h | 2011-11-20 15:10 A | 2011-11-20 16:10 A | 555 | 100% | 2011-10-27 21:00 | 2011-10-27 22:00 | 1h | AN | 1h | 1h |
| 557 | 1.2.7.1.1.7 | Reinamiento de Especificar la interacción entre los componentes |  | 1h | 2011-11-20 16:10 A | 2011-11-20 17:10 A | 556 | 100% | 2011-10-27 21:00 | 2011-10-27 22:00 | 1h | AN | 1h | 1h |
| 558 | 1.2.7.1.1.8 | Refinamiento en patrones de diseño |  | 3h | 2011-11-20 17:10 A | 2011-11-23 19:10 A | 557 | 100% | 2011-10-27 21:00 | 2011-10-27 22:00 | 1h | AN | 3h | 3h |
| 559 | 1.2.7.1.2 | **Entregables** |  | 8d | 2011-11-10 20:10 A | 2011-11-16 20:00 A |  | 100% | 2011-10-27 22:00 | 2011-10-31 10:00 | 2.5d |  |  |  |
| 560 | 1.2.7.1.2.1 | AS-02-01 Parametrizando Sectores | milestone | 0h | 2011-11-10 20:10 A | 2011-11-10 20:10 A |  | 100% |  |  |  |  |  |  |
| 561 | 1.2.7.1.2.2 | AS-02-02 Relacionando Productos a Sector | milestone | 0h | 2011-11-10 20:10 A | 2011-11-10 20:10 A |  | 100% |  |  |  |  |  |  |
| 562 | 1.2.7.1.2.3 | AS-05-01 Revisando estado de Cotizacio | milestone | 0h | 2011-11-10 20:10 A | 2011-11-10 20:10 A |  | 100% |  |  |  |  |  |  |
| 563 | 1.2.7.1.2.4 | AS-06-01 Parametrizando Combo de Product | milestone | 0h | 2011-11-10 20:10 A | 2011-11-10 20:10 A |  | 100% |  |  |  |  |  |  |
| 564 | 1.2.7.1.2.5 | AS-07-01 Parametrizando Scorecard de Cliente | milestone | 0h | 2011-11-11 08:00 A | 2011-11-11 08:00 A |  | 100% |  |  |  |  |  |  |
| 565 | 1.2.7.1.2.6 | AS-07-02 Generando Reporte de Puntaje de Cliente | milestone | 0h | 2011-11-11 08:00 A | 2011-11-11 08:00 A |  | 100% |  |  |  |  |  |  |
| 566 | 1.2.7.1.2.7 | AS13.01. Mostrando Simulación de Crecimiento | milestone | 0h | 2011-11-16 20:00 A | 2011-11-16 20:00 A |  | 100% |  |  |  |  |  |  |
| 567 | 1.2.7.1.2.8 | AD-DS-Diagrama de Clases (Final) | milestone | 0h | 2011-11-16 20:00 A | 2011-11-16 20:00 A |  | 100% | 2011-10-27 22:00 | 2011-10-28 20:00 | 2h | AN |  |  |
| 568 | 1.2.7.1.2.9 | AD-TR-Trazabilidad (Final) | milestone | 0h | 2011-11-16 20:00 A | 2011-11-16 20:00 A |  | 100% | 2011-10-31 08:00 | 2011-10-31 10:00 | 2h | ARQ |  |  |
| 569 | 1.2.7.1.2.10 | AD-DA- Arquitectura (Final) | milestone | 0h | 2011-11-16 20:00 A | 2011-11-16 20:00 A |  | 100% | 2011-10-31 08:00 | 2011-10-31 10:00 | 2h | ARQ |  |  |

| ID | WBS | Task | Type | Duration | Start | Finish | Predecessors | Complete | Remaining | Baseline start | Baseline finish | Baseline duration | Total slack | Resources | Work | Actual work |
| --- | --- | --- | --- | --- | --- | --- | --- | --- | --- | --- | --- | --- | --- | --- | --- | --- |
| 570 | 1.2.7.2 | **Administracion de Poryecto** |  | 2d | 2011-11-17 19:00 A | 2011-11-18 21:00 A |  | 100% |  | 2011-10-31 19:00 | 2011-11-01 19:30 | 2d |  |  | 20h | 20h |
| 571 | 1.2.7.2.1 | **Tareas** |  | 2d | 2011-11-17 19:00 A | 2011-11-18 21:00 A |  | 100% |  | 2011-10-31 19:00 | 2011-10-31 19:30 | 0d |  |  | 20h | 20h |
| 572 | 1.2.7.2.1.1 | Identificar Riesgos del Proyecto formalmente |  | 6h | 2011-11-17 19:00 A | 2011-11-18 21:00 A | 559 | 100% |  | 2011-10-31 19:00 | 2011-10-31 19:30 | 0.5h |  | LP | 6h | 6h |
| 573 | 1.2.7.2.1.2 | Priorizacion y cuantificacion de riesgos |  | 6h | 2011-11-17 19:00 A | 2011-11-18 21:00 A | 559 | 100% |  | 2011-10-31 19:00 | 2011-10-31 19:30 | 0.5h |  | LP | 6h | 6h |
| 574 | 1.2.7.2.1.3 | Definir plan de contingencia y mitigacion |  | 6h | 2011-11-17 19:00 A | 2011-11-18 21:00 A | 559 | 100% |  | 2011-10-31 19:00 | 2011-10-31 19:30 | 0.5h |  | LP | 6h | 6h |
| 575 | 1.2.7.2.1.4 | Reunion de avance semanal |  | 2h | 2011-11-17 19:00 A | 2011-11-17 21:00 A | 559 | 100% |  | 2011-10-31 19:00 | 2011-10-31 19:30 | 0.5h |  | LP | 2h | 2h |
| 576 | 1.2.7.2.2 | **Entregables** |  | 0d | 2011-11-18 21:00 A | 2011-11-18 21:00 A |  | 100% |  | 2011-10-31 19:30 | 2011-11-01 19:30 | 2d |  |  |  |  |
| 577 | 1.2.7.2.2.1 | GP-LR: Gestion de Riesgos | milestone | 0h | 2011-11-18 21:00 A | 2011-11-18 21:00 A | 571 | 100% |  | 2011-10-31 19:30 | 2011-11-01 19:30 | 1h |  | LP |  |  |
| 578 | 1.2.7.2.2.2 | GP-MI: Minuta de reunion | milestone | 0h | 2011-11-18 21:00 A | 2011-11-18 21:00 A | 571 | 100% |  | 2011-10-31 19:30 | 2011-11-01 19:30 | 1h |  | LP |  |  |
| 579 | 1.2.7.3 | **Aseguramiento de Calidad** |  | 1d | 2011-11-21 08:00 A | 2011-11-21 12:00 A |  | 100% |  | 2011-11-02 08:00 | 2011-11-02 09:00 | 0.25d |  |  |  |  |
| 580 | 1.2.7.3.1 | Tareas |  | 4h | 2011-11-21 08:00 A | 2011-11-21 12:00 A | 570 | 100% |  | 2011-11-02 08:00 | 2011-11-02 09:00 | 1h |  |  |  |  |
| 581 | 1.2.7.3.2 | Entregables |  | 4h | 2011-11-21 08:00 A | 2011-11-21 12:00 A | 570 | 100% |  | 2011-11-02 08:00 | 2011-11-02 09:00 | 1h |  |  |  |  |
| 582 | 1.2.7.4 | **Gestion del Cambio** |  | 0d | 2011-11-21 19:00 A | 2011-11-21 20:00 A | 579 | 100% |  | 2011-11-02 19:00 | 2011-11-03 20:00 | 2d |  |  | 1h | 1h |
| 583 | 1.2.7.4.1 | **Tareas** |  | 0d | 2011-11-21 19:00 A | 2011-11-21 20:00 A |  | 100% |  | 2011-11-02 19:00 | 2011-11-02 20:00 | 0d |  |  | 1h | 1h |
| 584 | 1.2.7.4.1.1 | Revision de las nuevas versiones de los artefactos |  | 1h | 2011-11-21 19:00 A | 2011-11-21 20:00 A | 579 | 100% |  | 2011-11-02 19:00 | 2011-11-02 20:00 | 1h |  | AN | 1h | 1h |
| 585 | 1.2.8 | **Iteracion 14** |  | 12.25d | 2011-11-22 08:00 A | 2011-11-30 09:00 |  | 98% | 0.28d |  |  |  | 0d |  | 37h | 37h |
| 586 | 1.2.8.1 | **Analisis y Diseño** |  | 4d | 2011-11-24 08:00 A | 2011-11-27 12:10 A |  | 100% |  | 2011-10-27 21:00 | 2011-10-31 10:00 | 2.5d? |  |  | 30h | 30h |
| 587 | 1.2.8.1.1 | **Tareas** |  | 4d | 2011-11-24 08:00 A | 2011-11-27 12:10 A |  | 100% |  | 2011-10-27 21:00 | 2011-10-28 21:00 | 2d? |  |  | 30h | 30h |
| 588 | 1.2.8.1.1.1 | Redefinir diseño para que se ajuste a un diseño orientado a objetos. |  | 4h | 2011-11-24 08:00 A | 2011-11-24 12:00 A | 558 | 100% |  |  |  |  |  |  |  |  |
| 589 | 1.2.8.1.1.2 | Ajustar diagrama de secuencia |  | 12h | 2011-11-24 19:00 A | 2011-11-26 14:10 A | 588 | 100% |  | 2011-10-27 21:00 | 2011-10-27 22:00 | 1h |  | AN | 12h | 12h |
| 590 | 1.2.8.1.1.3 | Ajustar Diagrama de Clases |  | 11h | 2011-11-24 19:00 A | 2011-11-26 13:10 A | 588 | 100% |  | 2011-10-27 21:00 | 2011-10-27 22:00 | 1h |  | AN | 11h | 11h |
| 591 | 1.2.8.1.1.4 | Actualizacion de Trazabilidad |  | 1h | 2011-11-26 13:10 A | 2011-11-26 14:10 A | 590 | 100% |  | 2011-10-27 21:00 | 2011-10-27 22:00 | 1h |  | AN | 1h | 1h |
| 592 | 1.2.8.1.1.5 | Examinar la disponibilidad de componentes fisicos |  | 2h | 2011-11-26 14:10 A | 2011-11-26 16:10 A | 591 | 100% |  | 2011-10-27 21:00 | 2011-10-27 22:00 | 1h |  | AN | 2h | 2h |
| 593 | 1.2.8.1.1.6 | Refinaminto de Ilustrar la arquitectura logica utilizando los diagrama de paquetes |  | 2h | 2011-11-26 16:10 A | 2011-11-27 10:10 A | 592 | 100% |  | 2011-10-27 21:00 | 2011-10-27 22:00 | 1h |  | AN | 2h | 2h |
| 594 | 1.2.8.1.1.7 | Reinamiento de Especificar la interacción entre los componentes |  | 2h | 2011-11-27 10:10 A | 2011-11-27 12:10 A | 593 | 100% |  | 2011-10-27 21:00 | 2011-10-27 22:00 | 1h |  | AN | 2h | 2h |

| ID | WBS | Task | Type | Duration | Start | Finish | Predecessors | Complete | Baseline start | Baseline finish | Baseline duration | Resources | Work | Actual work |
| --- | --- | --- | --- | --- | --- | --- | --- | --- | --- | --- | --- | --- | --- | --- |
| 595 | 1.2.8.1.2 | **Entregables** |  | 0d | 2011-11-27 12:10 A | 2011-11-27 12:10 A |  | 100% | 2011-10-27 22:00 | 2011-10-31 10:00 | 2.5d |  |  |  |
| 596 | 1.2.8.1.2.1 | GP-AS-01 Controlador de Stock Critico | milestone | 0h | 2011-11-27 12:10 A | 2011-11-27 12:10 A | 587 | 100% |  |  |  | AN |  |  |
| 597 | 1.2.8.1.2.2 | GP-AS-02 Ubicador de Stock | milestone | 0h | 2011-11-27 12:10 A | 2011-11-27 12:10 A | 587 | 100% |  |  |  | AN |  |  |
| 598 | 1.2.8.1.2.3 | GP-AS-03 Localizador de Stock | milestone | 0h | 2011-11-27 12:10 A | 2011-11-27 12:10 A | 587 | 100% |  |  |  | AN |  |  |
| 599 | 1.2.8.1.2.4 | GP-AS-04 Centralizador de Stock | milestone | 0h | 2011-11-27 12:10 A | 2011-11-27 12:10 A | 587 | 100% |  |  |  | AN |  |  |
| 600 | 1.2.8.1.2.5 | GP-AS-05 Controlador de Flujo de Venta | milestone | 0h | 2011-11-27 12:10 A | 2011-11-27 12:10 A | 587 | 100% |  |  |  | AN |  |  |
| 601 | 1.2.8.1.2.6 | GP-AS-06 Analizando Comportamiento de Ventas | milestone | 0h | 2011-11-27 12:10 A | 2011-11-27 12:10 A | 587 | 100% |  |  |  | AN |  |  |
| 602 | 1.2.8.1.2.7 | GP-AS-07 Asesor de Cobranza | milestone | 0h | 2011-11-27 12:10 A | 2011-11-27 12:10 A | 587 | 100% |  |  |  | AN |  |  |
| 603 | 1.2.8.1.2.8 | GP-AS-08 Avance de Sucursal | milestone | 0h | 2011-11-27 12:10 A | 2011-11-27 12:10 A | 587 | 100% | 2011-10-27 22:00 | 2011-10-28 20:00 | 2h | AN |  |  |
| 604 | 1.2.8.1.2.9 | GP-AS-09 Planificacion de la Demanda | milestone | 0h | 2011-11-27 12:10 A | 2011-11-27 12:10 A | 587 | 100% | 2011-10-31 08:00 | 2011-10-31 10:00 | 2h | AN |  |  |
| 605 | 1.2.8.1.2.10 | GP-AS-10 Interfaz de planificación de la demanda a Proveedores | milestone | 0h | 2011-11-27 12:10 A | 2011-11-27 12:10 A | 587 | 100% |  |  |  | AN |  |  |
| 606 | 1.2.8.1.2.11 | GP-AS-11 Proyección de potencial de Compra | milestone | 0h | 2011-11-27 12:10 A | 2011-11-27 12:10 A | 587 | 100% |  |  |  | AN |  |  |
| 607 | 1.2.8.1.2.12 | GP-AS-12 Retorno de la Inversion de Marketing | milestone | 0h | 2011-11-27 12:10 A | 2011-11-27 12:10 A | 587 | 100% |  |  |  | AN |  |  |
| 608 | 1.2.8.1.2.13 | GP-AS-13 Simulador de Expansión | milestone | 0h | 2011-11-27 12:10 A | 2011-11-27 12:10 A | 587 | 100% |  |  |  | AN |  |  |
| 609 | 1.2.8.1.2.14 | GP-AS-14 Fuerza de Venta por Localidad | milestone | 0h | 2011-11-27 12:10 A | 2011-11-27 12:10 A | 587 | 100% |  |  |  | AN |  |  |
| 610 | 1.2.8.1.2.15 | GP-AS-15 Objetivos de Facturacion | milestone | 0h | 2011-11-27 12:10 A | 2011-11-27 12:10 A | 587 | 100% |  |  |  | AN |  |  |
| 611 | 1.2.8.1.2.16 | GP-AS-16 Cumplimiento de objetivos de fuerza de venta por vendedor | milestone | 0h | 2011-11-27 12:10 A | 2011-11-27 12:10 A | 587 | 100% |  |  |  | AN |  |  |
| 612 | 1.2.8.1.2.17 | GP-AS-17 Calidad de Proveedores | milestone | 0h | 2011-11-27 12:10 A | 2011-11-27 12:10 A | 587 | 100% | 2011-10-31 08:00 | 2011-10-31 10:00 | 2h | AN |  |  |
| 613 | 1.2.8.1.2.18 | GP-AS-18 Gestión Reclamos con Proveedores | milestone | 0h | 2011-11-27 12:10 A | 2011-11-27 12:10 A | 587 | 100% |  |  |  | AN |  |  |
| 614 | 1.2.8.2 | **Administracion de Poryecto** |  | 4d | 2011-11-27 12:10 A | 2011-11-29 19:10 A |  | 100% | 2011-10-31 19:00 | 2011-11-01 19:30 | 2d |  | 7h | 7h |
| 615 | 1.2.8.2.1 | **Tareas** |  | 4d | 2011-11-27 12:10 A | 2011-11-29 19:10 A |  | 100% | 2011-10-31 19:00 | 2011-10-31 19:30 | 0d |  | 7h | 7h |
| 616 | 1.2.8.2.1.1 | Seguimiento de Riesgos |  | 1h | 2011-11-27 12:10 A | 2011-11-27 13:10 A | 594 | 100% | 2011-10-31 19:00 | 2011-10-31 19:30 | 0.5h | LP | 1h | 1h |
| 617 | 1.2.8.2.1.2 | Replanificar Iteracion 14 |  | 2h | 2011-11-27 13:10 A | 2011-11-27 15:10 A | 616 | 100% | 2011-10-31 19:00 | 2011-10-31 19:30 | 0.5h | LP | 2h | 2h |
| 618 | 1.2.8.2.1.3 | Lecciones Aprendidas |  | 2h | 2011-11-27 15:10 A | 2011-11-27 17:10 A | 617 | 100% | 2011-10-31 19:00 | 2011-10-31 19:30 | 0.5h | LP | 2h | 2h |
| 619 | 1.2.8.2.1.4 | Informe Pos Morten |  | 2h | 2011-11-27 17:10 A | 2011-11-29 19:10 A | 618 | 100% | 2011-10-31 19:00 | 2011-10-31 19:30 | 0.5h | LP | 2h | 2h |

| ID | WBS | Task | Type | Duration | Start | Finish | Predecessors | Complete | Baseline start | Baseline finish | Baseline duration | Total slack | Free slack | Resources |
| --- | --- | --- | --- | --- | --- | --- | --- | --- | --- | --- | --- | --- | --- | --- |
| 620 | 1.2.8.2.2 | **Entregables** |  | 0d | 2011-11-27 13:10 A | 2011-11-27 17:10 A |  | 100% | 2011-10-31 19:30 | 2011-11-01 19:30 | 2d |  |  |  |
| 621 | 1.2.8.2.2.1 | GP-LR: Gestion de Riesgos | milestone | 0h | 2011-11-27 13:10 A | 2011-11-27 13:10 A | 616 | 100% | 2011-10-31 19:30 | 2011-11-01 19:30 | 1h |  |  | LP |
| 622 | 1.2.8.2.2.2 | GP-MI: Minuta de reunion | milestone | 0h | 2011-11-27 15:10 A | 2011-11-27 15:10 A | 617 | 100% | 2011-10-31 19:30 | 2011-11-01 19:30 | 1h |  |  | LP |
| 623 | 1.2.8.2.2.3 | GP-PosMorten | milestone | 0h | 2011-11-27 17:10 A | 2011-11-27 17:10 A | 618 | 100% |  |  |  |  |  | LP |
| 624 | 1.2.8.2.2.4 | GP-PP Planificacion del proyecto (replanificada) | milestone | 0h | 2011-11-27 15:10 A | 2011-11-27 15:10 A | 617 | 100% |  |  |  |  |  | LP |
| 625 | 1.2.8.3 | **Aseguramiento de Calidad** |  | 0.25d | 2011-11-29 19:10 A | 2011-11-30 09:00 A |  | 100% | 2011-11-02 08:00 | 2011-11-02 09:00 | 0.25d |  |  |  |
| 626 | 1.2.8.3.1 | **Tareas** |  | 0.25d | 2011-11-30 08:00 A | 2011-11-30 09:00 A | 614 | 100% | 2011-11-02 08:00 | 2011-11-02 09:00 | 1h |  |  |  |
| 627 | 1.2.8.3.1.1 | Revision de CheckList Analisis y diseño |  | 1h | 2011-11-30 08:00 A | 2011-11-30 09:00 A |  | 100% |  |  |  |  |  |  |
| 628 | 1.2.8.3.2 | **Entregables** |  | 0d | 2011-11-29 19:10 A | 2011-11-29 19:10 A | 614 | 100% | 2011-11-02 08:00 | 2011-11-02 09:00 | 1h |  |  |  |
| 629 | 1.2.8.3.2.1 | QA-LC Lista de Control verificada | milestone | 0h | 2011-11-29 19:10 A | 2011-11-29 19:10 A |  | 100% |  |  |  |  |  |  |
| 630 | 1.2.8.4 | Hito - Arquitectura del Sistema |  | 1h | 2011-11-22 08:00 | 2011-11-22 09:00 | 584 |  |  |  |  | 1.75d | 0d |  |
| 631 | 1.3 | **Fase de Construccion** |  | 130d | 2011-11-22 09:00 | 2012-02-21 09:00 | 630 |  | 2011-08-29 08:00 | 2011-11-18 17:00 | 120d | 1.75d |  |  |
| 632 | 1.3.1 | Iteracion 14 |  | 40h | 2011-11-22 09:00 | 2011-11-29 09:00 | 630 |  | 2011-09-12 08:00 | 2011-09-16 17:00 | 10d | 1.75d | 0d |  |
| 633 | 1.3.2 | Iteracion 15 |  | 40h | 2011-11-29 09:00 | 2011-12-06 09:00 | 632 |  | 2011-09-19 08:00 | 2011-09-23 17:00 | 10d | 1.75d | 0d |  |
| 634 | 1.3.3 | Iteracion 16 |  | 40h | 2011-12-06 09:00 | 2011-12-13 09:00 | 633 |  | 2011-09-26 08:00 | 2011-09-30 17:00 | 10d | 1.75d | 0d |  |
| 635 | 1.3.4 | Iteracion 17 |  | 40h | 2011-12-13 09:00 | 2011-12-20 09:00 | 634 |  | 2011-10-03 08:00 | 2011-10-07 17:00 | 10d | 1.75d | 0d |  |
| 636 | 1.3.5 | Iteracion 18 |  | 40h | 2011-12-20 09:00 | 2011-12-27 09:00 | 635 |  | 2011-10-10 08:00 | 2011-10-14 17:00 | 10d | 1.75d | 0d |  |
| 637 | 1.3.6 | Iteracion 19 |  | 40h | 2011-12-27 09:00 | 2012-01-03 09:00 | 636 |  | 2011-10-17 08:00 | 2011-10-21 17:00 | 10d | 1.75d | 0d |  |
| 638 | 1.3.7 | Iteracion 20 |  | 40h | 2012-01-03 09:00 | 2012-01-10 09:00 | 637 |  | 2011-10-24 08:00 | 2011-10-28 17:00 | 10d | 1.75d | 0d |  |
| 639 | 1.3.8 | Iteracion 21 |  | 40h | 2012-01-10 09:00 | 2012-01-17 09:00 | 638 |  | 2011-10-31 08:00 | 2011-11-04 17:00 | 10d | 1.75d | 0d |  |
| 640 | 1.3.9 | Iteracion 22 |  | 40h | 2012-01-17 09:00 | 2012-01-24 09:00 | 639 |  | 2011-11-07 08:00 | 2011-11-11 17:00 | 10d | 1.75d | 0d |  |
| 641 | 1.3.10 | Iteracion 23 |  | 40h | 2012-01-24 09:00 | 2012-01-31 09:00 | 640 |  | 2011-11-14 08:00 | 2011-11-18 17:00 | 10d | 1.75d | 0d |  |
| 642 | 1.3.11 | Iteracion 24 |  | 40h | 2012-01-31 09:00 | 2012-02-07 09:00 | 641 |  | 2011-08-29 08:00 | 2011-09-02 17:00 | 10d | 1.75d | 0d |  |
| 643 | 1.3.12 | Iteracion 25 |  | 40h | 2012-02-07 09:00 | 2012-02-14 09:00 | 642 |  | 2011-09-05 08:00 | 2011-09-09 17:00 | 10d | 1.75d | 0d |  |
| 644 | 1.3.13 | Hito - Capacidad Operativa Inicial |  | 40h | 2012-02-14 09:00 | 2012-02-21 09:00 | 643 |  |  |  |  | 1.75d | 0d |  |

| ID | WBS | Task | Duration | Start | Finish | Predecessors | Baseline start | Baseline finish | Baseline duration | Total slack | Free slack | Resources | Work |
| --- | --- | --- | --- | --- | --- | --- | --- | --- | --- | --- | --- | --- | --- |
| 645 | 1.4 | **Fase de Transicion** | 22d | 2012-02-21 09:00 | 2012-03-07 09:00 | 644 | 2011-08-29 08:00 | 2011-09-16 17:00 | 30d | 1.75d |  |  |  |
| 646 | 1.4.1 | Iteracion 26 | 40h | 2012-02-21 09:00 | 2012-02-28 09:00 | 644 | 2011-09-12 08:00 | 2011-09-16 17:00 | 10d | 1.75d | 0d |  |  |
| 647 | 1.4.2 | Iteracion 27 | 40h | 2012-02-28 09:00 | 2012-03-06 09:00 | 646 | 2011-09-16 17:00 | 2011-09-16 17:00 | 0h | 1.75d | 0d |  |  |
| 648 | 1.4.3 | Hito - Release | 8h | 2012-03-06 09:00 | 2012-03-07 09:00 | 647 | 2011-08-29 08:00 | 2011-08-29 17:00 | 2d? | 1.75d |  |  |  |
| 649 | 1.5 | Manual Usuario | 16h | 2012-03-07 19:00 | 2012-03-10 17:10 | 648 | 2011-08-29 19:00 | 2011-09-01 20:00 | 1d | 0d |  | LP | 16h |
| 650 | 1.6 | Carpeta de solucion | 8h | 2012-03-10 17:10 | 2012-03-11 17:10 | 649 | 2011-10-24 19:00 | 2011-10-24 20:00 | 1h | 0d |  | LP | 8h |
| 651 | 1.7 | **Entregable** | 2d | 2012-03-11 17:10 | 2012-03-12 19:10 |  | 2011-11-03 19:00 | 2011-11-03 20:00 | 0d | 0d |  |  | 1h |
| 652 | 1.7.1 | Seccion de Aprobacion y Revision en los Artefactos Involucrados | 1h | 2012-03-11 17:10 | 2012-03-12 19:10 | 650 | 2011-11-03 19:00 | 2011-11-03 20:00 | 1h | 0d |  | AN | 1h |
